| start | leveling_delay_units | cost | cost_variance | remaining_cost | name | wbs | constraint_type | critical | priority | duration | remaining_duration | early_start | early_finish | late_start | late_finish | text2 | unique_id | summary | created | outline_number | type | fixed_cost_accrual | leveling_can_split | level_assignments | guid | active | baseline_fixed_cost_accrual | scheduled_duration | scheduled_finish | scheduled_start | recalc_outline_codes | finish | auto_compute_actuals | remaining_regular_cost | id | rollup | outline_level | parent_task_unique_id | milestone | successors | text1 | finish_slack | fixed_cost | free_slack | total_slack | predecessors | start_slack | summary_progress | work_splits |
| --- | --- | --- | --- | --- | --- | --- | --- | --- | --- | --- | --- | --- | --- | --- | --- | --- | --- | --- | --- | --- | --- | --- | --- | --- | --- | --- | --- | --- | --- | --- | --- | --- | --- | --- | --- | --- | --- | --- | --- | --- | --- | --- | --- | --- | --- | --- | --- | --- | --- |
| 2025-10-01T09:00:00.0 | ed | 1253165.9 | 1253165.9 | 1253165.9 | GANTT CREMATORIO 16.09.25 | 0 | AS_SOON_AS_POSSIBLE | True | 500 | 3427200 | 3427200 | 2025-10-01T09:00:00.0 | 2026-01-28T09:00:00.0 | 2025-10-01T09:00:00.0 | 2026-01-28T09:00:00.0 | 120 días | 0 | True | 2025-09-16T11:36:00.0 | 0 | FIXED_DURATION | PRORATED | True | True | 06aeeb58-1b93-f011-adcc-c0bfbe9ea20f | True | PRORATED | 3427200 | 2026-01-28T09:00:00.0 | 2025-10-01T09:00:00.0 | True | 2026-01-28T09:00:00.0 | True | 1253165.9 |  |  |  |  |  |  |  |  |  |  |  |  |  |  |  |
| 2025-10-01T09:00:00.0 | ed | 1253165.9 | 1253165.9 | 1253165.9 | PRESUPUESTO OFERTA 95%- CONSTRUCCION DE NICHO, COLUMBARIO Y CREMATORIO; REMODELACION DE VELATORIO; EN EL(LA) CEMENTERIO MUNICIPAL | 1 | AS_SOON_AS_POSSIBLE | True | 500 | 3427200 | 3427200 | 2025-10-01T09:00:00.0 | 2026-01-28T09:00:00.0 | 2025-10-01T09:00:00.0 | 2026-01-28T09:00:00.0 | 120 días | 1 | True | 2025-09-16T11:36:00.0 | 1 | FIXED_DURATION | PRORATED | True | True | 15aeeb58-1b93-f011-adcc-c0bfbe9ea20f | True | PRORATED | 3427200 | 2026-01-28T09:00:00.0 | 2025-10-01T09:00:00.0 | True | 2026-01-28T09:00:00.0 | True | 1253165.9 | 1 | True | 1 | 0 |  |  |  |  |  |  |  |  |  |  |  |
| 2025-10-01T09:00:00.0 | ed |  |  |  | Inicio de Obra | 1.1 | AS_SOON_AS_POSSIBLE | True | 500 |  |  | 2025-10-01T09:00:00.0 | 2025-10-01T09:00:00.0 | 2025-10-01T09:00:00.0 | 2025-10-01T09:00:00.0 | 0 días | 2 |  | 2025-09-16T11:36:00.0 | 1.1 |  | PRORATED | True | True | 17aeeb58-1b93-f011-adcc-c0bfbe9ea20f | True | PRORATED |  | 2025-10-01T09:00:00.0 | 2025-10-01T09:00:00.0 | True | 2025-10-01T09:00:00.0 | True |  | 2 |  | 2 | 1 | True | 1 2 7 FS, 2 2 8 FS, 4 2 10 FS, 37 2 49 FS, 433 2 34 FS, 434 2 35 FS, 435 2 36 FS, 436 2 37 FS, 437 2 38 FS, 438 2 39 FS, 439 2 41 FS, 440 2 42 FS, 441 2 43 FS, 442 2 44 FS, 443 2 45 FS, 444 2 46 FS, 445 2 47 FS, 446 2 48 FS |  |  |  |  |  |  |  |  |  |
| 2025-10-01T09:00:00.0 | ed | 77708.1 | 77708.1 | 77708.1 | OBRAS PROVISIONALES , PRELIMINARES Y SEGURIDAD Y SALUD | 1.2 | AS_SOON_AS_POSSIBLE | True | 500 | 3427200 | 3427200 | 2025-10-01T09:00:00.0 | 2026-01-28T09:00:00.0 | 2025-10-01T09:00:00.0 | 2026-01-28T09:00:00.0 | 120 días | 3 | True | 2025-09-16T11:36:00.0 | 1.2 | FIXED_DURATION | PRORATED | True | True | 19aeeb58-1b93-f011-adcc-c0bfbe9ea20f | True | PRORATED | 3427200 | 2026-01-28T09:00:00.0 | 2025-10-01T09:00:00.0 | True | 2026-01-28T09:00:00.0 | True | 77708.1 | 3 | True | 2 | 1 |  |  |  |  |  |  |  |  |  |  |  |
| 2025-10-01T09:00:00.0 | ed | 77708.1 | 77708.1 | 77708.1 | OBRAS PROVISIONALES, TRABAJOS PRELIMINARES , SEGURIDAD Y SALUD | 1.2.1 | AS_SOON_AS_POSSIBLE | True | 500 | 3427200 | 3427200 | 2025-10-01T09:00:00.0 | 2026-01-28T09:00:00.0 | 2025-10-01T09:00:00.0 | 2026-01-28T09:00:00.0 | 120 días | 4 | True | 2025-09-16T11:36:00.0 | 1.2.1 | FIXED_DURATION | PRORATED | True | True | 1baeeb58-1b93-f011-adcc-c0bfbe9ea20f | True | PRORATED | 3427200 | 2026-01-28T09:00:00.0 | 2025-10-01T09:00:00.0 | True | 2026-01-28T09:00:00.0 | True | 77708.1 | 4 | True | 3 | 3 |  |  | 01 |  |  |  |  |  |  |  |  |
| 2025-10-01T09:00:00.0 | ed | 16918.48 | 16918.48 | 16918.48 | OBRAS PROVISIONALES | 1.2.1.1 | AS_SOON_AS_POSSIBLE | True | 500 | 3427200 | 3427200 | 2025-10-01T09:00:00.0 | 2026-01-28T09:00:00.0 | 2025-10-01T09:00:00.0 | 2026-01-28T09:00:00.0 | 120 días | 5 | True | 2025-09-16T11:36:00.0 | 1.2.1.1 | FIXED_DURATION | PRORATED | True | True | 1daeeb58-1b93-f011-adcc-c0bfbe9ea20f | True | PRORATED | 3427200 | 2026-01-28T09:00:00.0 | 2025-10-01T09:00:00.0 | True | 2026-01-28T09:00:00.0 | True | 16918.48 | 5 | True | 4 | 4 |  |  | 01.01 |  |  |  |  |  |  |  |  |
| 2025-10-01T09:00:00.0 | ed | 11209.46 | 11209.46 | 11209.46 | CONSTRUCCIONES PROVISIONALES | 1.2.1.1.1 | AS_SOON_AS_POSSIBLE | True | 500 | 172800 | 172800 | 2025-10-01T09:00:00.0 | 2025-10-07T09:00:00.0 | 2025-10-01T09:00:00.0 | 2026-01-28T09:00:00.0 | 7 días | 6 | True | 2025-09-16T11:36:00.0 | 1.2.1.1.1 | FIXED_DURATION | PRORATED | True | True | 1faeeb58-1b93-f011-adcc-c0bfbe9ea20f | True | PRORATED | 172800 | 2025-10-07T09:00:00.0 | 2025-10-01T09:00:00.0 | True | 2025-10-07T09:00:00.0 | True | 11209.46 | 6 | True | 5 | 5 |  |  | 01.01.01 | 3254400 |  |  |  |  |  |  |  |
| 2025-10-01T09:00:00.0 | ed | 2350.85 | 2350.85 | 2350.85 | CARTEL DE IDENTIFICACION DE LA OBRA DE 3.60X2.40M | 1.2.1.1.1.1 | AS_SOON_AS_POSSIBLE |  | 500 | 28800 | 28800 | 2025-10-01T09:00:00.0 | 2025-10-02T09:00:00.0 | 2026-01-27T09:00:00.0 | 2026-01-28T09:00:00.0 | 2 días | 7 |  | 2025-09-16T11:36:00.0 | 1.2.1.1.1.1 |  | PRORATED | True | True | 21aeeb58-1b93-f011-adcc-c0bfbe9ea20f | True | PRORATED | 28800 | 2025-10-02T09:00:00.0 | 2025-10-01T09:00:00.0 | True | 2025-10-02T09:00:00.0 | True | 2350.85 | 7 |  | 6 | 6 |  |  | 01.01.01.01 | 3398400 | 2350.85 | 3398400 | 3398400 | 1 2 7 FS | 3398400 | 2025-10-01T09:00:00.0 | 2025-10-01T09:00:00.0 2025-10-02T09:00:00.0 |
| 2025-10-01T09:00:00.0 | ed | 1350.98 | 1350.98 | 1350.98 | CERCO PERIMETRICO PROVISIONAL DE MALLA RASHELL H=2.10M | 1.2.1.1.1.2 | AS_SOON_AS_POSSIBLE |  | 500 | 86400 | 86400 | 2025-10-01T09:00:00.0 | 2025-10-04T09:00:00.0 | 2026-01-23T09:00:00.0 | 2026-01-26T09:00:00.0 | 4 días | 8 |  | 2025-09-16T11:36:00.0 | 1.2.1.1.1.2 |  | PRORATED | True | True | 23aeeb58-1b93-f011-adcc-c0bfbe9ea20f | True | PRORATED | 86400 | 2025-10-04T09:00:00.0 | 2025-10-01T09:00:00.0 | True | 2025-10-04T09:00:00.0 | True | 1350.98 | 8 |  | 6 | 6 |  | 3 8 9 FS | 01.01.01.02 | 3283200 | 1350.98 |  | 3283200 | 2 2 8 FS | 3283200 | 2025-10-01T09:00:00.0 | 2025-10-01T09:00:00.0 2025-10-04T09:00:00.0 |
| 2025-10-04T09:00:00.0 | ed | 2079.97 | 2079.97 | 2079.97 | CERCO PERIMETRICO PROVISIONAL DE METALICO H=2.10M | 1.2.1.1.1.3 | AS_SOON_AS_POSSIBLE |  | 500 | 57600 | 57600 | 2025-10-04T09:00:00.0 | 2025-10-06T09:00:00.0 | 2026-01-26T09:00:00.0 | 2026-01-28T09:00:00.0 | 3 días | 9 |  | 2025-09-16T11:36:00.0 | 1.2.1.1.1.3 |  | PRORATED | True | True | 25aeeb58-1b93-f011-adcc-c0bfbe9ea20f | True | PRORATED | 57600 | 2025-10-06T09:00:00.0 | 2025-10-04T09:00:00.0 | True | 2025-10-06T09:00:00.0 | True | 2079.97 | 9 |  | 6 | 6 |  |  | 01.01.01.03 | 3283200 | 2079.97 | 3283200 | 3283200 | 3 8 9 FS | 3283200 | 2025-10-04T09:00:00.0 | 2025-10-04T09:00:00.0 2025-10-06T09:00:00.0 |
| 2025-10-01T09:00:00.0 | ed | 2311.66 | 2311.66 | 2311.66 | ALMACEN, OFICINA Y CASETA DE GUARDIANIA DE TRIPLAY | 1.2.1.1.1.4 | AS_SOON_AS_POSSIBLE | True | 500 | 86400 | 86400 | 2025-10-01T09:00:00.0 | 2025-10-04T09:00:00.0 | 2025-10-01T09:00:00.0 | 2025-10-04T09:00:00.0 | 4 días | 10 |  | 2025-09-16T11:36:00.0 | 1.2.1.1.1.4 |  | PRORATED | True | True | 27aeeb58-1b93-f011-adcc-c0bfbe9ea20f | True | PRORATED | 86400 | 2025-10-04T09:00:00.0 | 2025-10-01T09:00:00.0 | True | 2025-10-04T09:00:00.0 | True | 2311.66 | 10 |  | 6 | 6 |  | 5 10 11 FS, 6 10 12 FS, 7 10 14 FS | 01.01.01.04 |  | 2311.66 |  |  | 4 2 10 FS |  | 2025-10-01T09:00:00.0 | 2025-10-01T09:00:00.0 2025-10-04T09:00:00.0 |
| 2025-10-04T09:00:00.0 | ed | 2280.0 | 2280.0 | 2280.0 | TRANSPORTES DE MAQUINARIAS, EQUIPOS Y HERRAMIENTAS A OBRA | 1.2.1.1.1.5 | AS_SOON_AS_POSSIBLE |  | 500 | 86400 | 86400 | 2025-10-04T09:00:00.0 | 2025-10-07T09:00:00.0 | 2026-01-25T09:00:00.0 | 2026-01-28T09:00:00.0 | 4 días | 11 |  | 2025-09-16T11:36:00.0 | 1.2.1.1.1.5 |  | PRORATED | True | True | 29aeeb58-1b93-f011-adcc-c0bfbe9ea20f | True | PRORATED | 86400 | 2025-10-07T09:00:00.0 | 2025-10-04T09:00:00.0 | True | 2025-10-07T09:00:00.0 | True | 2280.0 | 11 |  | 6 | 6 |  |  | 01.01.01.05 | 3254400 | 2280.0 | 3254400 | 3254400 | 5 10 11 FS | 3254400 | 2025-10-04T09:00:00.0 | 2025-10-04T09:00:00.0 2025-10-07T09:00:00.0 |
| 2025-10-04T09:00:00.0 | ed | 836.0 | 836.0 | 836.0 | TRANSPORTE DE MATERIALES | 1.2.1.1.1.6 | AS_SOON_AS_POSSIBLE |  | 500 | 86400 | 86400 | 2025-10-04T09:00:00.0 | 2025-10-07T09:00:00.0 | 2026-01-25T09:00:00.0 | 2026-01-28T09:00:00.0 | 4 días | 12 |  | 2025-09-16T11:36:00.0 | 1.2.1.1.1.6 |  | PRORATED | True | True | 2baeeb58-1b93-f011-adcc-c0bfbe9ea20f | True | PRORATED | 86400 | 2025-10-07T09:00:00.0 | 2025-10-04T09:00:00.0 | True | 2025-10-07T09:00:00.0 | True | 836.0 | 12 |  | 6 | 6 |  |  | 01.01.01.06 | 3254400 | 836.0 | 3254400 | 3254400 | 6 10 12 FS | 3254400 | 2025-10-04T09:00:00.0 | 2025-10-04T09:00:00.0 2025-10-07T09:00:00.0 |
| 2025-10-04T09:00:00.0 | ed | 5709.02 | 5709.02 | 5709.02 | INSTALACIONES PROVISIONALES | 1.2.1.1.2 | AS_SOON_AS_POSSIBLE | True | 500 | 3340800 | 3340800 | 2025-10-04T09:00:00.0 | 2026-01-28T09:00:00.0 | 2025-10-04T09:00:00.0 | 2026-01-28T09:00:00.0 | 117 días | 13 | True | 2025-09-16T11:36:00.0 | 1.2.1.1.2 | FIXED_DURATION | PRORATED | True | True | 2daeeb58-1b93-f011-adcc-c0bfbe9ea20f | True | PRORATED | 3340800 | 2026-01-28T09:00:00.0 | 2025-10-04T09:00:00.0 | True | 2026-01-28T09:00:00.0 | True | 5709.02 | 13 | True | 5 | 5 |  |  | 01.01.02 |  |  |  |  |  |  |  |  |
| 2025-10-04T09:00:00.0 | ed | 2280.0 | 2280.0 | 2280.0 | ALQUILER DE BAÑOS QUIMICOS PORTATILES | 1.2.1.1.2.1 | AS_SOON_AS_POSSIBLE | True | 500 | 3340800 | 3340800 | 2025-10-04T09:00:00.0 | 2026-01-28T09:00:00.0 | 2025-10-04T09:00:00.0 | 2026-01-28T09:00:00.0 | 117 días | 14 |  | 2025-09-16T11:36:00.0 | 1.2.1.1.2.1 |  | PRORATED | True | True | 2faeeb58-1b93-f011-adcc-c0bfbe9ea20f | True | PRORATED | 3340800 | 2026-01-28T09:00:00.0 | 2025-10-04T09:00:00.0 | True | 2026-01-28T09:00:00.0 | True | 2280.0 | 14 |  | 6 | 13 |  | 8 14 15 SS, 9 14 16 SS, 10 14 17 SS, 11 14 18 SS, 12 14 21 SS, 16 14 26 SS, 21 14 32 SS, 38 14 51 SS | 01.01.02.01 |  | 2280.0 |  |  | 7 10 14 FS |  | 2025-10-04T09:00:00.0 | 2025-10-04T09:00:00.0 2026-01-28T09:00:00.0 |
| 2025-10-04T09:00:00.0 | ed | 446.02 | 446.02 | 446.02 | SUMINISTRO E INSTALACION PARA PUNTO DE AGUA EN OBRA | 1.2.1.1.2.2 | AS_SOON_AS_POSSIBLE |  | 500 | 86400 | 86400 | 2025-10-04T09:00:00.0 | 2025-10-07T09:00:00.0 | 2026-01-25T09:00:00.0 | 2026-01-28T09:00:00.0 | 4 días | 15 |  | 2025-09-16T11:36:00.0 | 1.2.1.1.2.2 |  | PRORATED | True | True | 31aeeb58-1b93-f011-adcc-c0bfbe9ea20f | True | PRORATED | 86400 | 2025-10-07T09:00:00.0 | 2025-10-04T09:00:00.0 | True | 2025-10-07T09:00:00.0 | True | 446.02 | 15 |  | 6 | 13 |  |  | 01.01.02.02 | 3254400 | 446.02 | 3254400 | 3254400 | 8 14 15 SS | 3254400 | 2025-10-04T09:00:00.0 | 2025-10-04T09:00:00.0 2025-10-07T09:00:00.0 |
| 2025-10-04T09:00:00.0 | ed | 380.0 | 380.0 | 380.0 | SUMINISTRO E INSTALACION PARA PUNTO DE ENERGIA EN OBRA | 1.2.1.1.2.3 | AS_SOON_AS_POSSIBLE |  | 500 | 86400 | 86400 | 2025-10-04T09:00:00.0 | 2025-10-07T09:00:00.0 | 2026-01-25T09:00:00.0 | 2026-01-28T09:00:00.0 | 4 días | 16 |  | 2025-09-16T11:36:00.0 | 1.2.1.1.2.3 |  | PRORATED | True | True | 33aeeb58-1b93-f011-adcc-c0bfbe9ea20f | True | PRORATED | 86400 | 2025-10-07T09:00:00.0 | 2025-10-04T09:00:00.0 | True | 2025-10-07T09:00:00.0 | True | 380.0 | 16 |  | 6 | 13 |  |  | 01.01.02.03 | 3254400 | 380.0 | 3254400 | 3254400 | 9 14 16 SS | 3254400 | 2025-10-04T09:00:00.0 | 2025-10-04T09:00:00.0 2025-10-07T09:00:00.0 |
| 2025-10-04T09:00:00.0 | ed | 1140.0 | 1140.0 | 1140.0 | AGUA PROVISIONAL EN OBRA | 1.2.1.1.2.4 | AS_SOON_AS_POSSIBLE | True | 500 | 3340800 | 3340800 | 2025-10-04T09:00:00.0 | 2026-01-28T09:00:00.0 | 2025-10-04T09:00:00.0 | 2026-01-28T09:00:00.0 | 117 días | 17 |  | 2025-09-16T11:36:00.0 | 1.2.1.1.2.4 |  | PRORATED | True | True | 35aeeb58-1b93-f011-adcc-c0bfbe9ea20f | True | PRORATED | 3340800 | 2026-01-28T09:00:00.0 | 2025-10-04T09:00:00.0 | True | 2026-01-28T09:00:00.0 | True | 1140.0 | 17 |  | 6 | 13 |  |  | 01.01.02.04 |  | 1140.0 |  |  | 10 14 17 SS |  | 2025-10-04T09:00:00.0 | 2025-10-04T09:00:00.0 2026-01-28T09:00:00.0 |
| 2025-10-04T09:00:00.0 | ed | 1463.0 | 1463.0 | 1463.0 | ENERGIA ELECTRICA PROVISIONAL | 1.2.1.1.2.5 | AS_SOON_AS_POSSIBLE | True | 500 | 3340800 | 3340800 | 2025-10-04T09:00:00.0 | 2026-01-28T09:00:00.0 | 2025-10-04T09:00:00.0 | 2026-01-28T09:00:00.0 | 117 días | 18 |  | 2025-09-16T11:36:00.0 | 1.2.1.1.2.5 |  | PRORATED | True | True | 37aeeb58-1b93-f011-adcc-c0bfbe9ea20f | True | PRORATED | 3340800 | 2026-01-28T09:00:00.0 | 2025-10-04T09:00:00.0 | True | 2026-01-28T09:00:00.0 | True | 1463.0 | 18 |  | 6 | 13 |  |  | 01.01.02.05 |  | 1463.0 |  |  | 11 14 18 SS |  | 2025-10-04T09:00:00.0 | 2025-10-04T09:00:00.0 2026-01-28T09:00:00.0 |
| 2025-10-04T09:00:00.0 | ed | 4767.26 | 4767.26 | 4767.26 | TRABAJOS PRELIMINARES | 1.2.1.2 | AS_SOON_AS_POSSIBLE | True | 500 | 374400 | 374400 | 2025-10-04T09:00:00.0 | 2025-10-17T09:00:00.0 | 2025-10-04T09:00:00.0 | 2026-01-28T09:00:00.0 | 14 días | 19 | True | 2025-09-16T11:36:00.0 | 1.2.1.2 | FIXED_DURATION | PRORATED | True | True | 39aeeb58-1b93-f011-adcc-c0bfbe9ea20f | True | PRORATED | 374400 | 2025-10-17T09:00:00.0 | 2025-10-04T09:00:00.0 | True | 2025-10-17T09:00:00.0 | True | 4767.26 | 19 | True | 4 | 4 |  |  | 01.02 | 2966400 |  |  |  |  |  |  |  |
| 2025-10-04T09:00:00.0 | ed | 1719.98 | 1719.98 | 1719.98 | CREMATORIO | 1.2.1.2.1 | AS_SOON_AS_POSSIBLE | True | 500 | 57600 | 57600 | 2025-10-04T09:00:00.0 | 2025-10-06T09:00:00.0 | 2025-10-04T09:00:00.0 | 2025-10-06T09:00:00.0 | 3 días | 20 | True | 2025-09-16T11:36:00.0 | 1.2.1.2.1 | FIXED_DURATION | PRORATED | True | True | 3baeeb58-1b93-f011-adcc-c0bfbe9ea20f | True | PRORATED | 57600 | 2025-10-06T09:00:00.0 | 2025-10-04T09:00:00.0 | True | 2025-10-06T09:00:00.0 | True | 1719.98 | 20 | True | 5 | 19 |  |  | 01.02.01 |  |  |  |  |  |  |  |  |
| 2025-10-04T09:00:00.0 | ed | 836.19 | 836.19 | 836.19 | DESBROCE Y LIMPIEZA MANUAL DEL TERRENO | 1.2.1.2.1.1 | AS_SOON_AS_POSSIBLE | True | 500 | 28800 | 28800 | 2025-10-04T09:00:00.0 | 2025-10-05T09:00:00.0 | 2025-10-04T09:00:00.0 | 2025-10-05T09:00:00.0 | 2 días | 21 |  | 2025-09-16T11:36:00.0 | 1.2.1.2.1.1 |  | PRORATED | True | True | 3daeeb58-1b93-f011-adcc-c0bfbe9ea20f | True | PRORATED | 28800 | 2025-10-05T09:00:00.0 | 2025-10-04T09:00:00.0 | True | 2025-10-05T09:00:00.0 | True | 836.19 | 21 |  | 6 | 20 |  | 13 21 22 FS | 01.02.01.01 |  | 836.19 |  |  | 12 14 21 SS |  | 2025-10-04T09:00:00.0 | 2025-10-04T09:00:00.0 2025-10-05T09:00:00.0 |
| 2025-10-05T09:00:00.0 | ed | 883.79 | 883.79 | 883.79 | ELIMINACION DE MALEZA Y ARBUSTO DE FACIL EXTRACCION | 1.2.1.2.1.2 | AS_SOON_AS_POSSIBLE | True | 500 | 28800 | 28800 | 2025-10-05T09:00:00.0 | 2025-10-06T09:00:00.0 | 2025-10-05T09:00:00.0 | 2025-10-06T09:00:00.0 | 2 días | 22 |  | 2025-09-16T11:36:00.0 | 1.2.1.2.1.2 |  | PRORATED | True | True | 3faeeb58-1b93-f011-adcc-c0bfbe9ea20f | True | PRORATED | 28800 | 2025-10-06T09:00:00.0 | 2025-10-05T09:00:00.0 | True | 2025-10-06T09:00:00.0 | True | 883.79 | 22 |  | 6 | 20 |  | 44 22 61 FS | 01.02.01.02 |  | 883.79 |  |  | 13 21 22 FS |  | 2025-10-05T09:00:00.0 | 2025-10-05T09:00:00.0 2025-10-06T09:00:00.0 |
| 2025-10-04T09:00:00.0 | ed | 2081.76 | 2081.76 | 2081.76 | VELATORIO | 1.2.1.2.2 | AS_SOON_AS_POSSIBLE |  | 500 | 374400 | 374400 | 2025-10-04T09:00:00.0 | 2025-10-17T09:00:00.0 | 2025-11-10T09:00:00.0 | 2026-01-28T09:00:00.0 | 14 días | 23 | True | 2025-09-16T11:36:00.0 | 1.2.1.2.2 | FIXED_DURATION | PRORATED | True | True | 41aeeb58-1b93-f011-adcc-c0bfbe9ea20f | True | PRORATED | 374400 | 2025-10-17T09:00:00.0 | 2025-10-04T09:00:00.0 | True | 2025-10-17T09:00:00.0 | True | 2081.76 | 23 | True | 5 | 19 |  |  | 01.02.02 | 2966400 |  | 1065600 | 1065600 |  | 1065600 |  |  |
| 2025-10-13T09:00:00.0 | ed | 672.83 | 672.83 | 672.83 | DEMOLICION DE MUROS EXISTENTES | 1.2.1.2.2.1 | AS_SOON_AS_POSSIBLE |  | 500 | 86400 | 86400 | 2025-10-13T09:00:00.0 | 2025-10-16T09:00:00.0 | 2026-01-24T09:00:00.0 | 2026-01-27T09:00:00.0 | 4 días | 24 |  | 2025-09-16T11:36:00.0 | 1.2.1.2.2.1 |  | PRORATED | True | True | 43aeeb58-1b93-f011-adcc-c0bfbe9ea20f | True | PRORATED | 86400 | 2025-10-16T09:00:00.0 | 2025-10-13T09:00:00.0 | True | 2025-10-16T09:00:00.0 | True | 672.83 | 24 |  | 6 | 23 |  | 20 24 30 FS | 01.02.02.01 | 2966400 | 672.83 |  | 2966400 | 14 29 24 FS | 2966400 | 2025-10-13T09:00:00.0 | 2025-10-13T09:00:00.0 2025-10-16T09:00:00.0 |
| 2025-10-04T09:00:00.0 | ed | 31.49 | 31.49 | 31.49 | DESMONTAJE DE APARATOS SANITARIOS EXISTENTES EN LA OFICINA ADMINISTRACION | 1.2.1.2.2.2 | AS_SOON_AS_POSSIBLE |  | 500 | 28800 | 28800 | 2025-10-04T09:00:00.0 | 2025-10-05T09:00:00.0 | 2026-01-27T09:00:00.0 | 2026-01-28T09:00:00.0 | 2 días | 25 |  | 2025-09-16T11:36:00.0 | 1.2.1.2.2.2 |  | PRORATED | True | True | 45aeeb58-1b93-f011-adcc-c0bfbe9ea20f | True | PRORATED | 28800 | 2025-10-05T09:00:00.0 | 2025-10-04T09:00:00.0 | True | 2025-10-05T09:00:00.0 | True | 31.49 | 25 |  | 6 | 23 |  |  | 01.02.02.02 | 3312000 | 31.49 | 3312000 | 3312000 | 15 26 25 SS | 3312000 | 2025-10-04T09:00:00.0 | 2025-10-04T09:00:00.0 2025-10-05T09:00:00.0 |
| 2025-10-04T09:00:00.0 | ed | 825.76 | 825.76 | 825.76 | RETIRO DE CERAMICO EXISTENTE EN LA OFICINA | 1.2.1.2.2.3 | AS_SOON_AS_POSSIBLE |  | 500 | 86400 | 86400 | 2025-10-04T09:00:00.0 | 2025-10-07T09:00:00.0 | 2025-11-10T09:00:00.0 | 2025-11-13T09:00:00.0 | 4 días | 26 |  | 2025-09-16T11:36:00.0 | 1.2.1.2.2.3 |  | PRORATED | True | True | 47aeeb58-1b93-f011-adcc-c0bfbe9ea20f | True | PRORATED | 86400 | 2025-10-07T09:00:00.0 | 2025-10-04T09:00:00.0 | True | 2025-10-07T09:00:00.0 | True | 825.76 | 26 |  | 6 | 23 |  | 15 26 25 SS, 17 26 27 FS | 01.02.02.03 | 1065600 | 825.76 |  | 1065600 | 16 14 26 SS | 1065600 | 2025-10-04T09:00:00.0 | 2025-10-04T09:00:00.0 2025-10-07T09:00:00.0 |
| 2025-10-07T09:00:00.0 | ed | 92.56 | 92.56 | 92.56 | RETIRO DE PISO EXISTENTE EN NUEVA ZONA DE KITCHENETTE Y CANALETAS | 1.2.1.2.2.4 | AS_SOON_AS_POSSIBLE |  | 500 | 115200 | 115200 | 2025-10-07T09:00:00.0 | 2025-10-11T09:00:00.0 | 2025-11-13T09:00:00.0 | 2025-11-17T09:00:00.0 | 5 días | 27 |  | 2025-09-16T11:36:00.0 | 1.2.1.2.2.4 |  | PRORATED | True | True | 49aeeb58-1b93-f011-adcc-c0bfbe9ea20f | True | PRORATED | 115200 | 2025-10-11T09:00:00.0 | 2025-10-07T09:00:00.0 | True | 2025-10-11T09:00:00.0 | True | 92.56 | 27 |  | 6 | 23 |  | 18 27 28 FS | 01.02.02.04 | 1065600 | 92.56 |  | 1065600 | 17 26 27 FS | 1065600 | 2025-10-07T09:00:00.0 | 2025-10-07T09:00:00.0 2025-10-11T09:00:00.0 |
| 2025-10-11T09:00:00.0 | ed | 31.49 | 31.49 | 31.49 | DESMONTAJE DE SISTEMAS ELECTRICOS , INCL.SELLADO DE SALIDAS SEGUN PLANO | 1.2.1.2.2.5 | AS_SOON_AS_POSSIBLE |  | 500 | 28800 | 28800 | 2025-10-11T09:00:00.0 | 2025-10-12T09:00:00.0 | 2025-11-17T09:00:00.0 | 2025-11-18T09:00:00.0 | 2 días | 28 |  | 2025-09-16T11:36:00.0 | 1.2.1.2.2.5 |  | PRORATED | True | True | 4baeeb58-1b93-f011-adcc-c0bfbe9ea20f | True | PRORATED | 28800 | 2025-10-12T09:00:00.0 | 2025-10-11T09:00:00.0 | True | 2025-10-12T09:00:00.0 | True | 31.49 | 28 |  | 6 | 23 |  | 19 28 29 SS | 01.02.02.05 | 1065600 | 31.49 |  | 1065600 | 18 27 28 FS | 1065600 | 2025-10-11T09:00:00.0 | 2025-10-11T09:00:00.0 2025-10-12T09:00:00.0 |
| 2025-10-11T09:00:00.0 | ed | 31.49 | 31.49 | 31.49 | DESMONTAJE DE SISTEMAS DE COMUNICACIONES Y REDES | 1.2.1.2.2.6 | AS_SOON_AS_POSSIBLE |  | 500 | 57600 | 57600 | 2025-10-11T09:00:00.0 | 2025-10-13T09:00:00.0 | 2025-11-17T09:00:00.0 | 2025-11-19T09:00:00.0 | 3 días | 29 |  | 2025-09-16T11:36:00.0 | 1.2.1.2.2.6 |  | PRORATED | True | True | 4daeeb58-1b93-f011-adcc-c0bfbe9ea20f | True | PRORATED | 57600 | 2025-10-13T09:00:00.0 | 2025-10-11T09:00:00.0 | True | 2025-10-13T09:00:00.0 | True | 31.49 | 29 |  | 6 | 23 |  | 14 29 24 FS, 93 29 123 FS | 01.02.02.06 | 1065600 | 31.49 |  | 1065600 | 19 28 29 SS | 1065600 | 2025-10-11T09:00:00.0 | 2025-10-11T09:00:00.0 2025-10-13T09:00:00.0 |
| 2025-10-16T09:00:00.0 | ed | 396.14 | 396.14 | 396.14 | ELIMINACION MATERIAL EXCEDENTE C/VOLQ. 15 m3 D=10 km | 1.2.1.2.2.7 | AS_SOON_AS_POSSIBLE |  | 500 | 28800 | 28800 | 2025-10-16T09:00:00.0 | 2025-10-17T09:00:00.0 | 2026-01-27T09:00:00.0 | 2026-01-28T09:00:00.0 | 2 días | 30 |  | 2025-09-16T11:36:00.0 | 1.2.1.2.2.7 |  | PRORATED | True | True | 4faeeb58-1b93-f011-adcc-c0bfbe9ea20f | True | PRORATED | 28800 | 2025-10-17T09:00:00.0 | 2025-10-16T09:00:00.0 | True | 2025-10-17T09:00:00.0 | True | 396.14 | 30 |  | 6 | 23 |  |  | 01.02.02.07 | 2966400 | 396.14 | 2966400 | 2966400 | 20 24 30 FS | 2966400 | 2025-10-16T09:00:00.0 | 2025-10-16T09:00:00.0 2025-10-17T09:00:00.0 |
| 2025-10-04T09:00:00.0 | ed | 965.52 | 965.52 | 965.52 | COLUMBARIO | 1.2.1.2.3 | AS_SOON_AS_POSSIBLE |  | 500 | 57600 | 57600 | 2025-10-04T09:00:00.0 | 2025-10-06T09:00:00.0 | 2026-01-26T09:00:00.0 | 2026-01-28T09:00:00.0 | 3 días | 31 | True | 2025-09-16T11:36:00.0 | 1.2.1.2.3 | FIXED_DURATION | PRORATED | True | True | 51aeeb58-1b93-f011-adcc-c0bfbe9ea20f | True | PRORATED | 57600 | 2025-10-06T09:00:00.0 | 2025-10-04T09:00:00.0 | True | 2025-10-06T09:00:00.0 | True | 965.52 | 31 | True | 5 | 19 |  |  | 01.02.03 | 3283200 |  | 3283200 | 3283200 |  | 3283200 |  |  |
| 2025-10-04T09:00:00.0 | ed | 965.52 | 965.52 | 965.52 | DESBROCE Y LIMPIEZA MANUAL DEL TERRENO | 1.2.1.2.3.1 | AS_SOON_AS_POSSIBLE |  | 500 | 57600 | 57600 | 2025-10-04T09:00:00.0 | 2025-10-06T09:00:00.0 | 2026-01-26T09:00:00.0 | 2026-01-28T09:00:00.0 | 3 días | 32 |  | 2025-09-16T11:36:00.0 | 1.2.1.2.3.1 |  | PRORATED | True | True | 53aeeb58-1b93-f011-adcc-c0bfbe9ea20f | True | PRORATED | 57600 | 2025-10-06T09:00:00.0 | 2025-10-04T09:00:00.0 | True | 2025-10-06T09:00:00.0 | True | 965.52 | 32 |  | 6 | 31 |  |  | 01.02.03.01 | 3283200 | 965.52 | 3283200 | 3283200 | 21 14 32 SS | 3283200 | 2025-10-04T09:00:00.0 | 2025-10-04T09:00:00.0 2025-10-06T09:00:00.0 |
| 2025-10-01T09:00:00.0 | ed | 22523.25 | 22523.25 | 22523.25 | SEGURIDAD Y SALUD EN EL TRABAJO | 1.2.1.3 | AS_SOON_AS_POSSIBLE |  | 500 | 3398400 | 3398400 | 2025-10-01T09:00:00.0 | 2026-01-27T09:00:00.0 | 2025-10-02T09:00:00.0 | 2026-01-28T09:00:00.0 | 119 días | 33 | True | 2025-09-16T11:36:00.0 | 1.2.1.3 | FIXED_DURATION | PRORATED | True | True | 55aeeb58-1b93-f011-adcc-c0bfbe9ea20f | True | PRORATED | 3398400 | 2026-01-27T09:00:00.0 | 2025-10-01T09:00:00.0 | True | 2026-01-27T09:00:00.0 | True | 22523.25 | 33 | True | 4 | 4 |  |  | 01.03 | 28800 |  | 28800 | 28800 |  | 28800 |  |  |
| 2025-10-01T09:00:00.0 | ed | 120.76 | 120.76 | 120.76 | ELABORACION , IMPLEMENTACION Y ADMINISTRACION DEL PLAN DE SEGURIDAD Y SALUD EN EL TRABAJO | 1.2.1.3.1 | AS_SOON_AS_POSSIBLE |  | 500 | 144000 | 144000 | 2025-10-01T09:00:00.0 | 2025-10-06T09:00:00.0 | 2026-01-23T09:00:00.0 | 2026-01-28T09:00:00.0 | 6 días | 34 |  | 2025-09-16T11:36:00.0 | 1.2.1.3.1 |  | PRORATED | True | True | 57aeeb58-1b93-f011-adcc-c0bfbe9ea20f | True | PRORATED | 144000 | 2025-10-06T09:00:00.0 | 2025-10-01T09:00:00.0 | True | 2025-10-06T09:00:00.0 | True | 120.76 | 34 |  | 5 | 33 |  |  | 01.03.01 | 3283200 | 120.76 | 3283200 | 3283200 | 433 2 34 FS | 3283200 | 2025-10-01T09:00:00.0 | 2025-10-01T09:00:00.0 2025-10-06T09:00:00.0 |
| 2025-10-01T09:00:00.0 | ed | 10384.45 | 10384.45 | 10384.45 | EQUIPOS DE PROTECCION INDIVIDUAL | 1.2.1.3.2 | AS_SOON_AS_POSSIBLE |  | 500 | 3398400 | 3398400 | 2025-10-01T09:00:00.0 | 2026-01-27T09:00:00.0 | 2025-10-02T09:00:00.0 | 2026-01-28T09:00:00.0 | 119 días | 35 |  | 2025-09-16T11:36:00.0 | 1.2.1.3.2 |  | PRORATED | True | True | 59aeeb58-1b93-f011-adcc-c0bfbe9ea20f | True | PRORATED | 3398400 | 2026-01-27T09:00:00.0 | 2025-10-01T09:00:00.0 | True | 2026-01-27T09:00:00.0 | True | 10384.45 | 35 |  | 5 | 33 |  |  | 01.03.02 | 28800 | 10384.45 | 28800 | 28800 | 434 2 35 FS | 28800 | 2025-10-01T09:00:00.0 | 2025-10-01T09:00:00.0 2026-01-27T09:00:00.0 |
| 2025-10-01T09:00:00.0 | ed | 2375.0 | 2375.0 | 2375.0 | EQUIPOS DE PROTECCION COLECTIVA | 1.2.1.3.3 | AS_SOON_AS_POSSIBLE |  | 500 | 3398400 | 3398400 | 2025-10-01T09:00:00.0 | 2026-01-27T09:00:00.0 | 2025-10-02T09:00:00.0 | 2026-01-28T09:00:00.0 | 119 días | 36 |  | 2025-09-16T11:36:00.0 | 1.2.1.3.3 |  | PRORATED | True | True | 5baeeb58-1b93-f011-adcc-c0bfbe9ea20f | True | PRORATED | 3398400 | 2026-01-27T09:00:00.0 | 2025-10-01T09:00:00.0 | True | 2026-01-27T09:00:00.0 | True | 2375.0 | 36 |  | 5 | 33 |  |  | 01.03.03 | 28800 | 2375.0 | 28800 | 28800 | 435 2 36 FS | 28800 | 2025-10-01T09:00:00.0 | 2025-10-01T09:00:00.0 2026-01-27T09:00:00.0 |
| 2025-10-01T09:00:00.0 | ed | 3349.7 | 3349.7 | 3349.7 | SEÑALIZACION TEMPORAL DE SEGURIDAD | 1.2.1.3.4 | AS_SOON_AS_POSSIBLE |  | 500 | 3398400 | 3398400 | 2025-10-01T09:00:00.0 | 2026-01-27T09:00:00.0 | 2025-10-02T09:00:00.0 | 2026-01-28T09:00:00.0 | 119 días | 37 |  | 2025-09-16T11:36:00.0 | 1.2.1.3.4 |  | PRORATED | True | True | 5daeeb58-1b93-f011-adcc-c0bfbe9ea20f | True | PRORATED | 3398400 | 2026-01-27T09:00:00.0 | 2025-10-01T09:00:00.0 | True | 2026-01-27T09:00:00.0 | True | 3349.7 | 37 |  | 5 | 33 |  |  | 01.03.04 | 28800 | 3349.7 | 28800 | 28800 | 436 2 37 FS | 28800 | 2025-10-01T09:00:00.0 | 2025-10-01T09:00:00.0 2026-01-27T09:00:00.0 |
| 2025-10-01T09:00:00.0 | ed | 3800.0 | 3800.0 | 3800.0 | CAPACITACION EN SEGURIDAD Y SALUD | 1.2.1.3.5 | AS_SOON_AS_POSSIBLE |  | 500 | 3398400 | 3398400 | 2025-10-01T09:00:00.0 | 2026-01-27T09:00:00.0 | 2025-10-02T09:00:00.0 | 2026-01-28T09:00:00.0 | 119 días | 38 |  | 2025-09-16T11:36:00.0 | 1.2.1.3.5 |  | PRORATED | True | True | 5faeeb58-1b93-f011-adcc-c0bfbe9ea20f | True | PRORATED | 3398400 | 2026-01-27T09:00:00.0 | 2025-10-01T09:00:00.0 | True | 2026-01-27T09:00:00.0 | True | 3800.0 | 38 |  | 5 | 33 |  |  | 01.03.05 | 28800 | 3800.0 | 28800 | 28800 | 437 2 38 FS | 28800 | 2025-10-01T09:00:00.0 | 2025-10-01T09:00:00.0 2026-01-27T09:00:00.0 |
| 2025-10-01T09:00:00.0 | ed | 2493.34 | 2493.34 | 2493.34 | RECURSOS PARA RESPUESTA ANTE EMERGENCIAS | 1.2.1.3.6 | AS_SOON_AS_POSSIBLE |  | 500 | 3398400 | 3398400 | 2025-10-01T09:00:00.0 | 2026-01-27T09:00:00.0 | 2025-10-02T09:00:00.0 | 2026-01-28T09:00:00.0 | 119 días | 39 |  | 2025-09-16T11:36:00.0 | 1.2.1.3.6 |  | PRORATED | True | True | 61aeeb58-1b93-f011-adcc-c0bfbe9ea20f | True | PRORATED | 3398400 | 2026-01-27T09:00:00.0 | 2025-10-01T09:00:00.0 | True | 2026-01-27T09:00:00.0 | True | 2493.34 | 39 |  | 5 | 33 |  |  | 01.03.06 | 28800 | 2493.34 | 28800 | 28800 | 438 2 39 FS | 28800 | 2025-10-01T09:00:00.0 | 2025-10-01T09:00:00.0 2026-01-27T09:00:00.0 |
| 2025-10-01T09:00:00.0 | ed | 32065.02 | 32065.02 | 32065.02 | PLAN DE MANEJO AMBIENTAL | 1.2.1.4 | AS_SOON_AS_POSSIBLE |  | 500 | 3398400 | 3398400 | 2025-10-01T09:00:00.0 | 2026-01-27T09:00:00.0 | 2025-10-02T09:00:00.0 | 2026-01-28T09:00:00.0 | 119 días | 40 | True | 2025-09-16T11:36:00.0 | 1.2.1.4 | FIXED_DURATION | PRORATED | True | True | 63aeeb58-1b93-f011-adcc-c0bfbe9ea20f | True | PRORATED | 3398400 | 2026-01-27T09:00:00.0 | 2025-10-01T09:00:00.0 | True | 2026-01-27T09:00:00.0 | True | 32065.02 | 40 | True | 4 | 4 |  |  | 01.04 | 28800 |  | 28800 | 28800 |  | 28800 |  |  |
| 2025-10-01T09:00:00.0 | ed | 8050.85 | 8050.85 | 8050.85 | PROGRAMA DE PREVENCION Y MITIGACION AMBIENTAL | 1.2.1.4.1 | AS_SOON_AS_POSSIBLE |  | 500 | 3398400 | 3398400 | 2025-10-01T09:00:00.0 | 2026-01-27T09:00:00.0 | 2025-10-02T09:00:00.0 | 2026-01-28T09:00:00.0 | 119 días | 41 |  | 2025-09-16T11:36:00.0 | 1.2.1.4.1 |  | PRORATED | True | True | 65aeeb58-1b93-f011-adcc-c0bfbe9ea20f | True | PRORATED | 3398400 | 2026-01-27T09:00:00.0 | 2025-10-01T09:00:00.0 | True | 2026-01-27T09:00:00.0 | True | 8050.85 | 41 |  | 5 | 40 |  |  | 01.04.01 | 28800 | 8050.85 | 28800 | 28800 | 439 2 41 FS | 28800 | 2025-10-01T09:00:00.0 | 2025-10-01T09:00:00.0 2026-01-27T09:00:00.0 |
| 2025-10-01T09:00:00.0 | ed | 8050.85 | 8050.85 | 8050.85 | PLAN DE MANEJO DE RESIDUOS SOLIDOS | 1.2.1.4.2 | AS_SOON_AS_POSSIBLE |  | 500 | 3398400 | 3398400 | 2025-10-01T09:00:00.0 | 2026-01-27T09:00:00.0 | 2025-10-02T09:00:00.0 | 2026-01-28T09:00:00.0 | 119 días | 42 |  | 2025-09-16T11:36:00.0 | 1.2.1.4.2 |  | PRORATED | True | True | 67aeeb58-1b93-f011-adcc-c0bfbe9ea20f | True | PRORATED | 3398400 | 2026-01-27T09:00:00.0 | 2025-10-01T09:00:00.0 | True | 2026-01-27T09:00:00.0 | True | 8050.85 | 42 |  | 5 | 40 |  |  | 01.04.02 | 28800 | 8050.85 | 28800 | 28800 | 440 2 42 FS | 28800 | 2025-10-01T09:00:00.0 | 2025-10-01T09:00:00.0 2026-01-27T09:00:00.0 |
| 2025-10-01T09:00:00.0 | ed | 4025.43 | 4025.43 | 4025.43 | PROGRAMA DE MONITOREO AMBIENTAL | 1.2.1.4.3 | AS_SOON_AS_POSSIBLE |  | 500 | 1584000 | 1584000 | 2025-10-01T09:00:00.0 | 2025-11-25T09:00:00.0 | 2025-12-04T09:00:00.0 | 2026-01-28T09:00:00.0 | 56 días | 43 |  | 2025-09-16T11:36:00.0 | 1.2.1.4.3 |  | PRORATED | True | True | 69aeeb58-1b93-f011-adcc-c0bfbe9ea20f | True | PRORATED | 1584000 | 2025-11-25T09:00:00.0 | 2025-10-01T09:00:00.0 | True | 2025-11-25T09:00:00.0 | True | 4025.43 | 43 |  | 5 | 40 |  |  | 01.04.03 | 1843200 | 4025.43 | 1843200 | 1843200 | 441 2 43 FS | 1843200 | 2025-10-01T09:00:00.0 | 2025-10-01T09:00:00.0 2025-11-25T09:00:00.0 |
| 2025-10-01T09:00:00.0 | ed | 4023.37 | 4023.37 | 4023.37 | PROGRAMA DE USO DE AGUA | 1.2.1.4.4 | AS_SOON_AS_POSSIBLE |  | 500 | 3398400 | 3398400 | 2025-10-01T09:00:00.0 | 2026-01-27T09:00:00.0 | 2025-10-02T09:00:00.0 | 2026-01-28T09:00:00.0 | 119 días | 44 |  | 2025-09-16T11:36:00.0 | 1.2.1.4.4 |  | PRORATED | True | True | 6baeeb58-1b93-f011-adcc-c0bfbe9ea20f | True | PRORATED | 3398400 | 2026-01-27T09:00:00.0 | 2025-10-01T09:00:00.0 | True | 2026-01-27T09:00:00.0 | True | 4023.37 | 44 |  | 5 | 40 |  |  | 01.04.04 | 28800 | 4023.37 | 28800 | 28800 | 442 2 44 FS | 28800 | 2025-10-01T09:00:00.0 | 2025-10-01T09:00:00.0 2026-01-27T09:00:00.0 |
| 2025-10-01T09:00:00.0 | ed | 1127.64 | 1127.64 | 1127.64 | PROGRAMA DE EDUCACION , FORMACION Y CAPACITACION DE PERSONAL | 1.2.1.4.5 | AS_SOON_AS_POSSIBLE |  | 500 | 3398400 | 3398400 | 2025-10-01T09:00:00.0 | 2026-01-27T09:00:00.0 | 2025-10-02T09:00:00.0 | 2026-01-28T09:00:00.0 | 119 días | 45 |  | 2025-09-16T11:36:00.0 | 1.2.1.4.5 |  | PRORATED | True | True | 6daeeb58-1b93-f011-adcc-c0bfbe9ea20f | True | PRORATED | 3398400 | 2026-01-27T09:00:00.0 | 2025-10-01T09:00:00.0 | True | 2026-01-27T09:00:00.0 | True | 1127.64 | 45 |  | 5 | 40 |  |  | 01.04.05 | 28800 | 1127.64 | 28800 | 28800 | 443 2 45 FS | 28800 | 2025-10-01T09:00:00.0 | 2025-10-01T09:00:00.0 2026-01-27T09:00:00.0 |
| 2025-10-01T09:00:00.0 | ed | 1610.17 | 1610.17 | 1610.17 | PROGRAMA DE SEGURIDAD Y SALUD OCUPACIONAL | 1.2.1.4.6 | AS_SOON_AS_POSSIBLE |  | 500 | 3398400 | 3398400 | 2025-10-01T09:00:00.0 | 2026-01-27T09:00:00.0 | 2025-10-02T09:00:00.0 | 2026-01-28T09:00:00.0 | 119 días | 46 |  | 2025-09-16T11:36:00.0 | 1.2.1.4.6 |  | PRORATED | True | True | 6faeeb58-1b93-f011-adcc-c0bfbe9ea20f | True | PRORATED | 3398400 | 2026-01-27T09:00:00.0 | 2025-10-01T09:00:00.0 | True | 2026-01-27T09:00:00.0 | True | 1610.17 | 46 |  | 5 | 40 |  | 348 46 555 FS | 01.04.06 | 28800 | 1610.17 |  | 28800 | 444 2 46 FS | 28800 | 2025-10-01T09:00:00.0 | 2025-10-01T09:00:00.0 2026-01-27T09:00:00.0 |
| 2025-10-01T09:00:00.0 | ed | 805.09 | 805.09 | 805.09 | PLAN DE CONTINGENCIAS | 1.2.1.4.7 | AS_SOON_AS_POSSIBLE |  | 500 | 3398400 | 3398400 | 2025-10-01T09:00:00.0 | 2026-01-27T09:00:00.0 | 2025-10-02T09:00:00.0 | 2026-01-28T09:00:00.0 | 119 días | 47 |  | 2025-09-16T11:36:00.0 | 1.2.1.4.7 |  | PRORATED | True | True | 71aeeb58-1b93-f011-adcc-c0bfbe9ea20f | True | PRORATED | 3398400 | 2026-01-27T09:00:00.0 | 2025-10-01T09:00:00.0 | True | 2026-01-27T09:00:00.0 | True | 805.09 | 47 |  | 5 | 40 |  |  | 01.04.07 | 28800 | 805.09 | 28800 | 28800 | 445 2 47 FS | 28800 | 2025-10-01T09:00:00.0 | 2025-10-01T09:00:00.0 2026-01-27T09:00:00.0 |
| 2025-10-01T09:00:00.0 | ed | 346.19 | 346.19 | 346.19 | PROGRAMA DE CONTROL DE VIGILANCIA SANITARIA PARA PLAGAS Y VECTORES | 1.2.1.4.8 | AS_SOON_AS_POSSIBLE |  | 500 | 28800 | 28800 | 2025-10-01T09:00:00.0 | 2025-10-02T09:00:00.0 | 2026-01-27T09:00:00.0 | 2026-01-28T09:00:00.0 | 2 días | 48 |  | 2025-09-16T11:36:00.0 | 1.2.1.4.8 |  | PRORATED | True | True | 73aeeb58-1b93-f011-adcc-c0bfbe9ea20f | True | PRORATED | 28800 | 2025-10-02T09:00:00.0 | 2025-10-01T09:00:00.0 | True | 2025-10-02T09:00:00.0 | True | 346.19 | 48 |  | 5 | 40 |  |  | 01.04.08 | 3398400 | 346.19 | 3398400 | 3398400 | 446 2 48 FS | 3398400 | 2025-10-01T09:00:00.0 | 2025-10-01T09:00:00.0 2025-10-02T09:00:00.0 |
| 2025-10-01T09:00:00.0 | ed | 4025.43 | 4025.43 | 4025.43 | PROGRAMA DE CIERRE | 1.2.1.4.9 | AS_SOON_AS_POSSIBLE |  | 500 | 3398400 | 3398400 | 2025-10-01T09:00:00.0 | 2026-01-27T09:00:00.0 | 2025-10-02T09:00:00.0 | 2026-01-28T09:00:00.0 | 119 días | 49 |  | 2025-09-16T11:36:00.0 | 1.2.1.4.9 |  | PRORATED | True | True | 75aeeb58-1b93-f011-adcc-c0bfbe9ea20f | True | PRORATED | 3398400 | 2026-01-27T09:00:00.0 | 2025-10-01T09:00:00.0 | True | 2026-01-27T09:00:00.0 | True | 4025.43 | 49 |  | 5 | 40 |  |  | 01.04.09 | 28800 | 4025.43 | 28800 | 28800 | 37 2 49 FS | 28800 | 2025-10-01T09:00:00.0 | 2025-10-01T09:00:00.0 2026-01-27T09:00:00.0 |
| 2025-10-04T09:00:00.0 | ed | 1434.09 | 1434.09 | 1434.09 | TRAZO Y REPLANTEO | 1.2.1.5 | AS_SOON_AS_POSSIBLE | True | 500 | 28800 | 28800 | 2025-10-04T09:00:00.0 | 2025-10-05T09:00:00.0 | 2025-10-04T09:00:00.0 | 2026-01-28T09:00:00.0 | 2 días | 50 | True | 2025-09-16T11:36:00.0 | 1.2.1.5 | FIXED_DURATION | PRORATED | True | True | 77aeeb58-1b93-f011-adcc-c0bfbe9ea20f | True | PRORATED | 28800 | 2025-10-05T09:00:00.0 | 2025-10-04T09:00:00.0 | True | 2025-10-05T09:00:00.0 | True | 1434.09 | 50 | True | 4 | 4 |  |  | 01.05 | 3312000 |  |  |  |  |  |  |  |
| 2025-10-04T09:00:00.0 | ed | 733.25 | 733.25 | 733.25 | TRAZO, NIVELES Y REPLANTEO INICIAL | 1.2.1.5.1 | AS_SOON_AS_POSSIBLE | True | 500 | 28800 | 28800 | 2025-10-04T09:00:00.0 | 2025-10-05T09:00:00.0 | 2025-10-04T09:00:00.0 | 2025-10-05T09:00:00.0 | 2 días | 51 |  | 2025-09-16T11:36:00.0 | 1.2.1.5.1 |  | PRORATED | True | True | 79aeeb58-1b93-f011-adcc-c0bfbe9ea20f | True | PRORATED | 28800 | 2025-10-05T09:00:00.0 | 2025-10-04T09:00:00.0 | True | 2025-10-05T09:00:00.0 | True | 733.25 | 51 |  | 5 | 50 |  | 39 51 52 SS, 104 51 145 FS | 01.05.01 |  | 733.25 |  |  | 38 14 51 SS |  | 2025-10-04T09:00:00.0 | 2025-10-04T09:00:00.0 2025-10-05T09:00:00.0 |
| 2025-10-04T09:00:00.0 | ed | 700.84 | 700.84 | 700.84 | TRAZO, NIVELES Y REPLANTEO DURANTE EL PROCESO | 1.2.1.5.2 | AS_SOON_AS_POSSIBLE |  | 500 | 28800 | 28800 | 2025-10-04T09:00:00.0 | 2025-10-05T09:00:00.0 | 2026-01-27T09:00:00.0 | 2026-01-28T09:00:00.0 | 2 días | 52 |  | 2025-09-16T11:36:00.0 | 1.2.1.5.2 |  | PRORATED | True | True | 7baeeb58-1b93-f011-adcc-c0bfbe9ea20f | True | PRORATED | 28800 | 2025-10-05T09:00:00.0 | 2025-10-04T09:00:00.0 | True | 2025-10-05T09:00:00.0 | True | 700.84 | 52 |  | 5 | 50 |  |  | 01.05.02 | 3312000 | 700.84 | 3312000 | 3312000 | 39 51 52 SS | 3312000 | 2025-10-04T09:00:00.0 | 2025-10-04T09:00:00.0 2025-10-05T09:00:00.0 |
| 2025-10-05T09:00:00.0 | ed | 753983.13 | 753983.13 | 753983.13 | ESTRUCTURAS | 1.3 | AS_SOON_AS_POSSIBLE | True | 500 | 3312000 | 3312000 | 2025-10-05T09:00:00.0 | 2026-01-28T09:00:00.0 | 2025-10-05T09:00:00.0 | 2026-01-28T09:00:00.0 | 116 días | 53 | True | 2025-09-16T11:36:00.0 | 1.3 | FIXED_DURATION | PRORATED | True | True | 7daeeb58-1b93-f011-adcc-c0bfbe9ea20f | True | PRORATED | 3312000 | 2026-01-28T09:00:00.0 | 2025-10-05T09:00:00.0 | True | 2026-01-28T09:00:00.0 | True | 753983.13 | 53 | True | 2 | 1 |  |  |  |  |  |  |  |  |  |  |  |
| 2025-10-05T09:00:00.0 | ed | 753983.13 | 753983.13 | 753983.13 | ESTRUCTURAS | 1.3.1 | AS_SOON_AS_POSSIBLE | True | 500 | 3312000 | 3312000 | 2025-10-05T09:00:00.0 | 2026-01-28T09:00:00.0 | 2025-10-05T09:00:00.0 | 2026-01-28T09:00:00.0 | 116 días | 54 | True | 2025-09-16T11:36:00.0 | 1.3.1 | FIXED_DURATION | PRORATED | True | True | 7faeeb58-1b93-f011-adcc-c0bfbe9ea20f | True | PRORATED | 3312000 | 2026-01-28T09:00:00.0 | 2025-10-05T09:00:00.0 | True | 2026-01-28T09:00:00.0 | True | 753983.13 | 54 | True | 3 | 53 |  |  | 02 |  |  |  |  |  |  |  |  |
| 2025-10-06T09:00:00.0 | ed | 187644.34 | 187644.34 | 187644.34 | CREMATORIO | 1.3.1.1 | AS_SOON_AS_POSSIBLE | True | 500 | 1958400 | 1958400 | 2025-10-06T09:00:00.0 | 2025-12-13T09:00:00.0 | 2025-10-06T09:00:00.0 | 2026-01-28T09:00:00.0 | 69 días | 55 | True | 2025-09-16T11:36:00.0 | 1.3.1.1 | FIXED_DURATION | PRORATED | True | True | 81aeeb58-1b93-f011-adcc-c0bfbe9ea20f | True | PRORATED | 1958400 | 2025-12-13T09:00:00.0 | 2025-10-06T09:00:00.0 | True | 2025-12-13T09:00:00.0 | True | 187644.34 | 55 | True | 4 | 54 |  |  | 02.01 | 1324800 |  |  |  |  |  |  |  |
| 2025-10-06T09:00:00.0 | ed | 18164.22 | 18164.22 | 18164.22 | MOVIMIENTO DE TIERRAS | 1.3.1.1.1 | AS_SOON_AS_POSSIBLE | True | 500 | 1209600 | 1209600 | 2025-10-06T09:00:00.0 | 2025-11-17T09:00:00.0 | 2025-10-06T09:00:00.0 | 2026-01-28T09:00:00.0 | 43 días | 56 | True | 2025-09-16T11:36:00.0 | 1.3.1.1.1 | FIXED_DURATION | PRORATED | True | True | 83aeeb58-1b93-f011-adcc-c0bfbe9ea20f | True | PRORATED | 1209600 | 2025-11-17T09:00:00.0 | 2025-10-06T09:00:00.0 | True | 2025-11-17T09:00:00.0 | True | 18164.22 | 56 | True | 5 | 55 |  |  | 02.01.01 | 2073600 |  |  |  |  |  |  |  |
| 2025-10-06T09:00:00.0 | ed | 215.84 | 215.84 | 215.84 | CORTE DE TERRENO PARA ADOQUINADO | 1.3.1.1.1.1 | AS_SOON_AS_POSSIBLE | True | 500 | 28800 | 28800 | 2025-10-06T09:00:00.0 | 2025-10-07T09:00:00.0 | 2025-10-06T09:00:00.0 | 2025-10-07T09:00:00.0 | 2 días | 57 |  | 2025-09-16T11:36:00.0 | 1.3.1.1.1.1 |  | PRORATED | True | True | 85aeeb58-1b93-f011-adcc-c0bfbe9ea20f | True | PRORATED | 28800 | 2025-10-07T09:00:00.0 | 2025-10-06T09:00:00.0 | True | 2025-10-07T09:00:00.0 | True | 215.84 | 57 |  | 6 | 56 |  | 447 57 63 FS | 02.01.01.01 |  | 215.84 |  |  | 40 61 57 SS |  | 2025-10-06T09:00:00.0 | 2025-10-06T09:00:00.0 2025-10-07T09:00:00.0 |
| 2025-11-16T09:00:00.0 | ed | 180.99 | 180.99 | 180.99 | REFINE , NIVELACION Y COMPACTACION DE TERRENO NATURAL | 1.3.1.1.1.2 | AS_SOON_AS_POSSIBLE |  | 500 | 28800 | 28800 | 2025-11-16T09:00:00.0 | 2025-11-17T09:00:00.0 | 2026-01-27T09:00:00.0 | 2026-01-28T09:00:00.0 | 2 días | 58 |  | 2025-09-16T11:36:00.0 | 1.3.1.1.1.2 |  | PRORATED | True | True | 87aeeb58-1b93-f011-adcc-c0bfbe9ea20f | True | PRORATED | 28800 | 2025-11-17T09:00:00.0 | 2025-11-16T09:00:00.0 | True | 2025-11-17T09:00:00.0 | True | 180.99 | 58 |  | 6 | 56 |  |  | 02.01.01.02 | 2073600 | 180.99 | 2073600 | 2073600 | 41 68 58 FS | 2073600 | 2025-11-16T09:00:00.0 | 2025-11-16T09:00:00.0 2025-11-17T09:00:00.0 |
| 2025-10-16T09:00:00.0 | ed | 1273.79 | 1273.79 | 1273.79 | ACARREO INTERNO DE MATERIAL PROCEDENTE DEL CORTE (ADOQUINADO + CREMATORIO) | 1.3.1.1.1.3 | AS_SOON_AS_POSSIBLE |  | 500 | 28800 | 28800 | 2025-10-16T09:00:00.0 | 2025-10-17T09:00:00.0 | 2026-01-27T09:00:00.0 | 2026-01-28T09:00:00.0 | 2 días | 59 |  | 2025-09-16T11:36:00.0 | 1.3.1.1.1.3 |  | PRORATED | True | True | 89aeeb58-1b93-f011-adcc-c0bfbe9ea20f | True | PRORATED | 28800 | 2025-10-17T09:00:00.0 | 2025-10-16T09:00:00.0 | True | 2025-10-17T09:00:00.0 | True | 1273.79 | 59 |  | 6 | 56 |  | 43 59 60 SS | 02.01.01.03 | 2966400 | 1273.79 |  | 2966400 | 42 62 59 FS | 2966400 | 2025-10-16T09:00:00.0 | 2025-10-16T09:00:00.0 2025-10-17T09:00:00.0 |
| 2025-10-16T09:00:00.0 | ed | 4606.04 | 4606.04 | 4606.04 | ELIMINACION DE MATERIAL EXCEDENTE (ADOQUINADO + CREMATORIO) | 1.3.1.1.1.4 | AS_SOON_AS_POSSIBLE |  | 500 | 28800 | 28800 | 2025-10-16T09:00:00.0 | 2025-10-17T09:00:00.0 | 2026-01-27T09:00:00.0 | 2026-01-28T09:00:00.0 | 2 días | 60 |  | 2025-09-16T11:36:00.0 | 1.3.1.1.1.4 |  | PRORATED | True | True | 8baeeb58-1b93-f011-adcc-c0bfbe9ea20f | True | PRORATED | 28800 | 2025-10-17T09:00:00.0 | 2025-10-16T09:00:00.0 | True | 2025-10-17T09:00:00.0 | True | 4606.04 | 60 |  | 6 | 56 |  |  | 02.01.01.04 | 2966400 | 4606.04 | 2966400 | 2966400 | 43 59 60 SS | 2966400 | 2025-10-16T09:00:00.0 | 2025-10-16T09:00:00.0 2025-10-17T09:00:00.0 |
| 2025-10-06T09:00:00.0 | ed | 627.19 | 627.19 | 627.19 | CORTE DE TERRENO PARA CREMATORIO | 1.3.1.1.1.5 | AS_SOON_AS_POSSIBLE | True | 500 | 28800 | 28800 | 2025-10-06T09:00:00.0 | 2025-10-07T09:00:00.0 | 2025-10-06T09:00:00.0 | 2025-10-07T09:00:00.0 | 2 días | 61 |  | 2025-09-16T11:36:00.0 | 1.3.1.1.1.5 |  | PRORATED | True | True | 8daeeb58-1b93-f011-adcc-c0bfbe9ea20f | True | PRORATED | 28800 | 2025-10-07T09:00:00.0 | 2025-10-06T09:00:00.0 | True | 2025-10-07T09:00:00.0 | True | 627.19 | 61 |  | 6 | 56 |  | 40 61 57 SS, 46 61 63 FS | 02.01.01.05 |  | 627.19 |  |  | 44 22 61 FS |  | 2025-10-06T09:00:00.0 | 2025-10-06T09:00:00.0 2025-10-07T09:00:00.0 |
| 2025-10-14T09:00:00.0 | ed | 876.06 | 876.06 | 876.06 | REFINE , NIVELACION Y COMPACTACION DE TERRENO NATURAL | 1.3.1.1.1.6 | AS_SOON_AS_POSSIBLE |  | 500 | 57600 | 57600 | 2025-10-14T09:00:00.0 | 2025-10-16T09:00:00.0 | 2026-01-25T09:00:00.0 | 2026-01-27T09:00:00.0 | 3 días | 62 |  | 2025-09-16T11:36:00.0 | 1.3.1.1.1.6 |  | PRORATED | True | True | 8faeeb58-1b93-f011-adcc-c0bfbe9ea20f | True | PRORATED | 57600 | 2025-10-16T09:00:00.0 | 2025-10-14T09:00:00.0 | True | 2025-10-16T09:00:00.0 | True | 876.06 | 62 |  | 6 | 56 |  | 42 62 59 FS | 02.01.01.06 | 2966400 | 876.06 |  | 2966400 | 45 63 62 FS | 2966400 | 2025-10-14T09:00:00.0 | 2025-10-14T09:00:00.0 2025-10-16T09:00:00.0 |
| 2025-10-07T09:00:00.0 | ed | 2478.99 | 2478.99 | 2478.99 | EXCAVACION MANUAL EN TERRENO NORMAL | 1.3.1.1.1.7 | AS_SOON_AS_POSSIBLE | True | 500 | 201600 | 201600 | 2025-10-07T09:00:00.0 | 2025-10-14T09:00:00.0 | 2025-10-07T09:00:00.0 | 2025-10-14T09:00:00.0 | 8 días | 63 |  | 2025-09-16T11:36:00.0 | 1.3.1.1.1.7 |  | PRORATED | True | True | 91aeeb58-1b93-f011-adcc-c0bfbe9ea20f | True | PRORATED | 201600 | 2025-10-14T09:00:00.0 | 2025-10-07T09:00:00.0 | True | 2025-10-14T09:00:00.0 | True | 2478.99 | 63 |  | 6 | 56 |  | 45 63 62 FS, 48 63 66 FS | 02.01.01.07 |  | 2478.99 |  |  | 46 61 63 FS, 447 57 63 FS |  | 2025-10-07T09:00:00.0 | 2025-10-07T09:00:00.0 2025-10-14T09:00:00.0 |
| 2025-11-04T09:00:00.0 | ed | 7905.32 | 7905.32 | 7905.32 | RELLENO CON MATERIAL DE PRESTAMO (AFIRMADO) | 1.3.1.1.1.8 | AS_SOON_AS_POSSIBLE |  | 500 | 144000 | 144000 | 2025-11-04T09:00:00.0 | 2025-11-09T09:00:00.0 | 2026-01-22T09:00:00.0 | 2026-01-27T09:00:00.0 | 6 días | 64 |  | 2025-09-16T11:36:00.0 | 1.3.1.1.1.8 |  | PRORATED | True | True | 93aeeb58-1b93-f011-adcc-c0bfbe9ea20f | True | PRORATED | 144000 | 2025-11-09T09:00:00.0 | 2025-11-04T09:00:00.0 | True | 2025-11-09T09:00:00.0 | True | 7905.32 | 64 |  | 6 | 56 |  | 52 64 70 FS | 02.01.01.08 | 2275200 | 7905.32 |  | 2275200 | 47 67 64 FS | 2275200 | 2025-11-04T09:00:00.0 | 2025-11-04T09:00:00.0 2025-11-09T09:00:00.0 |
| 2025-10-14T09:00:00.0 | ed | 23281.7 | 23281.7 | 23281.7 | OBRAS DE CONCRETO SIMPLE | 1.3.1.1.2 | AS_SOON_AS_POSSIBLE | True | 500 | 950400 | 950400 | 2025-10-14T09:00:00.0 | 2025-11-16T09:00:00.0 | 2025-10-14T09:00:00.0 | 2026-01-27T09:00:00.0 | 34 días | 65 | True | 2025-09-16T11:36:00.0 | 1.3.1.1.2 | FIXED_DURATION | PRORATED | True | True | 95aeeb58-1b93-f011-adcc-c0bfbe9ea20f | True | PRORATED | 950400 | 2025-11-16T09:00:00.0 | 2025-10-14T09:00:00.0 | True | 2025-11-16T09:00:00.0 | True | 23281.7 | 65 | True | 5 | 55 |  |  | 02.01.02 | 2073600 |  |  |  |  |  |  |  |
| 2025-10-14T09:00:00.0 | ed | 919.34 | 919.34 | 919.34 | SOLADO e=4"(ZAPATAS) | 1.3.1.1.2.1 | AS_SOON_AS_POSSIBLE | True | 500 | 28800 | 28800 | 2025-10-14T09:00:00.0 | 2025-10-15T09:00:00.0 | 2025-10-14T09:00:00.0 | 2025-10-15T09:00:00.0 | 2 días | 66 |  | 2025-09-16T11:36:00.0 | 1.3.1.1.2.1 |  | PRORATED | True | True | 97aeeb58-1b93-f011-adcc-c0bfbe9ea20f | True | PRORATED | 28800 | 2025-10-15T09:00:00.0 | 2025-10-14T09:00:00.0 | True | 2025-10-15T09:00:00.0 | True | 919.34 | 66 |  | 6 | 65 |  | 54 66 74 FS | 02.01.02.01 |  | 919.34 |  |  | 48 63 66 FS |  | 2025-10-14T09:00:00.0 | 2025-10-14T09:00:00.0 2025-10-15T09:00:00.0 |
| 2025-11-03T09:00:00.0 | ed | 5288.28 | 5288.28 | 5288.28 | CIMIENTOS CORRIDOS f'c=175 kg/cm2 + 30 % P.M | 1.3.1.1.2.2 | AS_SOON_AS_POSSIBLE | True | 500 | 28800 | 28800 | 2025-11-03T09:00:00.0 | 2025-11-04T09:00:00.0 | 2025-11-03T09:00:00.0 | 2025-11-04T09:00:00.0 | 2 días | 67 |  | 2025-09-16T11:36:00.0 | 1.3.1.1.2.2 |  | PRORATED | True | True | 99aeeb58-1b93-f011-adcc-c0bfbe9ea20f | True | PRORATED | 28800 | 2025-11-04T09:00:00.0 | 2025-11-03T09:00:00.0 | True | 2025-11-04T09:00:00.0 | True | 5288.28 | 67 |  | 6 | 65 |  | 47 67 64 FS, 62 67 84 SS | 02.01.02.02 |  | 5288.28 |  |  | 49 77 67 SS |  | 2025-11-03T09:00:00.0 | 2025-11-03T09:00:00.0 2025-11-04T09:00:00.0 |
| 2025-11-13T09:00:00.0 | ed | 3445.6 | 3445.6 | 3445.6 | SOBRECIMIENTO, CONCRETO 175 kg/cm2+30% P.M | 1.3.1.1.2.3 | AS_SOON_AS_POSSIBLE | True | 500 | 86400 | 86400 | 2025-11-13T09:00:00.0 | 2025-11-16T09:00:00.0 | 2025-11-13T09:00:00.0 | 2025-11-16T09:00:00.0 | 4 días | 68 |  | 2025-09-16T11:36:00.0 | 1.3.1.1.2.3 |  | PRORATED | True | True | 9baeeb58-1b93-f011-adcc-c0bfbe9ea20f | True | PRORATED | 86400 | 2025-11-16T09:00:00.0 | 2025-11-13T09:00:00.0 | True | 2025-11-16T09:00:00.0 | True | 3445.6 | 68 |  | 6 | 65 |  | 41 68 58 FS, 346 68 389 FS, 421 68 174 FS | 02.01.02.03 |  | 3445.6 |  |  | 50 69 68 -86400 FS |  | 2025-11-13T09:00:00.0 | 2025-11-13T09:00:00.0 2025-11-16T09:00:00.0 |
| 2025-11-08T09:00:00.0 | ed | 8944.31 | 8944.31 | 8944.31 | ENCOFRADO Y DESENCOFRADO DE SOBRECIMIENTOS | 1.3.1.1.2.4 | AS_SOON_AS_POSSIBLE | True | 500 | 230400 | 230400 | 2025-11-08T09:00:00.0 | 2025-11-16T09:00:00.0 | 2025-11-08T09:00:00.0 | 2025-11-16T09:00:00.0 | 9 días | 69 |  | 2025-09-16T11:36:00.0 | 1.3.1.1.2.4 |  | PRORATED | True | True | 9daeeb58-1b93-f011-adcc-c0bfbe9ea20f | True | PRORATED | 230400 | 2025-11-16T09:00:00.0 | 2025-11-08T09:00:00.0 | True | 2025-11-16T09:00:00.0 | True | 8944.31 | 69 |  | 6 | 65 |  | 50 69 68 -86400 FS | 02.01.02.04 |  | 8944.31 |  |  | 51 85 69 FS |  | 2025-11-08T09:00:00.0 | 2025-11-08T09:00:00.0 2025-11-16T09:00:00.0 |

| start | leveling_delay_units | cost | cost_variance | remaining_cost | name | wbs | constraint_type | critical | priority | duration | remaining_duration | early_start | early_finish | late_start | late_finish | text2 | unique_id | summary | created | outline_number | type | fixed_cost_accrual | leveling_can_split | level_assignments | guid | active | baseline_fixed_cost_accrual | scheduled_duration | scheduled_finish | scheduled_start | recalc_outline_codes | finish | auto_compute_actuals | remaining_regular_cost | id | rollup | outline_level | parent_task_unique_id | successors | text1 | finish_slack | fixed_cost | free_slack | total_slack | predecessors | start_slack | summary_progress | work_splits |
| --- | --- | --- | --- | --- | --- | --- | --- | --- | --- | --- | --- | --- | --- | --- | --- | --- | --- | --- | --- | --- | --- | --- | --- | --- | --- | --- | --- | --- | --- | --- | --- | --- | --- | --- | --- | --- | --- | --- | --- | --- | --- | --- | --- | --- | --- | --- | --- | --- |
| 2025-11-09T09:00:00.0 | ed | 4684.17 | 4684.17 | 4684.17 | CONCRETO FALSO PISO MEZCLA 1:8 CEMENTO - HORMIGON e=4" | 1.3.1.1.2.5 | AS_SOON_AS_POSSIBLE |  | 500 | 28800 | 28800 | 2025-11-09T09:00:00.0 | 2025-11-10T09:00:00.0 | 2026-01-27T09:00:00.0 | 2026-01-28T09:00:00.0 | 2 días | 70 |  | 2025-09-16T11:36:00.0 | 1.3.1.1.2.5 |  | PRORATED | True | True | 9faeeb58-1b93-f011-adcc-c0bfbe9ea20f | True | PRORATED | 28800 | 2025-11-10T09:00:00.0 | 2025-11-09T09:00:00.0 | True | 2025-11-10T09:00:00.0 | True | 4684.17 | 70 |  | 6 | 65 | 467 70 492 FS | 02.01.02.05 | 2275200 | 4684.17 | 2275200 | 2275200 | 52 64 70 FS | 2275200 | 2025-11-09T09:00:00.0 | 2025-11-09T09:00:00.0 2025-11-10T09:00:00.0 |
| 2025-10-15T09:00:00.0 | ed | 145644.02 | 145644.02 | 145644.02 | OBRAS DE CONCRETO ARMADO | 1.3.1.1.3 | AS_SOON_AS_POSSIBLE | True | 500 | 1699200 | 1699200 | 2025-10-15T09:00:00.0 | 2025-12-13T09:00:00.0 | 2025-10-15T09:00:00.0 | 2026-01-28T09:00:00.0 | 60 días | 71 | True | 2025-09-16T11:36:00.0 | 1.3.1.1.3 | FIXED_DURATION | PRORATED | True | True | a1aeeb58-1b93-f011-adcc-c0bfbe9ea20f | True | PRORATED | 1699200 | 2025-12-13T09:00:00.0 | 2025-10-15T09:00:00.0 | True | 2025-12-13T09:00:00.0 | True | 145644.02 | 71 | True | 5 | 55 |  | 02.01.03 | 1324800 |  |  |  |  |  |  |  |
| 2025-10-15T09:00:00.0 | ed | 18790.43 | 18790.43 | 18790.43 | ZAPATAS AISLADAS | 1.3.1.1.3.1 | AS_SOON_AS_POSSIBLE | True | 500 | 259200 | 259200 | 2025-10-15T09:00:00.0 | 2025-10-24T09:00:00.0 | 2025-10-15T09:00:00.0 | 2026-01-28T09:00:00.0 | 10 días | 72 | True | 2025-09-16T11:36:00.0 | 1.3.1.1.3.1 | FIXED_DURATION | PRORATED | True | True | a3aeeb58-1b93-f011-adcc-c0bfbe9ea20f | True | PRORATED | 259200 | 2025-10-24T09:00:00.0 | 2025-10-15T09:00:00.0 | True | 2025-10-24T09:00:00.0 | True | 18790.43 | 72 | True | 6 | 71 |  | 02.01.03.01 | 2764800 |  |  |  |  |  |  |  |
| 2025-10-20T09:00:00.0 | ed | 6727.85 | 6727.85 | 6727.85 | CONCRETO F´C 210 KG/CM2 ZAPATAS | 1.3.1.1.3.1.1 | AS_SOON_AS_POSSIBLE |  | 500 | 86400 | 86400 | 2025-10-20T09:00:00.0 | 2025-10-23T09:00:00.0 | 2026-01-24T09:00:00.0 | 2026-01-27T09:00:00.0 | 4 días | 73 |  | 2025-09-16T11:36:00.0 | 1.3.1.1.3.1.1 |  | PRORATED | True | True | a5aeeb58-1b93-f011-adcc-c0bfbe9ea20f | True | PRORATED | 86400 | 2025-10-23T09:00:00.0 | 2025-10-20T09:00:00.0 | True | 2025-10-23T09:00:00.0 | True | 6727.85 | 73 |  | 7 | 72 | 55 73 75 FS | 02.01.03.01.01 | 2764800 | 6727.85 |  | 2764800 | 53 74 73 FS | 2764800 | 2025-10-20T09:00:00.0 | 2025-10-20T09:00:00.0 2025-10-23T09:00:00.0 |
| 2025-10-15T09:00:00.0 | ed | 11959.91 | 11959.91 | 11959.91 | ACERO DE REFUERZO Fy=4200 kg/cm2 | 1.3.1.1.3.1.2 | AS_SOON_AS_POSSIBLE | True | 500 | 144000 | 144000 | 2025-10-15T09:00:00.0 | 2025-10-20T09:00:00.0 | 2025-10-15T09:00:00.0 | 2025-10-20T09:00:00.0 | 6 días | 74 |  | 2025-09-16T11:36:00.0 | 1.3.1.1.3.1.2 |  | PRORATED | True | True | a7aeeb58-1b93-f011-adcc-c0bfbe9ea20f | True | PRORATED | 144000 | 2025-10-20T09:00:00.0 | 2025-10-15T09:00:00.0 | True | 2025-10-20T09:00:00.0 | True | 11959.91 | 74 |  | 7 | 72 | 53 74 73 FS, 58 74 79 SS | 02.01.03.01.02 |  | 11959.91 |  |  | 54 66 74 FS |  | 2025-10-15T09:00:00.0 | 2025-10-15T09:00:00.0 2025-10-20T09:00:00.0 |
| 2025-10-23T09:00:00.0 | ed | 102.67 | 102.67 | 102.67 | CURADO DE CONCRETO | 1.3.1.1.3.1.3 | AS_SOON_AS_POSSIBLE |  | 500 | 28800 | 28800 | 2025-10-23T09:00:00.0 | 2025-10-24T09:00:00.0 | 2026-01-27T09:00:00.0 | 2026-01-28T09:00:00.0 | 2 días | 75 |  | 2025-09-16T11:36:00.0 | 1.3.1.1.3.1.3 |  | PRORATED | True | True | a9aeeb58-1b93-f011-adcc-c0bfbe9ea20f | True | PRORATED | 28800 | 2025-10-24T09:00:00.0 | 2025-10-23T09:00:00.0 | True | 2025-10-24T09:00:00.0 | True | 102.67 | 75 |  | 7 | 72 |  | 02.01.03.01.03 | 2764800 | 102.67 | 2764800 | 2764800 | 55 73 75 FS | 2764800 | 2025-10-23T09:00:00.0 | 2025-10-23T09:00:00.0 2025-10-24T09:00:00.0 |
| 2025-10-15T09:00:00.0 | ed | 32651.49 | 32651.49 | 32651.49 | COLUMNAS | 1.3.1.1.3.2 | AS_SOON_AS_POSSIBLE | True | 500 | 633600 | 633600 | 2025-10-15T09:00:00.0 | 2025-11-06T09:00:00.0 | 2025-10-15T09:00:00.0 | 2026-01-28T09:00:00.0 | 23 días | 76 | True | 2025-09-16T11:36:00.0 | 1.3.1.1.3.2 | FIXED_DURATION | PRORATED | True | True | abaeeb58-1b93-f011-adcc-c0bfbe9ea20f | True | PRORATED | 633600 | 2025-11-06T09:00:00.0 | 2025-10-15T09:00:00.0 | True | 2025-11-06T09:00:00.0 | True | 32651.49 | 76 | True | 6 | 71 |  | 02.01.03.02 | 2390400 |  |  |  |  |  |  |  |
| 2025-11-03T09:00:00.0 | ed | 6393.86 | 6393.86 | 6393.86 | CONCRETO F´C 210 KG/CM2 COLUMNAS | 1.3.1.1.3.2.1 | AS_SOON_AS_POSSIBLE | True | 500 | 86400 | 86400 | 2025-11-03T09:00:00.0 | 2025-11-06T09:00:00.0 | 2025-11-03T09:00:00.0 | 2025-11-06T09:00:00.0 | 4 días | 77 |  | 2025-09-16T11:36:00.0 | 1.3.1.1.3.2.1 |  | PRORATED | True | True | adaeeb58-1b93-f011-adcc-c0bfbe9ea20f | True | PRORATED | 86400 | 2025-11-06T09:00:00.0 | 2025-11-03T09:00:00.0 | True | 2025-11-06T09:00:00.0 | True | 6393.86 | 77 |  | 7 | 76 | 49 77 67 SS, 66 77 89 FS, 414 77 466 FS | 02.01.03.02.01 |  | 6393.86 |  |  | 56 78 77 FS |  | 2025-11-03T09:00:00.0 | 2025-11-03T09:00:00.0 2025-11-06T09:00:00.0 |
| 2025-10-21T09:00:00.0 | ed | 11205.82 | 11205.82 | 11205.82 | ENCOFRADO Y DESENCOFRADO DE COLUMNAS | 1.3.1.1.3.2.2 | AS_SOON_AS_POSSIBLE | True | 500 | 374400 | 374400 | 2025-10-21T09:00:00.0 | 2025-11-03T09:00:00.0 | 2025-10-21T09:00:00.0 | 2025-11-03T09:00:00.0 | 14 días | 78 |  | 2025-09-16T11:36:00.0 | 1.3.1.1.3.2.2 |  | PRORATED | True | True | afaeeb58-1b93-f011-adcc-c0bfbe9ea20f | True | PRORATED | 374400 | 2025-11-03T09:00:00.0 | 2025-10-21T09:00:00.0 | True | 2025-11-03T09:00:00.0 | True | 11205.82 | 78 |  | 7 | 76 | 56 78 77 FS | 02.01.03.02.02 |  | 11205.82 |  |  | 57 79 78 FS |  | 2025-10-21T09:00:00.0 | 2025-10-21T09:00:00.0 2025-11-03T09:00:00.0 |
| 2025-10-15T09:00:00.0 | ed | 14753.06 | 14753.06 | 14753.06 | ACERO DE REFUERZO Fy=4200 kg/cm2 | 1.3.1.1.3.2.3 | AS_SOON_AS_POSSIBLE | True | 500 | 172800 | 172800 | 2025-10-15T09:00:00.0 | 2025-10-21T09:00:00.0 | 2025-10-15T09:00:00.0 | 2025-10-21T09:00:00.0 | 7 días | 79 |  | 2025-09-16T11:36:00.0 | 1.3.1.1.3.2.3 |  | PRORATED | True | True | b1aeeb58-1b93-f011-adcc-c0bfbe9ea20f | True | PRORATED | 172800 | 2025-10-21T09:00:00.0 | 2025-10-15T09:00:00.0 | True | 2025-10-21T09:00:00.0 | True | 14753.06 | 79 |  | 7 | 76 | 57 79 78 FS, 59 79 80 FS | 02.01.03.02.03 |  | 14753.06 |  |  | 58 74 79 SS |  | 2025-10-15T09:00:00.0 | 2025-10-15T09:00:00.0 2025-10-21T09:00:00.0 |
| 2025-10-21T09:00:00.0 | ed | 298.75 | 298.75 | 298.75 | CURADO DE CONCRETO | 1.3.1.1.3.2.4 | AS_SOON_AS_POSSIBLE |  | 500 | 57600 | 57600 | 2025-10-21T09:00:00.0 | 2025-10-23T09:00:00.0 | 2026-01-26T09:00:00.0 | 2026-01-28T09:00:00.0 | 3 días | 80 |  | 2025-09-16T11:36:00.0 | 1.3.1.1.3.2.4 |  | PRORATED | True | True | b3aeeb58-1b93-f011-adcc-c0bfbe9ea20f | True | PRORATED | 57600 | 2025-10-23T09:00:00.0 | 2025-10-21T09:00:00.0 | True | 2025-10-23T09:00:00.0 | True | 298.75 | 80 |  | 7 | 76 |  | 02.01.03.02.04 | 2793600 | 298.75 | 2793600 | 2793600 | 59 79 80 FS | 2793600 | 2025-10-21T09:00:00.0 | 2025-10-21T09:00:00.0 2025-10-23T09:00:00.0 |
| 2025-11-03T09:00:00.0 | ed | 2622.48 | 2622.48 | 2622.48 | COLUMNETAS | 1.3.1.1.3.3 | AS_SOON_AS_POSSIBLE | True | 500 | 144000 | 144000 | 2025-11-03T09:00:00.0 | 2025-11-08T09:00:00.0 | 2025-11-03T09:00:00.0 | 2025-11-08T09:00:00.0 | 6 días | 81 | True | 2025-09-16T11:36:00.0 | 1.3.1.1.3.3 | FIXED_DURATION | PRORATED | True | True | b5aeeb58-1b93-f011-adcc-c0bfbe9ea20f | True | PRORATED | 144000 | 2025-11-08T09:00:00.0 | 2025-11-03T09:00:00.0 | True | 2025-11-08T09:00:00.0 | True | 2622.48 | 81 | True | 6 | 71 |  | 02.01.03.03 |  |  |  |  |  |  |  |  |
| 2025-11-06T09:00:00.0 | ed | 401.91 | 401.91 | 401.91 | CONCRETO F´C 210 KG/CM2 COLUMNETAS | 1.3.1.1.3.3.1 | AS_SOON_AS_POSSIBLE | True | 500 | 28800 | 28800 | 2025-11-06T09:00:00.0 | 2025-11-07T09:00:00.0 | 2025-11-06T09:00:00.0 | 2025-11-07T09:00:00.0 | 2 días | 82 |  | 2025-09-16T11:36:00.0 | 1.3.1.1.3.3.1 |  | PRORATED | True | True | b7aeeb58-1b93-f011-adcc-c0bfbe9ea20f | True | PRORATED | 28800 | 2025-11-07T09:00:00.0 | 2025-11-06T09:00:00.0 | True | 2025-11-07T09:00:00.0 | True | 401.91 | 82 |  | 7 | 81 | 63 82 85 FS | 02.01.03.03.01 |  | 401.91 |  |  | 60 83 82 FS |  | 2025-11-06T09:00:00.0 | 2025-11-06T09:00:00.0 2025-11-07T09:00:00.0 |
| 2025-11-04T09:00:00.0 | ed | 1365.04 | 1365.04 | 1365.04 | ENCOFRADO Y DESENCOFRADO DE COLUMNETAS | 1.3.1.1.3.3.2 | AS_SOON_AS_POSSIBLE | True | 500 | 57600 | 57600 | 2025-11-04T09:00:00.0 | 2025-11-06T09:00:00.0 | 2025-11-04T09:00:00.0 | 2025-11-06T09:00:00.0 | 3 días | 83 |  | 2025-09-16T11:36:00.0 | 1.3.1.1.3.3.2 |  | PRORATED | True | True | b9aeeb58-1b93-f011-adcc-c0bfbe9ea20f | True | PRORATED | 57600 | 2025-11-06T09:00:00.0 | 2025-11-04T09:00:00.0 | True | 2025-11-06T09:00:00.0 | True | 1365.04 | 83 |  | 7 | 81 | 60 83 82 FS | 02.01.03.03.02 |  | 1365.04 |  |  | 61 84 83 FS |  | 2025-11-04T09:00:00.0 | 2025-11-04T09:00:00.0 2025-11-06T09:00:00.0 |
| 2025-11-03T09:00:00.0 | ed | 807.65 | 807.65 | 807.65 | ACERO DE REFUERZO Fy=4200 kg/cm2 | 1.3.1.1.3.3.3 | AS_SOON_AS_POSSIBLE | True | 500 | 28800 | 28800 | 2025-11-03T09:00:00.0 | 2025-11-04T09:00:00.0 | 2025-11-03T09:00:00.0 | 2025-11-04T09:00:00.0 | 2 días | 84 |  | 2025-09-16T11:36:00.0 | 1.3.1.1.3.3.3 |  | PRORATED | True | True | bbaeeb58-1b93-f011-adcc-c0bfbe9ea20f | True | PRORATED | 28800 | 2025-11-04T09:00:00.0 | 2025-11-03T09:00:00.0 | True | 2025-11-04T09:00:00.0 | True | 807.65 | 84 |  | 7 | 81 | 61 84 83 FS, 70 84 94 FS | 02.01.03.03.03 |  | 807.65 |  |  | 62 67 84 SS |  | 2025-11-03T09:00:00.0 | 2025-11-03T09:00:00.0 2025-11-04T09:00:00.0 |
| 2025-11-07T09:00:00.0 | ed | 47.88 | 47.88 | 47.88 | CURADO DE CONCRETO | 1.3.1.1.3.3.4 | AS_SOON_AS_POSSIBLE | True | 500 | 28800 | 28800 | 2025-11-07T09:00:00.0 | 2025-11-08T09:00:00.0 | 2025-11-07T09:00:00.0 | 2025-11-08T09:00:00.0 | 2 días | 85 |  | 2025-09-16T11:36:00.0 | 1.3.1.1.3.3.4 |  | PRORATED | True | True | bdaeeb58-1b93-f011-adcc-c0bfbe9ea20f | True | PRORATED | 28800 | 2025-11-08T09:00:00.0 | 2025-11-07T09:00:00.0 | True | 2025-11-08T09:00:00.0 | True | 47.88 | 85 |  | 7 | 81 | 51 85 69 FS | 02.01.03.03.04 |  | 47.88 |  |  | 63 82 85 FS |  | 2025-11-07T09:00:00.0 | 2025-11-07T09:00:00.0 2025-11-08T09:00:00.0 |
| 2025-11-06T09:00:00.0 | ed | 17028.9 | 17028.9 | 17028.9 | VIGAS ESTRUCTURALES | 1.3.1.1.3.4 | AS_SOON_AS_POSSIBLE |  | 500 | 604800 | 604800 | 2025-11-06T09:00:00.0 | 2025-11-27T09:00:00.0 | 2025-11-27T09:00:00.0 | 2026-01-28T09:00:00.0 | 22 días | 86 | True | 2025-09-16T11:36:00.0 | 1.3.1.1.3.4 | FIXED_DURATION | PRORATED | True | True | bfaeeb58-1b93-f011-adcc-c0bfbe9ea20f | True | PRORATED | 604800 | 2025-11-27T09:00:00.0 | 2025-11-06T09:00:00.0 | True | 2025-11-27T09:00:00.0 | True | 17028.9 | 86 | True | 6 | 71 |  | 02.01.03.04 | 1785600 |  | 604800 | 604800 |  | 604800 |  |  |
| 2025-11-25T09:00:00.0 | ed | 3614.66 | 3614.66 | 3614.66 | CONCRETO F´C 210 KG/CM2 - VIGAS ESTRUCTURALES | 1.3.1.1.3.4.1 | AS_SOON_AS_POSSIBLE |  | 500 | 28800 | 28800 | 2025-11-25T09:00:00.0 | 2025-11-26T09:00:00.0 | 2026-01-26T09:00:00.0 | 2026-01-27T09:00:00.0 | 2 días | 87 |  | 2025-09-16T11:36:00.0 | 1.3.1.1.3.4.1 |  | PRORATED | True | True | c1aeeb58-1b93-f011-adcc-c0bfbe9ea20f | True | PRORATED | 28800 | 2025-11-26T09:00:00.0 | 2025-11-25T09:00:00.0 | True | 2025-11-26T09:00:00.0 | True | 3614.66 | 87 |  | 7 | 86 | 67 87 90 FS | 02.01.03.04.01 | 1785600 | 3614.66 |  | 1785600 | 64 97 87 SS | 1785600 | 2025-11-25T09:00:00.0 | 2025-11-25T09:00:00.0 2025-11-26T09:00:00.0 |
| 2025-11-10T09:00:00.0 | ed | 4284.05 | 4284.05 | 4284.05 | ENCOFRADO Y DESENCOFRADO DE VIGAS ESTRUCTURALES | 1.3.1.1.3.4.2 | AS_SOON_AS_POSSIBLE |  | 500 | 144000 | 144000 | 2025-11-10T09:00:00.0 | 2025-11-15T09:00:00.0 | 2025-12-12T09:00:00.0 | 2025-12-17T09:00:00.0 | 6 días | 88 |  | 2025-09-16T11:36:00.0 | 1.3.1.1.3.4.2 |  | PRORATED | True | True | c3aeeb58-1b93-f011-adcc-c0bfbe9ea20f | True | PRORATED | 144000 | 2025-11-15T09:00:00.0 | 2025-11-10T09:00:00.0 | True | 2025-11-15T09:00:00.0 | True | 4284.05 | 88 |  | 7 | 86 | 73 88 98 FS | 02.01.03.04.02 | 921600 | 4284.05 |  | 921600 | 65 89 88 FS | 921600 | 2025-11-10T09:00:00.0 | 2025-11-10T09:00:00.0 2025-11-15T09:00:00.0 |
| 2025-11-06T09:00:00.0 | ed | 9024.98 | 9024.98 | 9024.98 | ACERO DE REFUERZO Fy=4200 kg/cm2 | 1.3.1.1.3.4.3 | AS_SOON_AS_POSSIBLE |  | 500 | 115200 | 115200 | 2025-11-06T09:00:00.0 | 2025-11-10T09:00:00.0 | 2025-12-08T09:00:00.0 | 2025-12-12T09:00:00.0 | 5 días | 89 |  | 2025-09-16T11:36:00.0 | 1.3.1.1.3.4.3 |  | PRORATED | True | True | c5aeeb58-1b93-f011-adcc-c0bfbe9ea20f | True | PRORATED | 115200 | 2025-11-10T09:00:00.0 | 2025-11-06T09:00:00.0 | True | 2025-11-10T09:00:00.0 | True | 9024.98 | 89 |  | 7 | 86 | 65 89 88 FS | 02.01.03.04.03 | 921600 | 9024.98 |  | 921600 | 66 77 89 FS | 921600 | 2025-11-06T09:00:00.0 | 2025-11-06T09:00:00.0 2025-11-10T09:00:00.0 |
| 2025-11-26T09:00:00.0 | ed | 105.21 | 105.21 | 105.21 | CURADO DE CONCRETO | 1.3.1.1.3.4.4 | AS_SOON_AS_POSSIBLE |  | 500 | 28800 | 28800 | 2025-11-26T09:00:00.0 | 2025-11-27T09:00:00.0 | 2026-01-27T09:00:00.0 | 2026-01-28T09:00:00.0 | 2 días | 90 |  | 2025-09-16T11:36:00.0 | 1.3.1.1.3.4.4 |  | PRORATED | True | True | c7aeeb58-1b93-f011-adcc-c0bfbe9ea20f | True | PRORATED | 28800 | 2025-11-27T09:00:00.0 | 2025-11-26T09:00:00.0 | True | 2025-11-27T09:00:00.0 | True | 105.21 | 90 |  | 7 | 86 |  | 02.01.03.04.04 | 1785600 | 105.21 | 1785600 | 1785600 | 67 87 90 FS | 1785600 | 2025-11-26T09:00:00.0 | 2025-11-26T09:00:00.0 2025-11-27T09:00:00.0 |
| 2025-11-04T09:00:00.0 | ed | 9759.33 | 9759.33 | 9759.33 | VIGAS DE CONFINAMIENTO | 1.3.1.1.3.5 | AS_SOON_AS_POSSIBLE |  | 500 | 259200 | 259200 | 2025-11-04T09:00:00.0 | 2025-11-13T09:00:00.0 | 2026-01-19T09:00:00.0 | 2026-01-28T09:00:00.0 | 10 días | 91 | True | 2025-09-16T11:36:00.0 | 1.3.1.1.3.5 | FIXED_DURATION | PRORATED | True | True | c9aeeb58-1b93-f011-adcc-c0bfbe9ea20f | True | PRORATED | 259200 | 2025-11-13T09:00:00.0 | 2025-11-04T09:00:00.0 | True | 2025-11-13T09:00:00.0 | True | 9759.33 | 91 | True | 6 | 71 |  | 02.01.03.05 | 2188800 |  | 2188800 | 2188800 |  | 2188800 |  |  |
| 2025-11-11T09:00:00.0 | ed | 1878.46 | 1878.46 | 1878.46 | CONCRETO F´C 210 KG/CM2 - VIGUETAS | 1.3.1.1.3.5.1 | AS_SOON_AS_POSSIBLE |  | 500 | 28800 | 28800 | 2025-11-11T09:00:00.0 | 2025-11-12T09:00:00.0 | 2026-01-26T09:00:00.0 | 2026-01-27T09:00:00.0 | 2 días | 92 |  | 2025-09-16T11:36:00.0 | 1.3.1.1.3.5.1 |  | PRORATED | True | True | cbaeeb58-1b93-f011-adcc-c0bfbe9ea20f | True | PRORATED | 28800 | 2025-11-12T09:00:00.0 | 2025-11-11T09:00:00.0 | True | 2025-11-12T09:00:00.0 | True | 1878.46 | 92 |  | 7 | 91 | 71 92 95 FS | 02.01.03.05.01 | 2188800 | 1878.46 |  | 2188800 | 68 93 92 FS | 2188800 | 2025-11-11T09:00:00.0 | 2025-11-11T09:00:00.0 2025-11-12T09:00:00.0 |
| 2025-11-05T09:00:00.0 | ed | 5550.5 | 5550.5 | 5550.5 | ENCOFRADO Y DESENCOFRADO DE VIGUETAS | 1.3.1.1.3.5.2 | AS_SOON_AS_POSSIBLE |  | 500 | 172800 | 172800 | 2025-11-05T09:00:00.0 | 2025-11-11T09:00:00.0 | 2026-01-20T09:00:00.0 | 2026-01-26T09:00:00.0 | 7 días | 93 |  | 2025-09-16T11:36:00.0 | 1.3.1.1.3.5.2 |  | PRORATED | True | True | cdaeeb58-1b93-f011-adcc-c0bfbe9ea20f | True | PRORATED | 172800 | 2025-11-11T09:00:00.0 | 2025-11-05T09:00:00.0 | True | 2025-11-11T09:00:00.0 | True | 5550.5 | 93 |  | 7 | 91 | 68 93 92 FS | 02.01.03.05.02 | 2188800 | 5550.5 |  | 2188800 | 69 94 93 FS | 2188800 | 2025-11-05T09:00:00.0 | 2025-11-05T09:00:00.0 2025-11-11T09:00:00.0 |
| 2025-11-04T09:00:00.0 | ed | 2197.73 | 2197.73 | 2197.73 | ACERO DE REFUERZO Fy=4200 kg/cm2 | 1.3.1.1.3.5.3 | AS_SOON_AS_POSSIBLE |  | 500 | 28800 | 28800 | 2025-11-04T09:00:00.0 | 2025-11-05T09:00:00.0 | 2026-01-19T09:00:00.0 | 2026-01-20T09:00:00.0 | 2 días | 94 |  | 2025-09-16T11:36:00.0 | 1.3.1.1.3.5.3 |  | PRORATED | True | True | cfaeeb58-1b93-f011-adcc-c0bfbe9ea20f | True | PRORATED | 28800 | 2025-11-05T09:00:00.0 | 2025-11-04T09:00:00.0 | True | 2025-11-05T09:00:00.0 | True | 2197.73 | 94 |  | 7 | 91 | 69 94 93 FS | 02.01.03.05.03 | 2188800 | 2197.73 |  | 2188800 | 70 84 94 FS | 2188800 | 2025-11-04T09:00:00.0 | 2025-11-04T09:00:00.0 2025-11-05T09:00:00.0 |
| 2025-11-12T09:00:00.0 | ed | 132.64 | 132.64 | 132.64 | CURADO DE CONCRETO | 1.3.1.1.3.5.4 | AS_SOON_AS_POSSIBLE |  | 500 | 28800 | 28800 | 2025-11-12T09:00:00.0 | 2025-11-13T09:00:00.0 | 2026-01-27T09:00:00.0 | 2026-01-28T09:00:00.0 | 2 días | 95 |  | 2025-09-16T11:36:00.0 | 1.3.1.1.3.5.4 |  | PRORATED | True | True | d1aeeb58-1b93-f011-adcc-c0bfbe9ea20f | True | PRORATED | 28800 | 2025-11-13T09:00:00.0 | 2025-11-12T09:00:00.0 | True | 2025-11-13T09:00:00.0 | True | 132.64 | 95 |  | 7 | 91 |  | 02.01.03.05.04 | 2188800 | 132.64 | 2188800 | 2188800 | 71 92 95 FS | 2188800 | 2025-11-12T09:00:00.0 | 2025-11-12T09:00:00.0 2025-11-13T09:00:00.0 |
| 2025-11-15T09:00:00.0 | ed | 14341.89 | 14341.89 | 14341.89 | LOSA ALIGERADA | 1.3.1.1.3.6 | AS_SOON_AS_POSSIBLE |  | 500 | 345600 | 345600 | 2025-11-15T09:00:00.0 | 2025-11-27T09:00:00.0 | 2025-12-06T09:00:00.0 | 2025-12-18T09:00:00.0 | 13 días | 96 | True | 2025-09-16T11:36:00.0 | 1.3.1.1.3.6 | FIXED_DURATION | PRORATED | True | True | d3aeeb58-1b93-f011-adcc-c0bfbe9ea20f | True | PRORATED | 345600 | 2025-11-27T09:00:00.0 | 2025-11-15T09:00:00.0 | True | 2025-11-27T09:00:00.0 | True | 14341.89 | 96 | True | 6 | 71 |  | 02.01.03.06 | 604800 |  | 604800 | 604800 |  | 604800 |  |  |
| 2025-11-25T09:00:00.0 | ed | 1999.18 | 1999.18 | 1999.18 | CONCRETO F´C 210 KG/CM2 - LOSA ALIGERADA | 1.3.1.1.3.6.1 | AS_SOON_AS_POSSIBLE |  | 500 | 28800 | 28800 | 2025-11-25T09:00:00.0 | 2025-11-26T09:00:00.0 | 2025-12-29T09:00:00.0 | 2025-12-30T09:00:00.0 | 2 días | 97 |  | 2025-09-16T11:36:00.0 | 1.3.1.1.3.6.1 |  | PRORATED | True | True | d5aeeb58-1b93-f011-adcc-c0bfbe9ea20f | True | PRORATED | 28800 | 2025-11-26T09:00:00.0 | 2025-11-25T09:00:00.0 | True | 2025-11-26T09:00:00.0 | True | 1999.18 | 97 |  | 7 | 96 | 64 97 87 SS, 76 97 101 FS, 77 97 103 SS, 124 97 176 FS | 02.01.03.06.01 | 979200 | 1999.18 |  | 979200 | 72 99 97 FS | 979200 | 2025-11-25T09:00:00.0 | 2025-11-25T09:00:00.0 2025-11-26T09:00:00.0 |
| 2025-11-15T09:00:00.0 | ed | 6880.44 | 6880.44 | 6880.44 | ENCOFRADO Y DESENCOFRADO DE LOSA ALIGERADA | 1.3.1.1.3.6.2 | AS_SOON_AS_POSSIBLE |  | 500 | 172800 | 172800 | 2025-11-15T09:00:00.0 | 2025-11-21T09:00:00.0 | 2025-12-17T09:00:00.0 | 2025-12-23T09:00:00.0 | 7 días | 98 |  | 2025-09-16T11:36:00.0 | 1.3.1.1.3.6.2 |  | PRORATED | True | True | d7aeeb58-1b93-f011-adcc-c0bfbe9ea20f | True | PRORATED | 172800 | 2025-11-21T09:00:00.0 | 2025-11-15T09:00:00.0 | True | 2025-11-21T09:00:00.0 | True | 6880.44 | 98 |  | 7 | 96 | 75 98 100 FS, 79 98 104 57600 SS | 02.01.03.06.02 | 921600 | 6880.44 |  | 921600 | 73 88 98 FS | 921600 | 2025-11-15T09:00:00.0 | 2025-11-15T09:00:00.0 2025-11-21T09:00:00.0 |
| 2025-11-22T09:00:00.0 | ed | 2672.8 | 2672.8 | 2672.8 | ACERO DE REFUERZO Fy=4200 kg/cm2 | 1.3.1.1.3.6.3 | AS_SOON_AS_POSSIBLE |  | 500 | 86400 | 86400 | 2025-11-22T09:00:00.0 | 2025-11-25T09:00:00.0 | 2025-12-26T09:00:00.0 | 2025-12-29T09:00:00.0 | 4 días | 99 |  | 2025-09-16T11:36:00.0 | 1.3.1.1.3.6.3 |  | PRORATED | True | True | d9aeeb58-1b93-f011-adcc-c0bfbe9ea20f | True | PRORATED | 86400 | 2025-11-25T09:00:00.0 | 2025-11-22T09:00:00.0 | True | 2025-11-25T09:00:00.0 | True | 2672.8 | 99 |  | 7 | 96 | 72 99 97 FS, 80 99 105 28800 SS, 84 99 110 FS, 91 99 118 FS | 02.01.03.06.03 | 979200 | 2672.8 |  | 979200 | 78 100 99 FS | 979200 | 2025-11-22T09:00:00.0 | 2025-11-22T09:00:00.0 2025-11-25T09:00:00.0 |
| 2025-11-21T09:00:00.0 | ed | 2589.84 | 2589.84 | 2589.84 | LADRILLO DE TECHO | 1.3.1.1.3.6.4 | AS_SOON_AS_POSSIBLE |  | 500 | 28800 | 28800 | 2025-11-21T09:00:00.0 | 2025-11-22T09:00:00.0 | 2025-12-23T09:00:00.0 | 2025-12-24T09:00:00.0 | 2 días | 100 |  | 2025-09-16T11:36:00.0 | 1.3.1.1.3.6.4 |  | PRORATED | True | True | dbaeeb58-1b93-f011-adcc-c0bfbe9ea20f | True | PRORATED | 28800 | 2025-11-22T09:00:00.0 | 2025-11-21T09:00:00.0 | True | 2025-11-22T09:00:00.0 | True | 2589.84 | 100 |  | 7 | 96 | 78 100 99 FS | 02.01.03.06.04 | 921600 | 2589.84 |  | 921600 | 75 98 100 FS | 921600 | 2025-11-21T09:00:00.0 | 2025-11-21T09:00:00.0 2025-11-22T09:00:00.0 |
| 2025-11-26T09:00:00.0 | ed | 199.63 | 199.63 | 199.63 | CURADO DE CONCRETO | 1.3.1.1.3.6.5 | AS_SOON_AS_POSSIBLE |  | 500 | 28800 | 28800 | 2025-11-26T09:00:00.0 | 2025-11-27T09:00:00.0 | 2025-12-31T09:00:00.0 | 2026-01-01T09:00:00.0 | 2 días | 101 |  | 2025-09-16T11:36:00.0 | 1.3.1.1.3.6.5 |  | PRORATED | True | True | ddaeeb58-1b93-f011-adcc-c0bfbe9ea20f | True | PRORATED | 28800 | 2025-11-27T09:00:00.0 | 2025-11-26T09:00:00.0 | True | 2025-11-27T09:00:00.0 | True | 199.63 | 101 |  | 7 | 96 | 83 101 109 FS | 02.01.03.06.05 | 1008000 | 199.63 |  | 1008000 | 76 97 101 FS | 1008000 | 2025-11-26T09:00:00.0 | 2025-11-26T09:00:00.0 2025-11-27T09:00:00.0 |
| 2025-11-17T09:00:00.0 | ed | 5003.5 | 5003.5 | 5003.5 | LOSA MACIZA | 1.3.1.1.3.7 | AS_SOON_AS_POSSIBLE |  | 500 | 288000 | 288000 | 2025-11-17T09:00:00.0 | 2025-11-27T09:00:00.0 | 2026-01-26T09:00:00.0 | 2026-01-28T09:00:00.0 | 11 días | 102 | True | 2025-09-16T11:36:00.0 | 1.3.1.1.3.7 | FIXED_DURATION | PRORATED | True | True | dfaeeb58-1b93-f011-adcc-c0bfbe9ea20f | True | PRORATED | 288000 | 2025-11-27T09:00:00.0 | 2025-11-17T09:00:00.0 | True | 2025-11-27T09:00:00.0 | True | 5003.5 | 102 | True | 6 | 71 |  | 02.01.03.07 | 1785600 |  | 1785600 | 1785600 |  | 2016000 |  |  |
| 2025-11-25T09:00:00.0 | ed | 1422.33 | 1422.33 | 1422.33 | CONCRETO F´C 210 KG/CM2 - LOSA MACIZA | 1.3.1.1.3.7.1 | AS_SOON_AS_POSSIBLE |  | 500 | 28800 | 28800 | 2025-11-25T09:00:00.0 | 2025-11-26T09:00:00.0 | 2026-01-26T09:00:00.0 | 2026-01-27T09:00:00.0 | 2 días | 103 |  | 2025-09-16T11:36:00.0 | 1.3.1.1.3.7.1 |  | PRORATED | True | True | e1aeeb58-1b93-f011-adcc-c0bfbe9ea20f | True | PRORATED | 28800 | 2025-11-26T09:00:00.0 | 2025-11-25T09:00:00.0 | True | 2025-11-26T09:00:00.0 | True | 1422.33 | 103 |  | 7 | 102 | 81 103 106 FS | 02.01.03.07.01 | 1785600 | 1422.33 |  | 1785600 | 77 97 103 SS | 1785600 | 2025-11-25T09:00:00.0 | 2025-11-25T09:00:00.0 2025-11-26T09:00:00.0 |
| 2025-11-17T09:00:00.0 | ed | 1080.49 | 1080.49 | 1080.49 | ENCOFRADO Y DESENCOFRADO DE LOSA MACIZA | 1.3.1.1.3.7.2 | AS_SOON_AS_POSSIBLE |  | 500 | 57600 | 57600 | 2025-11-17T09:00:00.0 | 2025-11-19T09:00:00.0 | 2026-01-26T09:00:00.0 | 2026-01-28T09:00:00.0 | 3 días | 104 |  | 2025-09-16T11:36:00.0 | 1.3.1.1.3.7.2 |  | PRORATED | True | True | e3aeeb58-1b93-f011-adcc-c0bfbe9ea20f | True | PRORATED | 57600 | 2025-11-19T09:00:00.0 | 2025-11-17T09:00:00.0 | True | 2025-11-19T09:00:00.0 | True | 1080.49 | 104 |  | 7 | 102 |  | 02.01.03.07.02 | 2016000 | 1080.49 | 2016000 | 2016000 | 79 98 104 57600 SS | 2016000 | 2025-11-17T09:00:00.0 | 2025-11-17T09:00:00.0 2025-11-19T09:00:00.0 |
| 2025-11-23T09:00:00.0 | ed | 2466.51 | 2466.51 | 2466.51 | ACERO DE REFUERZO Fy=4200 kg/cm2 | 1.3.1.1.3.7.3 | AS_SOON_AS_POSSIBLE |  | 500 | 28800 | 28800 | 2025-11-23T09:00:00.0 | 2025-11-24T09:00:00.0 | 2026-01-27T09:00:00.0 | 2026-01-28T09:00:00.0 | 2 días | 105 |  | 2025-09-16T11:36:00.0 | 1.3.1.1.3.7.3 |  | PRORATED | True | True | e5aeeb58-1b93-f011-adcc-c0bfbe9ea20f | True | PRORATED | 28800 | 2025-11-24T09:00:00.0 | 2025-11-23T09:00:00.0 | True | 2025-11-24T09:00:00.0 | True | 2466.51 | 105 |  | 7 | 102 |  | 02.01.03.07.03 | 1872000 | 2466.51 | 1872000 | 1872000 | 80 99 105 28800 SS | 1872000 | 2025-11-23T09:00:00.0 | 2025-11-23T09:00:00.0 2025-11-24T09:00:00.0 |
| 2025-11-26T09:00:00.0 | ed | 34.17 | 34.17 | 34.17 | CURADO DE CONCRETO | 1.3.1.1.3.7.4 | AS_SOON_AS_POSSIBLE |  | 500 | 28800 | 28800 | 2025-11-26T09:00:00.0 | 2025-11-27T09:00:00.0 | 2026-01-27T09:00:00.0 | 2026-01-28T09:00:00.0 | 2 días | 106 |  | 2025-09-16T11:36:00.0 | 1.3.1.1.3.7.4 |  | PRORATED | True | True | e7aeeb58-1b93-f011-adcc-c0bfbe9ea20f | True | PRORATED | 28800 | 2025-11-27T09:00:00.0 | 2025-11-26T09:00:00.0 | True | 2025-11-27T09:00:00.0 | True | 34.17 | 106 |  | 7 | 102 |  | 02.01.03.07.04 | 1785600 | 34.17 | 1785600 | 1785600 | 81 103 106 FS | 1785600 | 2025-11-26T09:00:00.0 | 2025-11-26T09:00:00.0 2025-11-27T09:00:00.0 |
| 2025-11-25T09:00:00.0 | ed | 38476.15 | 38476.15 | 38476.15 | CISTERNA | 1.3.1.1.3.8 | AS_SOON_AS_POSSIBLE |  | 500 | 518400 | 518400 | 2025-11-25T09:00:00.0 | 2025-12-13T09:00:00.0 | 2025-12-18T09:00:00.0 | 2026-01-28T09:00:00.0 | 19 días | 107 | True | 2025-09-16T11:36:00.0 | 1.3.1.1.3.8 | FIXED_DURATION | PRORATED | True | True | e9aeeb58-1b93-f011-adcc-c0bfbe9ea20f | True | PRORATED | 518400 | 2025-12-13T09:00:00.0 | 2025-11-25T09:00:00.0 | True | 2025-12-13T09:00:00.0 | True | 38476.15 | 107 | True | 6 | 71 |  | 02.01.03.08 | 1324800 |  | 662400 | 662400 |  | 662400 |  |  |
| 2025-12-09T09:00:00.0 | ed | 9776.4 | 9776.4 | 9776.4 | CONCRETO F´C 210 KG/CM2 - CISTERNA | 1.3.1.1.3.8.1 | AS_SOON_AS_POSSIBLE |  | 500 | 57600 | 57600 | 2025-12-09T09:00:00.0 | 2025-12-11T09:00:00.0 | 2026-01-13T09:00:00.0 | 2026-01-15T09:00:00.0 | 3 días | 108 |  | 2025-09-16T11:37:00.0 | 1.3.1.1.3.8.1 |  | PRORATED | True | True | ebaeeb58-1b93-f011-adcc-c0bfbe9ea20f | True | PRORATED | 57600 | 2025-12-11T09:00:00.0 | 2025-12-09T09:00:00.0 | True | 2025-12-11T09:00:00.0 | True | 9776.4 | 108 |  | 7 | 107 | 85 108 111 FS, 136 108 190 FS | 02.01.03.08.01 | 1008000 | 9776.4 |  | 1008000 | 82 109 108 FS | 1008000 | 2025-12-09T09:00:00.0 | 2025-12-09T09:00:00.0 2025-12-11T09:00:00.0 |
| 2025-11-27T09:00:00.0 | ed | 13152.15 | 13152.15 | 13152.15 | ENCOFRADO Y DESENCOFRADO DE CISTERNA | 1.3.1.1.3.8.2 | AS_SOON_AS_POSSIBLE |  | 500 | 345600 | 345600 | 2025-11-27T09:00:00.0 | 2025-12-09T09:00:00.0 | 2026-01-01T09:00:00.0 | 2026-01-13T09:00:00.0 | 13 días | 109 |  | 2025-09-16T11:37:00.0 | 1.3.1.1.3.8.2 |  | PRORATED | True | True | edaeeb58-1b93-f011-adcc-c0bfbe9ea20f | True | PRORATED | 345600 | 2025-12-09T09:00:00.0 | 2025-11-27T09:00:00.0 | True | 2025-12-09T09:00:00.0 | True | 13152.15 | 109 |  | 7 | 107 | 82 109 108 FS | 02.01.03.08.02 | 1008000 | 13152.15 |  | 1008000 | 83 101 109 FS | 1008000 | 2025-11-27T09:00:00.0 | 2025-11-27T09:00:00.0 2025-12-09T09:00:00.0 |
| 2025-11-25T09:00:00.0 | ed | 15225.54 | 15225.54 | 15225.54 | ACERO DE REFUERZO Fy=4200 kg/cm2 | 1.3.1.1.3.8.3 | AS_SOON_AS_POSSIBLE |  | 500 | 201600 | 201600 | 2025-11-25T09:00:00.0 | 2025-12-02T09:00:00.0 | 2026-01-08T09:00:00.0 | 2026-01-15T09:00:00.0 | 8 días | 110 |  | 2025-09-16T11:37:00.0 | 1.3.1.1.3.8.3 |  | PRORATED | True | True | efaeeb58-1b93-f011-adcc-c0bfbe9ea20f | True | PRORATED | 201600 | 2025-12-02T09:00:00.0 | 2025-11-25T09:00:00.0 | True | 2025-12-02T09:00:00.0 | True | 15225.54 | 110 |  | 7 | 107 | 88 110 115 FS | 02.01.03.08.03 | 1267200 | 15225.54 |  | 1267200 | 84 99 110 FS | 1267200 | 2025-11-25T09:00:00.0 | 2025-11-25T09:00:00.0 2025-12-02T09:00:00.0 |
| 2025-12-11T09:00:00.0 | ed | 322.06 | 322.06 | 322.06 | CURADO DE CONCRETO | 1.3.1.1.3.8.4 | AS_SOON_AS_POSSIBLE |  | 500 | 57600 | 57600 | 2025-12-11T09:00:00.0 | 2025-12-13T09:00:00.0 | 2026-01-26T09:00:00.0 | 2026-01-28T09:00:00.0 | 3 días | 111 |  | 2025-09-16T11:37:00.0 | 1.3.1.1.3.8.4 |  | PRORATED | True | True | f1aeeb58-1b93-f011-adcc-c0bfbe9ea20f | True | PRORATED | 57600 | 2025-12-13T09:00:00.0 | 2025-12-11T09:00:00.0 | True | 2025-12-13T09:00:00.0 | True | 322.06 | 111 |  | 7 | 107 |  | 02.01.03.08.04 | 1324800 | 322.06 | 1324800 | 1324800 | 85 108 111 FS | 1324800 | 2025-12-11T09:00:00.0 | 2025-12-11T09:00:00.0 2025-12-13T09:00:00.0 |
| 2025-12-02T09:00:00.0 | ed | 6969.85 | 6969.85 | 6969.85 | TRAMPA DE GRASA | 1.3.1.1.3.9 | AS_SOON_AS_POSSIBLE |  | 500 | 316800 | 316800 | 2025-12-02T09:00:00.0 | 2025-12-13T09:00:00.0 | 2026-01-15T09:00:00.0 | 2026-01-26T09:00:00.0 | 12 días | 112 | True | 2025-09-16T11:37:00.0 | 1.3.1.1.3.9 | FIXED_DURATION | PRORATED | True | True | f3aeeb58-1b93-f011-adcc-c0bfbe9ea20f | True | PRORATED | 316800 | 2025-12-13T09:00:00.0 | 2025-12-02T09:00:00.0 | True | 2025-12-13T09:00:00.0 | True | 6969.85 | 112 | True | 6 | 71 |  | 02.01.03.09 | 1267200 |  | 1267200 | 1267200 |  | 1267200 |  |  |
| 2025-12-11T09:00:00.0 | ed | 1776.49 | 1776.49 | 1776.49 | CONCRETO F´C 210 KG/CM2 - TRAMPA DE GRASA | 1.3.1.1.3.9.1 | AS_SOON_AS_POSSIBLE |  | 500 | 28800 | 28800 | 2025-12-11T09:00:00.0 | 2025-12-12T09:00:00.0 | 2026-01-24T09:00:00.0 | 2026-01-25T09:00:00.0 | 2 días | 113 |  | 2025-09-16T11:37:00.0 | 1.3.1.1.3.9.1 |  | PRORATED | True | True | f5aeeb58-1b93-f011-adcc-c0bfbe9ea20f | True | PRORATED | 28800 | 2025-12-12T09:00:00.0 | 2025-12-11T09:00:00.0 | True | 2025-12-12T09:00:00.0 | True | 1776.49 | 113 |  | 7 | 112 | 90 113 116 FS | 02.01.03.09.01 | 1267200 | 1776.49 |  | 1267200 | 86 114 113 FS | 1267200 | 2025-12-11T09:00:00.0 | 2025-12-11T09:00:00.0 2025-12-12T09:00:00.0 |
| 2025-12-06T09:00:00.0 | ed | 3095.08 | 3095.08 | 3095.08 | ENCOFRADO Y DESENCOFRADO DE TRAMPA DE GRASA | 1.3.1.1.3.9.2 | AS_SOON_AS_POSSIBLE |  | 500 | 144000 | 144000 | 2025-12-06T09:00:00.0 | 2025-12-11T09:00:00.0 | 2026-01-19T09:00:00.0 | 2026-01-24T09:00:00.0 | 6 días | 114 |  | 2025-09-16T11:37:00.0 | 1.3.1.1.3.9.2 |  | PRORATED | True | True | f7aeeb58-1b93-f011-adcc-c0bfbe9ea20f | True | PRORATED | 144000 | 2025-12-11T09:00:00.0 | 2025-12-06T09:00:00.0 | True | 2025-12-11T09:00:00.0 | True | 3095.08 | 114 |  | 7 | 112 | 86 114 113 FS | 02.01.03.09.02 | 1267200 | 3095.08 |  | 1267200 | 87 115 114 FS | 1267200 | 2025-12-06T09:00:00.0 | 2025-12-06T09:00:00.0 2025-12-11T09:00:00.0 |
| 2025-12-02T09:00:00.0 | ed | 2022.49 | 2022.49 | 2022.49 | ACERO DE REFUERZO Fy=4200 kg/cm2 | 1.3.1.1.3.9.3 | AS_SOON_AS_POSSIBLE |  | 500 | 115200 | 115200 | 2025-12-02T09:00:00.0 | 2025-12-06T09:00:00.0 | 2026-01-15T09:00:00.0 | 2026-01-19T09:00:00.0 | 5 días | 115 |  | 2025-09-16T11:37:00.0 | 1.3.1.1.3.9.3 |  | PRORATED | True | True | f9aeeb58-1b93-f011-adcc-c0bfbe9ea20f | True | PRORATED | 115200 | 2025-12-06T09:00:00.0 | 2025-12-02T09:00:00.0 | True | 2025-12-06T09:00:00.0 | True | 2022.49 | 115 |  | 7 | 112 | 87 115 114 FS | 02.01.03.09.03 | 1267200 | 2022.49 |  | 1267200 | 88 110 115 FS | 1267200 | 2025-12-02T09:00:00.0 | 2025-12-02T09:00:00.0 2025-12-06T09:00:00.0 |
| 2025-12-12T09:00:00.0 | ed | 75.79 | 75.79 | 75.79 | CURADO DE CONCRETO | 1.3.1.1.3.9.4 | AS_SOON_AS_POSSIBLE |  | 500 | 28800 | 28800 | 2025-12-12T09:00:00.0 | 2025-12-13T09:00:00.0 | 2026-01-25T09:00:00.0 | 2026-01-26T09:00:00.0 | 2 días | 116 |  | 2025-09-16T11:37:00.0 | 1.3.1.1.3.9.4 |  | PRORATED | True | True | fbaeeb58-1b93-f011-adcc-c0bfbe9ea20f | True | PRORATED | 28800 | 2025-12-13T09:00:00.0 | 2025-12-12T09:00:00.0 | True | 2025-12-13T09:00:00.0 | True | 75.79 | 116 |  | 7 | 112 | 137 116 191 FS | 02.01.03.09.04 | 1267200 | 75.79 |  | 1267200 | 90 113 116 FS | 1267200 | 2025-12-12T09:00:00.0 | 2025-12-12T09:00:00.0 2025-12-13T09:00:00.0 |
| 2025-11-25T09:00:00.0 | ed | 554.4 | 554.4 | 554.4 | VARIOS | 1.3.1.1.4 | AS_SOON_AS_POSSIBLE |  | 500 | 57600 | 57600 | 2025-11-25T09:00:00.0 | 2025-11-27T09:00:00.0 | 2026-01-26T09:00:00.0 | 2026-01-28T09:00:00.0 | 3 días | 117 | True | 2025-09-16T11:37:00.0 | 1.3.1.1.4 | FIXED_DURATION | PRORATED | True | True | fdaeeb58-1b93-f011-adcc-c0bfbe9ea20f | True | PRORATED | 57600 | 2025-11-27T09:00:00.0 | 2025-11-25T09:00:00.0 | True | 2025-11-27T09:00:00.0 | True | 554.4 | 117 | True | 5 | 55 |  | 02.01.04 | 1785600 |  | 1785600 | 1785600 |  | 1785600 |  |  |
| 2025-11-25T09:00:00.0 | ed | 554.4 | 554.4 | 554.4 | JUNTA DE DILATACION CON TECKNOPORT DE 1" e=2.5cm CON MATERIAL SELLANTE | 1.3.1.1.4.1 | AS_SOON_AS_POSSIBLE |  | 500 | 57600 | 57600 | 2025-11-25T09:00:00.0 | 2025-11-27T09:00:00.0 | 2026-01-26T09:00:00.0 | 2026-01-28T09:00:00.0 | 3 días | 118 |  | 2025-09-16T11:37:00.0 | 1.3.1.1.4.1 |  | PRORATED | True | True | ffaeeb58-1b93-f011-adcc-c0bfbe9ea20f | True | PRORATED | 57600 | 2025-11-27T09:00:00.0 | 2025-11-25T09:00:00.0 | True | 2025-11-27T09:00:00.0 | True | 554.4 | 118 |  | 6 | 117 |  | 02.01.04.01 | 1785600 | 554.4 | 1785600 | 1785600 | 91 99 118 FS | 1785600 | 2025-11-25T09:00:00.0 | 2025-11-25T09:00:00.0 2025-11-27T09:00:00.0 |
| 2025-10-13T09:00:00.0 | ed | 27071.17 | 27071.17 | 27071.17 | VELATORIO | 1.3.1.2 | AS_SOON_AS_POSSIBLE |  | 500 | 1440000 | 1440000 | 2025-10-13T09:00:00.0 | 2025-12-02T09:00:00.0 | 2025-11-19T09:00:00.0 | 2026-01-28T09:00:00.0 | 51 días | 119 | True | 2025-09-16T11:37:00.0 | 1.3.1.2 | FIXED_DURATION | PRORATED | True | True | 01afeb58-1b93-f011-adcc-c0bfbe9ea20f | True | PRORATED | 1440000 | 2025-12-02T09:00:00.0 | 2025-10-13T09:00:00.0 | True | 2025-12-02T09:00:00.0 | True | 27071.17 | 119 | True | 4 | 54 |  | 02.02 | 1641600 |  | 1065600 | 1065600 |  | 1065600 |  |  |
| 2025-10-22T09:00:00.0 | ed | 28.76 | 28.76 | 28.76 | NIVELACION DE TERRENO | 1.3.1.2.1 | AS_SOON_AS_POSSIBLE |  | 500 | 57600 | 57600 | 2025-10-22T09:00:00.0 | 2025-10-24T09:00:00.0 | 2025-11-28T09:00:00.0 | 2025-11-30T09:00:00.0 | 3 días | 120 | True | 2025-09-16T11:37:00.0 | 1.3.1.2.1 | FIXED_DURATION | PRORATED | True | True | 03afeb58-1b93-f011-adcc-c0bfbe9ea20f | True | PRORATED | 57600 | 2025-10-24T09:00:00.0 | 2025-10-22T09:00:00.0 | True | 2025-10-24T09:00:00.0 | True | 28.76 | 120 | True | 5 | 119 |  | 02.02.01 | 1065600 |  | 1065600 | 1065600 |  | 1065600 |  |  |
| 2025-10-22T09:00:00.0 | ed | 28.76 | 28.76 | 28.76 | NIVELACION MANUAL DEL TERRENO | 1.3.1.2.1.1 | AS_SOON_AS_POSSIBLE |  | 500 | 57600 | 57600 | 2025-10-22T09:00:00.0 | 2025-10-24T09:00:00.0 | 2025-11-28T09:00:00.0 | 2025-11-30T09:00:00.0 | 3 días | 121 |  | 2025-09-16T11:37:00.0 | 1.3.1.2.1.1 |  | PRORATED | True | True | 05afeb58-1b93-f011-adcc-c0bfbe9ea20f | True | PRORATED | 57600 | 2025-10-24T09:00:00.0 | 2025-10-22T09:00:00.0 | True | 2025-10-24T09:00:00.0 | True | 28.76 | 121 |  | 6 | 120 | 94 121 125 FS, 461 121 282 FS | 02.02.01.01 | 1065600 | 28.76 |  | 1065600 | 92 130 121 FS | 1065600 | 2025-10-22T09:00:00.0 | 2025-10-22T09:00:00.0 2025-10-24T09:00:00.0 |
| 2025-10-13T09:00:00.0 | ed | 150.13 | 150.13 | 150.13 | EXCAVACIONES SIMPLES | 1.3.1.2.2 | AS_SOON_AS_POSSIBLE |  | 500 | 86400 | 86400 | 2025-10-13T09:00:00.0 | 2025-10-16T09:00:00.0 | 2025-11-19T09:00:00.0 | 2025-11-22T09:00:00.0 | 4 días | 122 | True | 2025-09-16T11:37:00.0 | 1.3.1.2.2 | FIXED_DURATION | PRORATED | True | True | 07afeb58-1b93-f011-adcc-c0bfbe9ea20f | True | PRORATED | 86400 | 2025-10-16T09:00:00.0 | 2025-10-13T09:00:00.0 | True | 2025-10-16T09:00:00.0 | True | 150.13 | 122 | True | 5 | 119 |  | 02.02.02 | 1065600 |  | 1065600 | 1065600 |  | 1065600 |  |  |
| 2025-10-13T09:00:00.0 | ed | 150.13 | 150.13 | 150.13 | EXCAVACION DE CIMENTACION | 1.3.1.2.2.1 | AS_SOON_AS_POSSIBLE |  | 500 | 86400 | 86400 | 2025-10-13T09:00:00.0 | 2025-10-16T09:00:00.0 | 2025-11-19T09:00:00.0 | 2025-11-22T09:00:00.0 | 4 días | 123 |  | 2025-09-16T11:37:00.0 | 1.3.1.2.2.1 |  | PRORATED | True | True | 09afeb58-1b93-f011-adcc-c0bfbe9ea20f | True | PRORATED | 86400 | 2025-10-16T09:00:00.0 | 2025-10-13T09:00:00.0 | True | 2025-10-16T09:00:00.0 | True | 150.13 | 123 |  | 6 | 122 | 95 123 128 FS | 02.02.02.01 | 1065600 | 150.13 |  | 1065600 | 93 29 123 FS | 1065600 | 2025-10-13T09:00:00.0 | 2025-10-13T09:00:00.0 2025-10-16T09:00:00.0 |
| 2025-10-24T09:00:00.0 | ed | 23.19 | 23.19 | 23.19 | ELIMINACION DE MATERIAL EXCEDENTE | 1.3.1.2.3 | AS_SOON_AS_POSSIBLE |  | 500 | 57600 | 57600 | 2025-10-24T09:00:00.0 | 2025-10-26T09:00:00.0 | 2026-01-26T09:00:00.0 | 2026-01-28T09:00:00.0 | 3 días | 124 | True | 2025-09-16T11:37:00.0 | 1.3.1.2.3 | FIXED_DURATION | PRORATED | True | True | 0bafeb58-1b93-f011-adcc-c0bfbe9ea20f | True | PRORATED | 57600 | 2025-10-26T09:00:00.0 | 2025-10-24T09:00:00.0 | True | 2025-10-26T09:00:00.0 | True | 23.19 | 124 | True | 5 | 119 |  | 02.02.03 | 2707200 |  | 2707200 | 2707200 |  | 2707200 |  |  |
| 2025-10-24T09:00:00.0 | ed | 23.19 | 23.19 | 23.19 | ELIMINACION MATERIAL EXCEDENTE | 1.3.1.2.3.1 | AS_SOON_AS_POSSIBLE |  | 500 | 57600 | 57600 | 2025-10-24T09:00:00.0 | 2025-10-26T09:00:00.0 | 2026-01-26T09:00:00.0 | 2026-01-28T09:00:00.0 | 3 días | 125 |  | 2025-09-16T11:37:00.0 | 1.3.1.2.3.1 |  | PRORATED | True | True | 0dafeb58-1b93-f011-adcc-c0bfbe9ea20f | True | PRORATED | 57600 | 2025-10-26T09:00:00.0 | 2025-10-24T09:00:00.0 | True | 2025-10-26T09:00:00.0 | True | 23.19 | 125 |  | 6 | 124 |  | 02.02.03.01 | 2707200 | 23.19 | 2707200 | 2707200 | 94 121 125 FS | 2707200 | 2025-10-24T09:00:00.0 | 2025-10-24T09:00:00.0 2025-10-26T09:00:00.0 |
| 2025-10-16T09:00:00.0 | ed | 3623.18 | 3623.18 | 3623.18 | OBRAS DE CONCRETO | 1.3.1.2.4 | AS_SOON_AS_POSSIBLE |  | 500 | 172800 | 172800 | 2025-10-16T09:00:00.0 | 2025-10-22T09:00:00.0 | 2025-11-22T09:00:00.0 | 2025-11-28T09:00:00.0 | 7 días | 126 | True | 2025-09-16T11:37:00.0 | 1.3.1.2.4 | FIXED_DURATION | PRORATED | True | True | 0fafeb58-1b93-f011-adcc-c0bfbe9ea20f | True | PRORATED | 172800 | 2025-10-22T09:00:00.0 | 2025-10-16T09:00:00.0 | True | 2025-10-22T09:00:00.0 | True | 3623.18 | 126 | True | 5 | 119 |  | 02.02.04 | 1065600 |  | 1065600 | 1065600 |  | 1065600 |  |  |
| 2025-10-16T09:00:00.0 | ed | 3623.18 | 3623.18 | 3623.18 | CIMIENTOS CORRIDOS | 1.3.1.2.4.1 | AS_SOON_AS_POSSIBLE |  | 500 | 172800 | 172800 | 2025-10-16T09:00:00.0 | 2025-10-22T09:00:00.0 | 2025-11-22T09:00:00.0 | 2025-11-28T09:00:00.0 | 7 días | 127 | True | 2025-09-16T11:37:00.0 | 1.3.1.2.4.1 | FIXED_DURATION | PRORATED | True | True | 11afeb58-1b93-f011-adcc-c0bfbe9ea20f | True | PRORATED | 172800 | 2025-10-22T09:00:00.0 | 2025-10-16T09:00:00.0 | True | 2025-10-22T09:00:00.0 | True | 3623.18 | 127 | True | 6 | 126 |  | 02.02.04.01 | 1065600 |  | 1065600 | 1065600 |  | 1065600 |  |  |
| 2025-10-16T09:00:00.0 | ed | 1559.63 | 1559.63 | 1559.63 | CONCRETO PARA CIMIENTO CORRIDO | 1.3.1.2.4.1.1 | AS_SOON_AS_POSSIBLE |  | 500 | 57600 | 57600 | 2025-10-16T09:00:00.0 | 2025-10-18T09:00:00.0 | 2025-11-22T09:00:00.0 | 2025-11-24T09:00:00.0 | 3 días | 128 |  | 2025-09-16T11:37:00.0 | 1.3.1.2.4.1.1 |  | PRORATED | True | True | 13afeb58-1b93-f011-adcc-c0bfbe9ea20f | True | PRORATED | 57600 | 2025-10-18T09:00:00.0 | 2025-10-16T09:00:00.0 | True | 2025-10-18T09:00:00.0 | True | 1559.63 | 128 |  | 7 | 127 | 97 128 131 FS | 02.02.04.01.01 | 1065600 | 1559.63 |  | 1065600 | 95 123 128 FS | 1065600 | 2025-10-16T09:00:00.0 | 2025-10-16T09:00:00.0 2025-10-18T09:00:00.0 |
| 2025-10-18T09:00:00.0 | ed | 2063.55 | 2063.55 | 2063.55 | SOBRECIMIENTOS | 1.3.1.2.4.1.2 | AS_SOON_AS_POSSIBLE |  | 500 | 115200 | 115200 | 2025-10-18T09:00:00.0 | 2025-10-22T09:00:00.0 | 2025-11-24T09:00:00.0 | 2025-11-28T09:00:00.0 | 5 días | 129 | True | 2025-09-16T11:37:00.0 | 1.3.1.2.4.1.2 | FIXED_DURATION | PRORATED | True | True | 15afeb58-1b93-f011-adcc-c0bfbe9ea20f | True | PRORATED | 115200 | 2025-10-22T09:00:00.0 | 2025-10-18T09:00:00.0 | True | 2025-10-22T09:00:00.0 | True | 2063.55 | 129 | True | 7 | 127 |  | 02.02.04.01.02 | 1065600 |  | 1065600 | 1065600 |  | 1065600 |  |  |
| 2025-10-21T09:00:00.0 | ed | 673.24 | 673.24 | 673.24 | CONCRETO | 1.3.1.2.4.1.2.1 | AS_SOON_AS_POSSIBLE |  | 500 | 28800 | 28800 | 2025-10-21T09:00:00.0 | 2025-10-22T09:00:00.0 | 2025-11-27T09:00:00.0 | 2025-11-28T09:00:00.0 | 2 días | 130 |  | 2025-09-16T11:37:00.0 | 1.3.1.2.4.1.2.1 |  | PRORATED | True | True | 17afeb58-1b93-f011-adcc-c0bfbe9ea20f | True | PRORATED | 28800 | 2025-10-22T09:00:00.0 | 2025-10-21T09:00:00.0 | True | 2025-10-22T09:00:00.0 | True | 673.24 | 130 |  | 8 | 129 | 92 130 121 FS | 02.02.04.01.02.01 | 1065600 | 673.24 |  | 1065600 | 96 131 130 FS | 1065600 | 2025-10-21T09:00:00.0 | 2025-10-21T09:00:00.0 2025-10-22T09:00:00.0 |
| 2025-10-18T09:00:00.0 | ed | 1390.31 | 1390.31 | 1390.31 | ENCOFRADO | 1.3.1.2.4.1.2.2 | AS_SOON_AS_POSSIBLE |  | 500 | 86400 | 86400 | 2025-10-18T09:00:00.0 | 2025-10-21T09:00:00.0 | 2025-11-24T09:00:00.0 | 2025-11-27T09:00:00.0 | 4 días | 131 |  | 2025-09-16T11:37:00.0 | 1.3.1.2.4.1.2.2 |  | PRORATED | True | True | 19afeb58-1b93-f011-adcc-c0bfbe9ea20f | True | PRORATED | 86400 | 2025-10-21T09:00:00.0 | 2025-10-18T09:00:00.0 | True | 2025-10-21T09:00:00.0 | True | 1390.31 | 131 |  | 8 | 129 | 96 131 130 FS, 347 131 442 SS, 415 131 533 SS, 481 131 544 SS | 02.02.04.01.02.02 | 1065600 | 1390.31 |  | 1065600 | 97 128 131 FS | 1065600 | 2025-10-18T09:00:00.0 | 2025-10-18T09:00:00.0 2025-10-21T09:00:00.0 |
| 2025-11-01T09:00:00.0 | ed | 9724.89 | 9724.89 | 9724.89 | OBRAS DE CONCRETO ARMADO | 1.3.1.2.5 | AS_SOON_AS_POSSIBLE |  | 500 | 374400 | 374400 | 2025-11-01T09:00:00.0 | 2025-11-14T09:00:00.0 | 2025-12-08T09:00:00.0 | 2026-01-28T09:00:00.0 | 14 días | 132 | True | 2025-09-16T11:37:00.0 | 1.3.1.2.5 | FIXED_DURATION | PRORATED | True | True | 1bafeb58-1b93-f011-adcc-c0bfbe9ea20f | True | PRORATED | 374400 | 2025-11-14T09:00:00.0 | 2025-11-01T09:00:00.0 | True | 2025-11-14T09:00:00.0 | True | 9724.89 | 132 | True | 5 | 119 |  | 02.02.05 | 2160000 |  | 1065600 | 1065600 |  | 1065600 |  |  |
| 2025-11-01T09:00:00.0 | ed | 9724.89 | 9724.89 | 9724.89 | LOSA MACIZA TECHO DE KITCHENETTE | 1.3.1.2.5.1 | AS_SOON_AS_POSSIBLE |  | 500 | 374400 | 374400 | 2025-11-01T09:00:00.0 | 2025-11-14T09:00:00.0 | 2025-12-08T09:00:00.0 | 2026-01-28T09:00:00.0 | 14 días | 133 | True | 2025-09-16T11:37:00.0 | 1.3.1.2.5.1 | FIXED_DURATION | PRORATED | True | True | 1dafeb58-1b93-f011-adcc-c0bfbe9ea20f | True | PRORATED | 374400 | 2025-11-14T09:00:00.0 | 2025-11-01T09:00:00.0 | True | 2025-11-14T09:00:00.0 | True | 9724.89 | 133 | True | 6 | 132 |  | 02.02.05.01 | 2160000 |  | 1065600 | 1065600 |  | 1065600 |  |  |
| 2025-11-05T09:00:00.0 | ed | 2266.53 | 2266.53 | 2266.53 | CONCRETO | 1.3.1.2.5.1.1 | AS_SOON_AS_POSSIBLE |  | 500 | 28800 | 28800 | 2025-11-05T09:00:00.0 | 2025-11-06T09:00:00.0 | 2025-12-12T09:00:00.0 | 2025-12-13T09:00:00.0 | 2 días | 134 |  | 2025-09-16T11:37:00.0 | 1.3.1.2.5.1.1 |  | PRORATED | True | True | 1fafeb58-1b93-f011-adcc-c0bfbe9ea20f | True | PRORATED | 28800 | 2025-11-06T09:00:00.0 | 2025-11-05T09:00:00.0 | True | 2025-11-06T09:00:00.0 | True | 2266.53 | 134 |  | 7 | 133 | 215 134 284 FS, 221 134 291 FS | 02.02.05.01.01 | 1065600 | 2266.53 |  | 1065600 | 98 136 134 FS | 1065600 | 2025-11-05T09:00:00.0 | 2025-11-05T09:00:00.0 2025-11-06T09:00:00.0 |
| 2025-11-01T09:00:00.0 | ed | 4102.17 | 4102.17 | 4102.17 | ENCOFRADO | 1.3.1.2.5.1.2 | AS_SOON_AS_POSSIBLE |  | 500 | 57600 | 57600 | 2025-11-01T09:00:00.0 | 2025-11-03T09:00:00.0 | 2025-12-08T09:00:00.0 | 2025-12-10T09:00:00.0 | 3 días | 135 |  | 2025-09-16T11:37:00.0 | 1.3.1.2.5.1.2 |  | PRORATED | True | True | 21afeb58-1b93-f011-adcc-c0bfbe9ea20f | True | PRORATED | 57600 | 2025-11-03T09:00:00.0 | 2025-11-01T09:00:00.0 | True | 2025-11-03T09:00:00.0 | True | 4102.17 | 135 |  | 7 | 133 | 100 135 136 FS | 02.02.05.01.02 | 1065600 | 4102.17 |  | 1065600 | 99 282 135 FS | 1065600 | 2025-11-01T09:00:00.0 | 2025-11-01T09:00:00.0 2025-11-03T09:00:00.0 |
| 2025-11-03T09:00:00.0 | ed | 1905.5 | 1905.5 | 1905.5 | ACERO | 1.3.1.2.5.1.3 | AS_SOON_AS_POSSIBLE |  | 500 | 57600 | 57600 | 2025-11-03T09:00:00.0 | 2025-11-05T09:00:00.0 | 2025-12-10T09:00:00.0 | 2025-12-12T09:00:00.0 | 3 días | 136 |  | 2025-09-16T11:37:00.0 | 1.3.1.2.5.1.3 |  | PRORATED | True | True | 23afeb58-1b93-f011-adcc-c0bfbe9ea20f | True | PRORATED | 57600 | 2025-11-05T09:00:00.0 | 2025-11-03T09:00:00.0 | True | 2025-11-05T09:00:00.0 | True | 1905.5 | 136 |  | 7 | 133 | 98 136 134 FS | 02.02.05.01.03 | 1065600 | 1905.5 |  | 1065600 | 100 135 136 FS | 1065600 | 2025-11-03T09:00:00.0 | 2025-11-03T09:00:00.0 2025-11-05T09:00:00.0 |
| 2025-11-12T09:00:00.0 | ed | 1450.69 | 1450.69 | 1450.69 | MESA PARA KITCHENETE | 1.3.1.2.5.1.4 | AS_SOON_AS_POSSIBLE |  | 500 | 57600 | 57600 | 2025-11-12T09:00:00.0 | 2025-11-14T09:00:00.0 | 2026-01-26T09:00:00.0 | 2026-01-28T09:00:00.0 | 3 días | 137 | True | 2025-09-16T11:37:00.0 | 1.3.1.2.5.1.4 | FIXED_DURATION | PRORATED | True | True | 25afeb58-1b93-f011-adcc-c0bfbe9ea20f | True | PRORATED | 57600 | 2025-11-14T09:00:00.0 | 2025-11-12T09:00:00.0 | True | 2025-11-14T09:00:00.0 | True | 1450.69 | 137 | True | 7 | 133 |  | 02.02.05.01.04 | 2160000 |  | 2160000 | 2160000 |  | 2160000 |  |  |
| 2025-11-12T09:00:00.0 | ed | 1450.69 | 1450.69 | 1450.69 | MESA DE CONCRETO PARA KITCHENETTE ACABADO DE CEMENTO PULIDO | 1.3.1.2.5.1.4.1 | AS_SOON_AS_POSSIBLE |  | 500 | 57600 | 57600 | 2025-11-12T09:00:00.0 | 2025-11-14T09:00:00.0 | 2026-01-26T09:00:00.0 | 2026-01-28T09:00:00.0 | 3 días | 138 |  | 2025-09-16T11:37:00.0 | 1.3.1.2.5.1.4.1 |  | PRORATED | True | True | 27afeb58-1b93-f011-adcc-c0bfbe9ea20f | True | PRORATED | 57600 | 2025-11-14T09:00:00.0 | 2025-11-12T09:00:00.0 | True | 2025-11-14T09:00:00.0 | True | 1450.69 | 138 |  | 8 | 137 |  | 02.02.05.01.04.01 | 2160000 | 1450.69 | 2160000 | 2160000 | 101 285 138 FS | 2160000 | 2025-11-12T09:00:00.0 | 2025-11-12T09:00:00.0 2025-11-14T09:00:00.0 |
| 2025-11-26T09:00:00.0 | ed | 13521.02 | 13521.02 | 13521.02 | ESTRUCTURA DE ALUMINIO TACTO MADERA | 1.3.1.2.6 | AS_SOON_AS_POSSIBLE |  | 500 | 172800 | 172800 | 2025-11-26T09:00:00.0 | 2025-12-02T09:00:00.0 | 2026-01-24T09:00:00.0 | 2026-01-28T09:00:00.0 | 7 días | 139 | True | 2025-09-16T11:37:00.0 | 1.3.1.2.6 | FIXED_DURATION | PRORATED | True | True | 3938e85e-1b93-f011-adcc-c0bfbe9ea20f | True | PRORATED | 172800 | 2025-12-02T09:00:00.0 | 2025-11-26T09:00:00.0 | True | 2025-12-02T09:00:00.0 | True | 13521.02 | 139 | True | 5 | 119 |  | 02.02.06 | 1641600 |  | 1641600 | 1641600 |  | 1699200 |  |  |

| start | leveling_delay_units | cost | cost_variance | remaining_cost | name | wbs | constraint_type | critical | priority | duration | remaining_duration | early_start | early_finish | late_start | late_finish | text2 | unique_id | summary | created | outline_number | type | fixed_cost_accrual | leveling_can_split | level_assignments | guid | active | baseline_fixed_cost_accrual | scheduled_duration | scheduled_finish | scheduled_start | recalc_outline_codes | finish | auto_compute_actuals | remaining_regular_cost | id | rollup | outline_level | parent_task_unique_id | successors | text1 | finish_slack | fixed_cost | free_slack | total_slack | predecessors | start_slack | summary_progress | work_splits |
| --- | --- | --- | --- | --- | --- | --- | --- | --- | --- | --- | --- | --- | --- | --- | --- | --- | --- | --- | --- | --- | --- | --- | --- | --- | --- | --- | --- | --- | --- | --- | --- | --- | --- | --- | --- | --- | --- | --- | --- | --- | --- | --- | --- | --- | --- | --- | --- | --- |
| 2025-11-26T09:00:00.0 | ed | 6403.11 | 6403.11 | 6403.11 | LISTONES PARA DIVISION DE AMBIENTE H=3.20M , CON BASE DE CONCRETO H=0.10M | 1.3.1.2.6.1 | AS_SOON_AS_POSSIBLE |  | 500 | 115200 | 115200 | 2025-11-26T09:00:00.0 | 2025-11-30T09:00:00.0 | 2026-01-24T09:00:00.0 | 2026-01-28T09:00:00.0 | 5 días | 140 |  | 2025-09-16T11:37:00.0 | 1.3.1.2.6.1 |  | PRORATED | True | True | 3b38e85e-1b93-f011-adcc-c0bfbe9ea20f | True | PRORATED | 115200 | 2025-11-30T09:00:00.0 | 2025-11-26T09:00:00.0 | True | 2025-11-30T09:00:00.0 | True | 6403.11 | 140 |  | 6 | 139 |  | 02.02.06.01 | 1699200 | 6403.11 | 1699200 | 1699200 | 102 323 140 FS | 1699200 | 2025-11-26T09:00:00.0 | 2025-11-26T09:00:00.0 2025-11-30T09:00:00.0 |
| 2025-11-30T09:00:00.0 | ed | 7117.91 | 7117.91 | 7117.91 | SOL Y SOMBRA | 1.3.1.2.6.2 | AS_SOON_AS_POSSIBLE |  | 500 | 57600 | 57600 | 2025-11-30T09:00:00.0 | 2025-12-02T09:00:00.0 | 2026-01-26T09:00:00.0 | 2026-01-28T09:00:00.0 | 3 días | 141 |  | 2025-09-16T11:37:00.0 | 1.3.1.2.6.2 |  | PRORATED | True | True | 3d38e85e-1b93-f011-adcc-c0bfbe9ea20f | True | PRORATED | 57600 | 2025-12-02T09:00:00.0 | 2025-11-30T09:00:00.0 | True | 2025-12-02T09:00:00.0 | True | 7117.91 | 141 |  | 6 | 139 |  | 02.02.06.02 | 1641600 | 7117.91 | 1641600 | 1641600 | 103 324 141 FS | 1641600 | 2025-11-30T09:00:00.0 | 2025-11-30T09:00:00.0 2025-12-02T09:00:00.0 |
| 2025-10-05T09:00:00.0 | ed | 140823.11 | 140823.11 | 140823.11 | COLUMBARIO | 1.3.1.3 | AS_SOON_AS_POSSIBLE | True | 500 | 2188800 | 2188800 | 2025-10-05T09:00:00.0 | 2025-12-20T09:00:00.0 | 2025-10-05T09:00:00.0 | 2026-01-28T09:00:00.0 | 77 días | 142 | True | 2025-09-16T11:37:00.0 | 1.3.1.3 | FIXED_DURATION | PRORATED | True | True | 3f38e85e-1b93-f011-adcc-c0bfbe9ea20f | True | PRORATED | 2188800 | 2025-12-20T09:00:00.0 | 2025-10-05T09:00:00.0 | True | 2025-12-20T09:00:00.0 | True | 140823.11 | 142 | True | 4 | 54 |  | 02.03 | 1123200 |  |  |  |  |  |  |  |
| 2025-10-05T09:00:00.0 | ed | 9477.41 | 9477.41 | 9477.41 | MOVIMIENTO DE TIERRAS | 1.3.1.3.1 | AS_SOON_AS_POSSIBLE | True | 500 | 1497600 | 1497600 | 2025-10-05T09:00:00.0 | 2025-11-26T09:00:00.0 | 2025-10-05T09:00:00.0 | 2026-01-28T09:00:00.0 | 53 días | 143 | True | 2025-09-16T11:37:00.0 | 1.3.1.3.1 | FIXED_DURATION | PRORATED | True | True | 4138e85e-1b93-f011-adcc-c0bfbe9ea20f | True | PRORATED | 1497600 | 2025-11-26T09:00:00.0 | 2025-10-05T09:00:00.0 | True | 2025-11-26T09:00:00.0 | True | 9477.41 | 143 | True | 5 | 142 |  | 02.03.01 | 1814400 |  |  |  |  |  |  |  |
| 2025-10-05T09:00:00.0 | ed | 4124.9 | 4124.9 | 4124.9 | EXCAVACIONES SIMPLES | 1.3.1.3.1.1 | AS_SOON_AS_POSSIBLE | True | 500 | 489600 | 489600 | 2025-10-05T09:00:00.0 | 2025-10-22T09:00:00.0 | 2025-10-05T09:00:00.0 | 2025-10-22T09:00:00.0 | 18 días | 144 | True | 2025-09-16T11:37:00.0 | 1.3.1.3.1.1 | FIXED_DURATION | PRORATED | True | True | 4338e85e-1b93-f011-adcc-c0bfbe9ea20f | True | PRORATED | 489600 | 2025-10-22T09:00:00.0 | 2025-10-05T09:00:00.0 | True | 2025-10-22T09:00:00.0 | True | 4124.9 | 144 | True | 6 | 143 |  | 02.03.01.01 |  |  |  |  |  |  |  |  |
| 2025-10-05T09:00:00.0 | ed | 4124.9 | 4124.9 | 4124.9 | EXCAVACIONES SIMPLES PARA PLATEA DE CIMENTACION | 1.3.1.3.1.1.1 | AS_SOON_AS_POSSIBLE | True | 500 | 489600 | 489600 | 2025-10-05T09:00:00.0 | 2025-10-22T09:00:00.0 | 2025-10-05T09:00:00.0 | 2025-10-22T09:00:00.0 | 18 días | 145 |  | 2025-09-16T11:37:00.0 | 1.3.1.3.1.1.1 |  | PRORATED | True | True | 4538e85e-1b93-f011-adcc-c0bfbe9ea20f | True | PRORATED | 489600 | 2025-10-22T09:00:00.0 | 2025-10-05T09:00:00.0 | True | 2025-10-22T09:00:00.0 | True | 4124.9 | 145 |  | 7 | 144 | 106 145 149 57600 FS, 110 145 151 57600 FS, 256 145 340 FF, 418 145 167 SS | 02.03.01.01.01 |  | 4124.9 |  |  | 104 51 145 FS |  | 2025-10-05T09:00:00.0 | 2025-10-05T09:00:00.0 2025-10-22T09:00:00.0 |
| 2025-11-24T09:00:00.0 | ed | 1580.35 | 1580.35 | 1580.35 | RELLENOS CON MATERIAL DE PRESTAMO | 1.3.1.3.1.2 | AS_SOON_AS_POSSIBLE |  | 500 | 57600 | 57600 | 2025-11-24T09:00:00.0 | 2025-11-26T09:00:00.0 | 2026-01-20T09:00:00.0 | 2026-01-22T09:00:00.0 | 3 días | 146 | True | 2025-09-16T11:37:00.0 | 1.3.1.3.1.2 | FIXED_DURATION | PRORATED | True | True | 4738e85e-1b93-f011-adcc-c0bfbe9ea20f | True | PRORATED | 57600 | 2025-11-26T09:00:00.0 | 2025-11-24T09:00:00.0 | True | 2025-11-26T09:00:00.0 | True | 1580.35 | 146 | True | 6 | 143 |  | 02.03.01.02 | 1641600 |  | 1641600 | 1641600 |  | 1641600 |  |  |
| 2025-11-24T09:00:00.0 | ed | 1580.35 | 1580.35 | 1580.35 | RELLENO PARA PLATEA DE CIMENTACION | 1.3.1.3.1.2.1 | AS_SOON_AS_POSSIBLE |  | 500 | 57600 | 57600 | 2025-11-24T09:00:00.0 | 2025-11-26T09:00:00.0 | 2026-01-20T09:00:00.0 | 2026-01-22T09:00:00.0 | 3 días | 147 |  | 2025-09-16T11:37:00.0 | 1.3.1.3.1.2.1 |  | PRORATED | True | True | 4938e85e-1b93-f011-adcc-c0bfbe9ea20f | True | PRORATED | 57600 | 2025-11-26T09:00:00.0 | 2025-11-24T09:00:00.0 | True | 2025-11-26T09:00:00.0 | True | 1580.35 | 147 |  | 7 | 146 | 112 147 153 FS, 257 147 341 FF | 02.03.01.02.01 | 1641600 | 1580.35 |  | 1641600 | 105 159 147 -288000 FS | 1641600 | 2025-11-24T09:00:00.0 | 2025-11-24T09:00:00.0 2025-11-26T09:00:00.0 |
| 2025-10-24T09:00:00.0 | ed | 3772.16 | 3772.16 | 3772.16 | ELIMINACION DE MATERIAL EXCEDENTE | 1.3.1.3.1.3 | AS_SOON_AS_POSSIBLE |  | 500 | 28800 | 28800 | 2025-10-24T09:00:00.0 | 2025-10-25T09:00:00.0 | 2026-01-27T09:00:00.0 | 2026-01-28T09:00:00.0 | 2 días | 148 | True | 2025-09-16T11:37:00.0 | 1.3.1.3.1.3 | FIXED_DURATION | PRORATED | True | True | 4b38e85e-1b93-f011-adcc-c0bfbe9ea20f | True | PRORATED | 28800 | 2025-10-25T09:00:00.0 | 2025-10-24T09:00:00.0 | True | 2025-10-25T09:00:00.0 | True | 3772.16 | 148 | True | 6 | 143 |  | 02.03.01.03 | 2736000 |  | 2736000 | 2736000 |  | 2736000 |  |  |
| 2025-10-24T09:00:00.0 | ed | 3772.16 | 3772.16 | 3772.16 | ELIMINACION MATERIAL EXCEDENTE C/VOLQ. 15M3 D=10KM | 1.3.1.3.1.3.1 | AS_SOON_AS_POSSIBLE |  | 500 | 28800 | 28800 | 2025-10-24T09:00:00.0 | 2025-10-25T09:00:00.0 | 2026-01-27T09:00:00.0 | 2026-01-28T09:00:00.0 | 2 días | 149 |  | 2025-09-16T11:37:00.0 | 1.3.1.3.1.3.1 |  | PRORATED | True | True | 4d38e85e-1b93-f011-adcc-c0bfbe9ea20f | True | PRORATED | 28800 | 2025-10-25T09:00:00.0 | 2025-10-24T09:00:00.0 | True | 2025-10-25T09:00:00.0 | True | 3772.16 | 149 |  | 7 | 148 |  | 02.03.01.03.01 | 2736000 | 3772.16 | 2736000 | 2736000 | 106 145 149 57600 FS | 2736000 | 2025-10-24T09:00:00.0 | 2025-10-24T09:00:00.0 2025-10-25T09:00:00.0 |
| 2025-10-24T09:00:00.0 | ed | 5046.1 | 5046.1 | 5046.1 | OBRAS DE CONCRETO SIMPLE | 1.3.1.3.2 | AS_SOON_AS_POSSIBLE | True | 500 | 1123200 | 1123200 | 2025-10-24T09:00:00.0 | 2025-12-02T09:00:00.0 | 2025-10-24T09:00:00.0 | 2026-01-28T09:00:00.0 | 40 días | 150 | True | 2025-09-16T11:37:00.0 | 1.3.1.3.2 | FIXED_DURATION | PRORATED | True | True | 4f38e85e-1b93-f011-adcc-c0bfbe9ea20f | True | PRORATED | 1123200 | 2025-12-02T09:00:00.0 | 2025-10-24T09:00:00.0 | True | 2025-12-02T09:00:00.0 | True | 5046.1 | 150 | True | 5 | 142 |  | 02.03.02 | 1641600 |  |  |  |  |  |  |  |
| 2025-10-24T09:00:00.0 | ed | 2161.74 | 2161.74 | 2161.74 | SOLADO C:H 1:10 , e=5cm | 1.3.1.3.2.1 | AS_SOON_AS_POSSIBLE | True | 500 | 28800 | 28800 | 2025-10-24T09:00:00.0 | 2025-10-25T09:00:00.0 | 2025-10-24T09:00:00.0 | 2025-10-25T09:00:00.0 | 2 días | 151 |  | 2025-09-16T11:37:00.0 | 1.3.1.3.2.1 |  | PRORATED | True | True | 5138e85e-1b93-f011-adcc-c0bfbe9ea20f | True | PRORATED | 28800 | 2025-10-25T09:00:00.0 | 2025-10-24T09:00:00.0 | True | 2025-10-25T09:00:00.0 | True | 2161.74 | 151 |  | 6 | 150 | 114 151 157 FS | 02.03.02.01 |  | 2161.74 |  |  | 110 145 151 57600 FS |  | 2025-10-24T09:00:00.0 | 2025-10-24T09:00:00.0 2025-10-25T09:00:00.0 |
| 2025-11-29T09:00:00.0 | ed | 2085.76 | 2085.76 | 2085.76 | SOBRECIMIENTO C:H 1:6 +25% P.M | 1.3.1.3.2.2 | AS_SOON_AS_POSSIBLE |  | 500 | 86400 | 86400 | 2025-11-29T09:00:00.0 | 2025-12-02T09:00:00.0 | 2026-01-25T09:00:00.0 | 2026-01-28T09:00:00.0 | 4 días | 152 |  | 2025-09-16T11:37:00.0 | 1.3.1.3.2.2 |  | PRORATED | True | True | 5338e85e-1b93-f011-adcc-c0bfbe9ea20f | True | PRORATED | 86400 | 2025-12-02T09:00:00.0 | 2025-11-29T09:00:00.0 | True | 2025-12-02T09:00:00.0 | True | 2085.76 | 152 |  | 6 | 150 |  | 02.03.02.02 | 1641600 | 2085.76 | 1641600 | 1641600 | 111 153 152 FS | 1641600 | 2025-11-29T09:00:00.0 | 2025-11-29T09:00:00.0 2025-12-02T09:00:00.0 |
| 2025-11-26T09:00:00.0 | ed | 798.6 | 798.6 | 798.6 | ENCOFRADOS Y DESENCOFRADOS NORMAL DE SOBRECIMIENTOS | 1.3.1.3.2.3 | AS_SOON_AS_POSSIBLE |  | 500 | 86400 | 86400 | 2025-11-26T09:00:00.0 | 2025-11-29T09:00:00.0 | 2026-01-22T09:00:00.0 | 2026-01-25T09:00:00.0 | 4 días | 153 |  | 2025-09-16T11:37:00.0 | 1.3.1.3.2.3 |  | PRORATED | True | True | 5538e85e-1b93-f011-adcc-c0bfbe9ea20f | True | PRORATED | 86400 | 2025-11-29T09:00:00.0 | 2025-11-26T09:00:00.0 | True | 2025-11-29T09:00:00.0 | True | 798.6 | 153 |  | 6 | 150 | 111 153 152 FS | 02.03.02.03 | 1641600 | 798.6 |  | 1641600 | 112 147 153 FS | 1641600 | 2025-11-26T09:00:00.0 | 2025-11-26T09:00:00.0 2025-11-29T09:00:00.0 |
| 2025-10-25T09:00:00.0 | ed | 126299.6 | 126299.6 | 126299.6 | OBRAS DE CONCRETO ARMADO | 1.3.1.3.3 | AS_SOON_AS_POSSIBLE | True | 500 | 1612800 | 1612800 | 2025-10-25T09:00:00.0 | 2025-12-20T09:00:00.0 | 2025-10-25T09:00:00.0 | 2026-01-28T09:00:00.0 | 57 días | 154 | True | 2025-09-16T11:37:00.0 | 1.3.1.3.3 | FIXED_DURATION | PRORATED | True | True | 5738e85e-1b93-f011-adcc-c0bfbe9ea20f | True | PRORATED | 1612800 | 2025-12-20T09:00:00.0 | 2025-10-25T09:00:00.0 | True | 2025-12-20T09:00:00.0 | True | 126299.6 | 154 | True | 5 | 142 |  | 02.03.03 | 1123200 |  |  |  |  |  |  |  |
| 2025-10-25T09:00:00.0 | ed | 17316.57 | 17316.57 | 17316.57 | PLATEA DE CIMENTACION | 1.3.1.3.3.1 | AS_SOON_AS_POSSIBLE | True | 500 | 172800 | 172800 | 2025-10-25T09:00:00.0 | 2025-10-31T09:00:00.0 | 2025-10-25T09:00:00.0 | 2025-10-31T09:00:00.0 | 7 días | 155 | True | 2025-09-16T11:37:00.0 | 1.3.1.3.3.1 | FIXED_DURATION | PRORATED | True | True | 5938e85e-1b93-f011-adcc-c0bfbe9ea20f | True | PRORATED | 172800 | 2025-10-31T09:00:00.0 | 2025-10-25T09:00:00.0 | True | 2025-10-31T09:00:00.0 | True | 17316.57 | 155 | True | 6 | 154 |  | 02.03.03.01 |  |  |  |  |  |  |  |  |
| 2025-10-30T09:00:00.0 | ed | 10073.19 | 10073.19 | 10073.19 | CONCRETO F´C 210 KG/CM2 CIMIENTO ARMADO | 1.3.1.3.3.1.1 | AS_SOON_AS_POSSIBLE | True | 500 | 28800 | 28800 | 2025-10-30T09:00:00.0 | 2025-10-31T09:00:00.0 | 2025-10-30T09:00:00.0 | 2025-10-31T09:00:00.0 | 2 días | 156 |  | 2025-09-16T11:37:00.0 | 1.3.1.3.3.1.1 |  | PRORATED | True | True | 5b38e85e-1b93-f011-adcc-c0bfbe9ea20f | True | PRORATED | 28800 | 2025-10-31T09:00:00.0 | 2025-10-30T09:00:00.0 | True | 2025-10-31T09:00:00.0 | True | 10073.19 | 156 |  | 7 | 155 | 116 156 160 FS | 02.03.03.01.01 |  | 10073.19 |  |  | 113 157 156 FS |  | 2025-10-30T09:00:00.0 | 2025-10-30T09:00:00.0 2025-10-31T09:00:00.0 |
| 2025-10-25T09:00:00.0 | ed | 7243.38 | 7243.38 | 7243.38 | ACERO CORRUGADO FY=4200KG/CM2 GRADO 60 | 1.3.1.3.3.1.2 | AS_SOON_AS_POSSIBLE | True | 500 | 144000 | 144000 | 2025-10-25T09:00:00.0 | 2025-10-30T09:00:00.0 | 2025-10-25T09:00:00.0 | 2025-10-30T09:00:00.0 | 6 días | 157 |  | 2025-09-16T11:37:00.0 | 1.3.1.3.3.1.2 |  | PRORATED | True | True | 5d38e85e-1b93-f011-adcc-c0bfbe9ea20f | True | PRORATED | 144000 | 2025-10-30T09:00:00.0 | 2025-10-25T09:00:00.0 | True | 2025-10-30T09:00:00.0 | True | 7243.38 | 157 |  | 7 | 155 | 113 157 156 FS, 117 157 161 -57600 FS | 02.03.03.01.02 |  | 7243.38 |  |  | 114 151 157 FS |  | 2025-10-25T09:00:00.0 | 2025-10-25T09:00:00.0 2025-10-30T09:00:00.0 |
| 2025-10-28T09:00:00.0 | ed | 58670.98 | 58670.98 | 58670.98 | PLACAS | 1.3.1.3.3.2 | AS_SOON_AS_POSSIBLE |  | 500 | 1065600 | 1065600 | 2025-10-28T09:00:00.0 | 2025-12-04T09:00:00.0 | 2025-10-31T09:00:00.0 | 2026-01-28T09:00:00.0 | 38 días | 158 | True | 2025-09-16T11:37:00.0 | 1.3.1.3.3.2 | FIXED_DURATION | PRORATED | True | True | 5f38e85e-1b93-f011-adcc-c0bfbe9ea20f | True | PRORATED | 1065600 | 2025-12-04T09:00:00.0 | 2025-10-28T09:00:00.0 | True | 2025-12-04T09:00:00.0 | True | 58670.98 | 158 | True | 6 | 154 |  | 02.03.03.02 | 1584000 |  | 86400 | 86400 |  | 86400 |  |  |
| 2025-11-15T09:00:00.0 | ed | 9913.37 | 9913.37 | 9913.37 | CONCRETO F´C 210 KG/CM2 PLACAS | 1.3.1.3.3.2.1 | AS_SOON_AS_POSSIBLE | True | 500 | 547200 | 547200 | 2025-11-15T09:00:00.0 | 2025-12-04T09:00:00.0 | 2025-11-15T09:00:00.0 | 2025-12-04T09:00:00.0 | 20 días | 159 |  | 2025-09-16T11:37:00.0 | 1.3.1.3.3.2.1 |  | PRORATED | True | True | 6138e85e-1b93-f011-adcc-c0bfbe9ea20f | True | PRORATED | 547200 | 2025-12-04T09:00:00.0 | 2025-11-15T09:00:00.0 | True | 2025-12-04T09:00:00.0 | True | 9913.37 | 159 |  | 7 | 158 | 105 159 147 -288000 FS, 120 159 165 FS | 02.03.03.02.01 |  | 9913.37 |  |  | 115 160 159 -115200 FS |  | 2025-11-15T09:00:00.0 | 2025-11-15T09:00:00.0 2025-12-04T09:00:00.0 |
| 2025-10-31T09:00:00.0 | ed | 37909.83 | 37909.83 | 37909.83 | ENCOFRADO Y DESENCOFRADO DE PLACAS | 1.3.1.3.3.2.2 | AS_SOON_AS_POSSIBLE | True | 500 | 547200 | 547200 | 2025-10-31T09:00:00.0 | 2025-11-19T09:00:00.0 | 2025-10-31T09:00:00.0 | 2025-11-19T09:00:00.0 | 20 días | 160 |  | 2025-09-16T11:37:00.0 | 1.3.1.3.3.2.2 |  | PRORATED | True | True | 6338e85e-1b93-f011-adcc-c0bfbe9ea20f | True | PRORATED | 547200 | 2025-11-19T09:00:00.0 | 2025-10-31T09:00:00.0 | True | 2025-11-19T09:00:00.0 | True | 37909.83 | 160 |  | 7 | 158 | 115 160 159 -115200 FS | 02.03.03.02.02 |  | 37909.83 |  |  | 116 156 160 FS |  | 2025-10-31T09:00:00.0 | 2025-10-31T09:00:00.0 2025-11-19T09:00:00.0 |
| 2025-10-28T09:00:00.0 | ed | 10847.78 | 10847.78 | 10847.78 | ACERO CORRUGADO FY=4200KG/CM2 GRADO 60 | 1.3.1.3.3.2.3 | AS_SOON_AS_POSSIBLE |  | 500 | 547200 | 547200 | 2025-10-28T09:00:00.0 | 2025-11-16T09:00:00.0 | 2026-01-09T09:00:00.0 | 2026-01-28T09:00:00.0 | 20 días | 161 |  | 2025-09-16T11:37:00.0 | 1.3.1.3.3.2.3 |  | PRORATED | True | True | 6538e85e-1b93-f011-adcc-c0bfbe9ea20f | True | PRORATED | 547200 | 2025-11-16T09:00:00.0 | 2025-10-28T09:00:00.0 | True | 2025-11-16T09:00:00.0 | True | 10847.78 | 161 |  | 7 | 158 |  | 02.03.03.02.03 | 2102400 | 10847.78 | 2102400 | 2102400 | 117 157 161 -57600 FS | 2102400 | 2025-10-28T09:00:00.0 | 2025-10-28T09:00:00.0 2025-11-16T09:00:00.0 |
| 2025-12-04T09:00:00.0 | ed | 50312.05 | 50312.05 | 50312.05 | LOSA MACIZA | 1.3.1.3.3.3 | AS_SOON_AS_POSSIBLE | True | 500 | 460800 | 460800 | 2025-12-04T09:00:00.0 | 2025-12-20T09:00:00.0 | 2025-12-04T09:00:00.0 | 2025-12-20T09:00:00.0 | 17 días | 162 | True | 2025-09-16T11:37:00.0 | 1.3.1.3.3.3 | FIXED_DURATION | PRORATED | True | True | 6738e85e-1b93-f011-adcc-c0bfbe9ea20f | True | PRORATED | 460800 | 2025-12-20T09:00:00.0 | 2025-12-04T09:00:00.0 | True | 2025-12-20T09:00:00.0 | True | 50312.05 | 162 | True | 6 | 154 |  | 02.03.03.03 |  |  |  |  |  |  |  |  |
| 2025-12-16T09:00:00.0 | ed | 17029.19 | 17029.19 | 17029.19 | CONCRETO F'C 210 KG/CM2 - LOSA MACIZA | 1.3.1.3.3.3.1 | AS_SOON_AS_POSSIBLE | True | 500 | 115200 | 115200 | 2025-12-16T09:00:00.0 | 2025-12-20T09:00:00.0 | 2025-12-16T09:00:00.0 | 2025-12-20T09:00:00.0 | 5 días | 163 |  | 2025-09-16T11:37:00.0 | 1.3.1.3.3.3.1 |  | PRORATED | True | True | 6938e85e-1b93-f011-adcc-c0bfbe9ea20f | True | PRORATED | 115200 | 2025-12-20T09:00:00.0 | 2025-12-16T09:00:00.0 | True | 2025-12-20T09:00:00.0 | True | 17029.19 | 163 |  | 7 | 162 | 269 163 355 -57600 FS | 02.03.03.03.01 |  | 17029.19 |  |  | 118 164 163 FS |  | 2025-12-16T09:00:00.0 | 2025-12-16T09:00:00.0 2025-12-20T09:00:00.0 |
| 2025-12-08T09:00:00.0 | ed | 23523.92 | 23523.92 | 23523.92 | ENCOFRADO Y DESENCOFRADO DE LOSA MACIZA | 1.3.1.3.3.3.2 | AS_SOON_AS_POSSIBLE | True | 500 | 230400 | 230400 | 2025-12-08T09:00:00.0 | 2025-12-16T09:00:00.0 | 2025-12-08T09:00:00.0 | 2025-12-16T09:00:00.0 | 9 días | 164 |  | 2025-09-16T11:37:00.0 | 1.3.1.3.3.3.2 |  | PRORATED | True | True | 6b38e85e-1b93-f011-adcc-c0bfbe9ea20f | True | PRORATED | 230400 | 2025-12-16T09:00:00.0 | 2025-12-08T09:00:00.0 | True | 2025-12-16T09:00:00.0 | True | 23523.92 | 164 |  | 7 | 162 | 118 164 163 FS | 02.03.03.03.02 |  | 23523.92 |  |  | 119 165 164 FS |  | 2025-12-08T09:00:00.0 | 2025-12-08T09:00:00.0 2025-12-16T09:00:00.0 |
| 2025-12-04T09:00:00.0 | ed | 9758.94 | 9758.94 | 9758.94 | ACERO CORRUGADO FY=4200KG/CM2 GRADO 60 | 1.3.1.3.3.3.3 | AS_SOON_AS_POSSIBLE | True | 500 | 115200 | 115200 | 2025-12-04T09:00:00.0 | 2025-12-08T09:00:00.0 | 2025-12-04T09:00:00.0 | 2025-12-08T09:00:00.0 | 5 días | 165 |  | 2025-09-16T11:37:00.0 | 1.3.1.3.3.3.3 |  | PRORATED | True | True | 6d38e85e-1b93-f011-adcc-c0bfbe9ea20f | True | PRORATED | 115200 | 2025-12-08T09:00:00.0 | 2025-12-04T09:00:00.0 | True | 2025-12-08T09:00:00.0 | True | 9758.94 | 165 |  | 7 | 162 | 119 165 164 FS | 02.03.03.03.03 |  | 9758.94 |  |  | 120 159 165 FS |  | 2025-12-04T09:00:00.0 | 2025-12-04T09:00:00.0 2025-12-08T09:00:00.0 |
| 2025-10-05T09:00:00.0 | ed | 398444.51 | 398444.51 | 398444.51 | SC SUMINISTRO E INSTALACION DE HORNO DE CREMACION Y ELEMENTO | 1.3.1.4 | AS_SOON_AS_POSSIBLE | True | 500 | 3312000 | 3312000 | 2025-10-05T09:00:00.0 | 2026-01-28T09:00:00.0 | 2025-10-05T09:00:00.0 | 2026-01-28T09:00:00.0 | 116 días | 166 | True | 2025-09-16T11:37:00.0 | 1.3.1.4 | FIXED_DURATION | PRORATED | True | True | 6f38e85e-1b93-f011-adcc-c0bfbe9ea20f | True | PRORATED | 3312000 | 2026-01-28T09:00:00.0 | 2025-10-05T09:00:00.0 | True | 2026-01-28T09:00:00.0 | True | 398444.51 | 166 | True | 4 | 54 |  | 02.04 |  |  |  |  |  |  |  |  |
| 2025-10-05T09:00:00.0 | ed | 398444.51 | 398444.51 | 398444.51 | SC SUMINISTRO E INSTALACION DE HORNO DE CREMACION Y ELEMENTOS | 1.3.1.4.1 | AS_SOON_AS_POSSIBLE | True | 500 | 3312000 | 3312000 | 2025-10-05T09:00:00.0 | 2026-01-28T09:00:00.0 | 2025-10-05T09:00:00.0 | 2026-01-28T09:00:00.0 | 116 días | 167 |  | 2025-09-16T11:37:00.0 | 1.3.1.4.1 |  | PRORATED | True | True | 7138e85e-1b93-f011-adcc-c0bfbe9ea20f | True | PRORATED | 3312000 | 2026-01-28T09:00:00.0 | 2025-10-05T09:00:00.0 | True | 2026-01-28T09:00:00.0 | True | 398444.51 | 167 |  | 5 | 166 | 465 167 250 -201600 FS | 02.04.01 |  | 398444.51 |  |  | 418 145 167 SS |  | 2025-10-05T09:00:00.0 | 2025-10-05T09:00:00.0 2026-01-28T09:00:00.0 |
| 2025-10-18T09:00:00.0 | ed | 347659.6 | 347659.6 | 347659.6 | ARQUITECTURAS | 1.4 | AS_SOON_AS_POSSIBLE | True | 500 | 2937600 | 2937600 | 2025-10-18T09:00:00.0 | 2026-01-28T09:00:00.0 | 2025-11-16T09:00:00.0 | 2026-01-28T09:00:00.0 | 103 días | 168 | True | 2025-09-16T11:37:00.0 | 1.4 | FIXED_DURATION | PRORATED | True | True | 7338e85e-1b93-f011-adcc-c0bfbe9ea20f | True | PRORATED | 2937600 | 2026-01-28T09:00:00.0 | 2025-10-18T09:00:00.0 | True | 2026-01-28T09:00:00.0 | True | 347659.6 | 168 | True | 2 | 1 |  |  |  |  |  |  |  | 835200 |  |  |
| 2025-10-18T09:00:00.0 | ed | 347659.6 | 347659.6 | 347659.6 | ARQUITECTURA , SEGURIDAD Y EVACUACION | 1.4.1 | AS_SOON_AS_POSSIBLE | True | 500 | 2937600 | 2937600 | 2025-10-18T09:00:00.0 | 2026-01-28T09:00:00.0 | 2025-11-16T09:00:00.0 | 2026-01-28T09:00:00.0 | 103 días | 169 | True | 2025-09-16T11:37:00.0 | 1.4.1 | FIXED_DURATION | PRORATED | True | True | 7538e85e-1b93-f011-adcc-c0bfbe9ea20f | True | PRORATED | 2937600 | 2026-01-28T09:00:00.0 | 2025-10-18T09:00:00.0 | True | 2026-01-28T09:00:00.0 | True | 347659.6 | 169 | True | 3 | 168 |  | 03 |  |  |  |  |  | 835200 |  |  |
| 2025-10-18T09:00:00.0 | ed | 347659.6 | 347659.6 | 347659.6 | ARQUITECTURA | 1.4.1.1 | AS_SOON_AS_POSSIBLE | True | 500 | 2937600 | 2937600 | 2025-10-18T09:00:00.0 | 2026-01-28T09:00:00.0 | 2025-11-16T09:00:00.0 | 2026-01-28T09:00:00.0 | 103 días | 170 | True | 2025-09-16T11:37:00.0 | 1.4.1.1 | FIXED_DURATION | PRORATED | True | True | 7738e85e-1b93-f011-adcc-c0bfbe9ea20f | True | PRORATED | 2937600 | 2026-01-28T09:00:00.0 | 2025-10-18T09:00:00.0 | True | 2026-01-28T09:00:00.0 | True | 347659.6 | 170 | True | 4 | 169 |  | 03.01 |  |  |  |  |  | 835200 |  |  |
| 2025-11-16T09:00:00.0 | ed | 236129.61 | 236129.61 | 236129.61 | CREMATORIO | 1.4.1.1.1 | AS_SOON_AS_POSSIBLE | True | 500 | 2102400 | 2102400 | 2025-11-16T09:00:00.0 | 2026-01-28T09:00:00.0 | 2025-11-16T09:00:00.0 | 2026-01-28T09:00:00.0 | 74 días | 171 | True | 2025-09-16T11:37:00.0 | 1.4.1.1.1 | FIXED_DURATION | PRORATED | True | True | 7938e85e-1b93-f011-adcc-c0bfbe9ea20f | True | PRORATED | 2102400 | 2026-01-28T09:00:00.0 | 2025-11-16T09:00:00.0 | True | 2026-01-28T09:00:00.0 | True | 236129.61 | 171 | True | 5 | 170 |  | 03.01.01 |  |  |  |  |  |  |  |  |
| 2025-11-16T09:00:00.0 | ed | 23726.67 | 23726.67 | 23726.67 | MUROS Y TABIQUES DE ALBALIÑERIA | 1.4.1.1.1.1 | AS_SOON_AS_POSSIBLE | True | 500 | 1929600 | 1929600 | 2025-11-16T09:00:00.0 | 2026-01-22T09:00:00.0 | 2025-11-16T09:00:00.0 | 2026-01-28T09:00:00.0 | 68 días | 172 | True | 2025-09-16T11:37:00.0 | 1.4.1.1.1.1 | FIXED_DURATION | PRORATED | True | True | 7b38e85e-1b93-f011-adcc-c0bfbe9ea20f | True | PRORATED | 1929600 | 2026-01-22T09:00:00.0 | 2025-11-16T09:00:00.0 | True | 2026-01-22T09:00:00.0 | True | 23726.67 | 172 | True | 6 | 171 |  | 03.01.01.01 | 172800 |  |  |  |  |  |  |  |
| 2025-11-16T09:00:00.0 | ed | 14813.33 | 14813.33 | 14813.33 | MUROS Y TABIQUES | 1.4.1.1.1.1.1 | AS_SOON_AS_POSSIBLE | True | 500 | 691200 | 691200 | 2025-11-16T09:00:00.0 | 2025-12-10T09:00:00.0 | 2025-11-16T09:00:00.0 | 2026-01-28T09:00:00.0 | 25 días | 173 | True | 2025-09-16T11:37:00.0 | 1.4.1.1.1.1.1 | FIXED_DURATION | PRORATED | True | True | 7d38e85e-1b93-f011-adcc-c0bfbe9ea20f | True | PRORATED | 691200 | 2025-12-10T09:00:00.0 | 2025-11-16T09:00:00.0 | True | 2025-12-10T09:00:00.0 | True | 14813.33 | 173 | True | 7 | 172 |  | 03.01.01.01.01 | 1411200 |  |  |  |  |  |  |  |
| 2025-11-16T09:00:00.0 | ed | 11621.72 | 11621.72 | 11621.72 | MURO LADRILLO K.K DE ARCILLA 18H DE SOGA DE MEZCLA C:A 1:4 X 1.5 cm | 1.4.1.1.1.1.1.1 | AS_SOON_AS_POSSIBLE | True | 500 | 691200 | 691200 | 2025-11-16T09:00:00.0 | 2025-12-10T09:00:00.0 | 2025-11-16T09:00:00.0 | 2025-12-10T09:00:00.0 | 25 días | 174 |  | 2025-09-16T11:37:00.0 | 1.4.1.1.1.1.1.1 |  | PRORATED | True | True | 7f38e85e-1b93-f011-adcc-c0bfbe9ea20f | True | PRORATED | 691200 | 2025-12-10T09:00:00.0 | 2025-11-16T09:00:00.0 | True | 2025-12-10T09:00:00.0 | True | 11621.72 | 174 |  | 8 | 173 | 123 174 175 FF, 142 174 197 FS | 03.01.01.01.01.01 |  | 11621.72 |  |  | 421 68 174 FS |  | 2025-11-16T09:00:00.0 | 2025-11-16T09:00:00.0 2025-12-10T09:00:00.0 |
| 2025-12-03T09:00:00.0 | ed | 1064.54 | 1064.54 | 1064.54 | MURO LADRILLO K.K DE ARCILLA 18H DE CABEZA MEZCLA C:A 1;4 X 1.5 cm | 1.4.1.1.1.1.1.2 | AS_SOON_AS_POSSIBLE |  | 500 | 201600 | 201600 | 2025-12-03T09:00:00.0 | 2025-12-10T09:00:00.0 | 2026-01-21T09:00:00.0 | 2026-01-28T09:00:00.0 | 8 días | 175 |  | 2025-09-16T11:37:00.0 | 1.4.1.1.1.1.1.2 |  | PRORATED | True | True | 8138e85e-1b93-f011-adcc-c0bfbe9ea20f | True | PRORATED | 201600 | 2025-12-10T09:00:00.0 | 2025-12-03T09:00:00.0 | True | 2025-12-10T09:00:00.0 | True | 1064.54 | 175 |  | 8 | 173 |  | 03.01.01.01.01.02 | 1411200 | 1064.54 | 1411200 | 1411200 | 123 174 175 FF | 1411200 |  | 2025-12-03T09:00:00.0 2025-12-10T09:00:00.0 |
| 2025-11-26T09:00:00.0 | ed | 2127.07 | 2127.07 | 2127.07 | PARAPETO DE LADRILLO K.K DE ARCILLA 18 H DE SOGA MEZCLA C:A 1:4 X 1.5CM | 1.4.1.1.1.1.1.3 | AS_SOON_AS_POSSIBLE |  | 500 | 288000 | 288000 | 2025-11-26T09:00:00.0 | 2025-12-06T09:00:00.0 | 2025-12-30T09:00:00.0 | 2026-01-09T09:00:00.0 | 11 días | 176 |  | 2025-09-16T11:37:00.0 | 1.4.1.1.1.1.1.3 |  | PRORATED | True | True | 8338e85e-1b93-f011-adcc-c0bfbe9ea20f | True | PRORATED | 288000 | 2025-12-06T09:00:00.0 | 2025-11-26T09:00:00.0 | True | 2025-12-06T09:00:00.0 | True | 2127.07 | 176 |  | 8 | 173 | 130 176 184 FS | 03.01.01.01.01.03 | 979200 | 2127.07 |  | 979200 | 124 97 176 FS | 979200 | 2025-11-26T09:00:00.0 | 2025-11-26T09:00:00.0 2025-12-06T09:00:00.0 |
| 2025-12-20T09:00:00.0 | ed | 8913.34 | 8913.34 | 8913.34 | TABIQUERIA SECA | 1.4.1.1.1.1.2 | AS_SOON_AS_POSSIBLE |  | 500 | 950400 | 950400 | 2025-12-20T09:00:00.0 | 2026-01-22T09:00:00.0 | 2026-01-10T09:00:00.0 | 2026-01-28T09:00:00.0 | 34 días | 177 | True | 2025-09-16T11:37:00.0 | 1.4.1.1.1.1.2 | FIXED_DURATION | PRORATED | True | True | 8538e85e-1b93-f011-adcc-c0bfbe9ea20f | True | PRORATED | 950400 | 2026-01-22T09:00:00.0 | 2025-12-20T09:00:00.0 | True | 2026-01-22T09:00:00.0 | True | 8913.34 | 177 | True | 7 | 172 |  | 03.01.01.01.02 | 172800 |  | 172800 | 172800 |  | 604800 |  |  |
| 2025-12-20T09:00:00.0 | ed | 567.22 | 567.22 | 567.22 | MURO DE PORTICO NO ESTRUCTURAL DE DRYWALL E=0.25m | 1.4.1.1.1.1.2.1 | AS_SOON_AS_POSSIBLE |  | 500 | 28800 | 28800 | 2025-12-20T09:00:00.0 | 2025-12-21T09:00:00.0 | 2026-01-26T09:00:00.0 | 2026-01-27T09:00:00.0 | 2 días | 178 |  | 2025-09-16T11:37:00.0 | 1.4.1.1.1.1.2.1 |  | PRORATED | True | True | 8738e85e-1b93-f011-adcc-c0bfbe9ea20f | True | PRORATED | 28800 | 2025-12-21T09:00:00.0 | 2025-12-20T09:00:00.0 | True | 2025-12-21T09:00:00.0 | True | 567.22 | 178 |  | 8 | 177 | 138 178 192 FS | 03.01.01.01.02.01 | 1065600 | 567.22 |  | 1065600 | 125 179 178 SS | 1065600 | 2025-12-20T09:00:00.0 | 2025-12-20T09:00:00.0 2025-12-21T09:00:00.0 |
| 2025-12-20T09:00:00.0 | ed | 399.66 | 399.66 | 399.66 | ALERO DE DRYWALL EN FRONTIS E=0.25m | 1.4.1.1.1.1.2.2 | AS_SOON_AS_POSSIBLE |  | 500 | 28800 | 28800 | 2025-12-20T09:00:00.0 | 2025-12-21T09:00:00.0 | 2026-01-25T09:00:00.0 | 2026-01-26T09:00:00.0 | 2 días | 179 |  | 2025-09-16T11:37:00.0 | 1.4.1.1.1.1.2.2 |  | PRORATED | True | True | 8938e85e-1b93-f011-adcc-c0bfbe9ea20f | True | PRORATED | 28800 | 2025-12-21T09:00:00.0 | 2025-12-20T09:00:00.0 | True | 2025-12-21T09:00:00.0 | True | 399.66 | 179 |  | 8 | 177 | 125 179 178 SS, 127 179 180 SS | 03.01.01.01.02.02 | 1036800 | 399.66 |  | 1036800 | 126 184 179 FS | 1036800 | 2025-12-20T09:00:00.0 | 2025-12-20T09:00:00.0 2025-12-21T09:00:00.0 |
| 2025-12-20T09:00:00.0 | ed | 2066.78 | 2066.78 | 2066.78 | ALERO DE SUPERBOARDEN LADO LATERAL E= 0.25m | 1.4.1.1.1.1.2.3 | AS_SOON_AS_POSSIBLE |  | 500 | 86400 | 86400 | 2025-12-20T09:00:00.0 | 2025-12-23T09:00:00.0 | 2026-01-25T09:00:00.0 | 2026-01-28T09:00:00.0 | 4 días | 180 |  | 2025-09-16T11:37:00.0 | 1.4.1.1.1.1.2.3 |  | PRORATED | True | True | 8b38e85e-1b93-f011-adcc-c0bfbe9ea20f | True | PRORATED | 86400 | 2025-12-23T09:00:00.0 | 2025-12-20T09:00:00.0 | True | 2025-12-23T09:00:00.0 | True | 2066.78 | 180 |  | 8 | 177 |  | 03.01.01.01.02.03 | 1036800 | 2066.78 | 1036800 | 1036800 | 127 179 180 SS | 1036800 | 2025-12-20T09:00:00.0 | 2025-12-20T09:00:00.0 2025-12-23T09:00:00.0 |
| 2026-01-19T09:00:00.0 | ed | 1289.1 | 1289.1 | 1289.1 | MURO DE DRYWALL RESISTENTE AL FUEGO E=12cm | 1.4.1.1.1.1.2.4 | AS_SOON_AS_POSSIBLE |  | 500 | 86400 | 86400 | 2026-01-19T09:00:00.0 | 2026-01-22T09:00:00.0 | 2026-01-25T09:00:00.0 | 2026-01-28T09:00:00.0 | 4 días | 181 |  | 2025-09-16T11:37:00.0 | 1.4.1.1.1.1.2.4 |  | PRORATED | True | True | 8d38e85e-1b93-f011-adcc-c0bfbe9ea20f | True | PRORATED | 86400 | 2026-01-22T09:00:00.0 | 2026-01-19T09:00:00.0 | True | 2026-01-22T09:00:00.0 | True | 1289.1 | 181 |  | 8 | 177 |  | 03.01.01.01.02.04 | 172800 | 1289.1 | 172800 | 172800 | 128 239 181 FS | 172800 | 2026-01-19T09:00:00.0 | 2026-01-19T09:00:00.0 2026-01-22T09:00:00.0 |
| 2025-12-20T09:00:00.0 | ed | 4590.58 | 4590.58 | 4590.58 | MURO DE CUARTO DE BOMBAS DE DRYWALL E=0.15m | 1.4.1.1.1.1.2.5 | AS_SOON_AS_POSSIBLE |  | 500 | 230400 | 230400 | 2025-12-20T09:00:00.0 | 2025-12-28T09:00:00.0 | 2026-01-10T09:00:00.0 | 2026-01-18T09:00:00.0 | 9 días | 182 |  | 2025-09-16T11:37:00.0 | 1.4.1.1.1.1.2.5 |  | PRORATED | True | True | 8f38e85e-1b93-f011-adcc-c0bfbe9ea20f | True | PRORATED | 230400 | 2025-12-28T09:00:00.0 | 2025-12-20T09:00:00.0 | True | 2025-12-28T09:00:00.0 | True | 4590.58 | 182 |  | 8 | 177 | 155 182 210 FS, 463 182 224 FS | 03.01.01.01.02.05 | 604800 | 4590.58 |  | 604800 | 478 223 182 FS | 604800 | 2025-12-20T09:00:00.0 | 2025-12-20T09:00:00.0 2025-12-28T09:00:00.0 |
| 2025-12-06T09:00:00.0 | ed | 35063.23 | 35063.23 | 35063.23 | REVOQUES Y ENLUCIDOS | 1.4.1.1.1.2 | AS_SOON_AS_POSSIBLE |  | 500 | 1296000 | 1296000 | 2025-12-06T09:00:00.0 | 2026-01-20T09:00:00.0 | 2025-12-13T09:00:00.0 | 2026-01-28T09:00:00.0 | 46 días | 183 | True | 2025-09-16T11:37:00.0 | 1.4.1.1.1.2 | FIXED_DURATION | PRORATED | True | True | 9138e85e-1b93-f011-adcc-c0bfbe9ea20f | True | PRORATED | 1296000 | 2026-01-20T09:00:00.0 | 2025-12-06T09:00:00.0 | True | 2026-01-20T09:00:00.0 | True | 35063.23 | 183 | True | 6 | 171 |  | 03.01.01.02 | 230400 |  | 201600 | 201600 |  | 201600 |  |  |
| 2025-12-06T09:00:00.0 | ed | 11287.88 | 11287.88 | 11287.88 | TARRAJEO DE MUROS EXTERIORES C:A 1:4 , E=1.5cm ACABADO MICROCEMENTO | 1.4.1.1.1.2.1 | AS_SOON_AS_POSSIBLE |  | 500 | 403200 | 403200 | 2025-12-06T09:00:00.0 | 2025-12-20T09:00:00.0 | 2026-01-09T09:00:00.0 | 2026-01-23T09:00:00.0 | 15 días | 184 |  | 2025-09-16T11:37:00.0 | 1.4.1.1.1.2.1 |  | PRORATED | True | True | 9338e85e-1b93-f011-adcc-c0bfbe9ea20f | True | PRORATED | 403200 | 2025-12-20T09:00:00.0 | 2025-12-06T09:00:00.0 | True | 2025-12-20T09:00:00.0 | True | 11287.88 | 184 |  | 7 | 183 | 126 184 179 FS, 139 184 193 FS, 150 184 204 FS, 151 184 205 FS, 163 184 220 FS, 183 184 242 FS | 03.01.01.02.01 | 979200 | 11287.88 |  | 979200 | 130 176 184 FS | 979200 | 2025-12-06T09:00:00.0 | 2025-12-06T09:00:00.0 2025-12-20T09:00:00.0 |
| 2025-12-13T09:00:00.0 | ed | 4708.57 | 4708.57 | 4708.57 | TARRAJEO MUROS INTERIORES C:A 1:4 , E=2CM | 1.4.1.1.1.2.2 | AS_SOON_AS_POSSIBLE | True | 500 | 374400 | 374400 | 2025-12-13T09:00:00.0 | 2025-12-26T09:00:00.0 | 2025-12-13T09:00:00.0 | 2025-12-26T09:00:00.0 | 14 días | 185 |  | 2025-09-16T11:37:00.0 | 1.4.1.1.1.2.2 |  | PRORATED | True | True | 9538e85e-1b93-f011-adcc-c0bfbe9ea20f | True | PRORATED | 374400 | 2025-12-26T09:00:00.0 | 2025-12-13T09:00:00.0 | True | 2025-12-26T09:00:00.0 | True | 4708.57 | 185 |  | 7 | 183 | 132 185 186 FF, 133 185 187 FF, 134 185 188 FF, 135 185 189 FF | 03.01.01.02.02 |  | 4708.57 |  |  | 131 197 185 86400 SS |  | 2025-12-13T09:00:00.0 | 2025-12-13T09:00:00.0 2025-12-26T09:00:00.0 |
| 2025-12-24T09:00:00.0 | ed | 684.39 | 684.39 | 684.39 | TARRAJEO PRIMARIO EN ENCHAPES | 1.4.1.1.1.2.3 | AS_SOON_AS_POSSIBLE |  | 500 | 57600 | 57600 | 2025-12-24T09:00:00.0 | 2025-12-26T09:00:00.0 | 2026-01-26T09:00:00.0 | 2026-01-28T09:00:00.0 | 3 días | 186 |  | 2025-09-16T11:37:00.0 | 1.4.1.1.1.2.3 |  | PRORATED | True | True | 9738e85e-1b93-f011-adcc-c0bfbe9ea20f | True | PRORATED | 57600 | 2025-12-26T09:00:00.0 | 2025-12-24T09:00:00.0 | True | 2025-12-26T09:00:00.0 | True | 684.39 | 186 |  | 7 | 183 |  | 03.01.01.02.03 | 950400 | 684.39 | 950400 | 950400 | 132 185 186 FF | 950400 |  | 2025-12-24T09:00:00.0 2025-12-26T09:00:00.0 |
| 2025-12-15T09:00:00.0 | ed | 3824.39 | 3824.39 | 3824.39 | TARRAJEO EN COLUMNAS E=2cm MEZCLA 1:5 | 1.4.1.1.1.2.4 | AS_SOON_AS_POSSIBLE |  | 500 | 316800 | 316800 | 2025-12-15T09:00:00.0 | 2025-12-26T09:00:00.0 | 2026-01-17T09:00:00.0 | 2026-01-28T09:00:00.0 | 12 días | 187 |  | 2025-09-16T11:37:00.0 | 1.4.1.1.1.2.4 |  | PRORATED | True | True | 9938e85e-1b93-f011-adcc-c0bfbe9ea20f | True | PRORATED | 316800 | 2025-12-26T09:00:00.0 | 2025-12-15T09:00:00.0 | True | 2025-12-26T09:00:00.0 | True | 3824.39 | 187 |  | 7 | 183 |  | 03.01.01.02.04 | 950400 | 3824.39 | 950400 | 950400 | 133 185 187 FF | 950400 |  | 2025-12-15T09:00:00.0 2025-12-26T09:00:00.0 |
| 2025-12-18T09:00:00.0 | ed | 2574.14 | 2574.14 | 2574.14 | TARRAJEO EN VIGAS E=1.5CM MEZCLA 1:5 | 1.4.1.1.1.2.5 | AS_SOON_AS_POSSIBLE |  | 500 | 230400 | 230400 | 2025-12-18T09:00:00.0 | 2025-12-26T09:00:00.0 | 2026-01-20T09:00:00.0 | 2026-01-28T09:00:00.0 | 9 días | 188 |  | 2025-09-16T11:37:00.0 | 1.4.1.1.1.2.5 |  | PRORATED | True | True | 9b38e85e-1b93-f011-adcc-c0bfbe9ea20f | True | PRORATED | 230400 | 2025-12-26T09:00:00.0 | 2025-12-18T09:00:00.0 | True | 2025-12-26T09:00:00.0 | True | 2574.14 | 188 |  | 7 | 183 |  | 03.01.01.02.05 | 950400 | 2574.14 | 950400 | 950400 | 134 185 188 FF | 950400 |  | 2025-12-18T09:00:00.0 2025-12-26T09:00:00.0 |
| 2025-12-19T09:00:00.0 | ed | 1861.02 | 1861.02 | 1861.02 | VESTIDURA DE DERRAMES A=15cm , E=15cm MEZCLA 1:5 | 1.4.1.1.1.2.6 | AS_SOON_AS_POSSIBLE | True | 500 | 201600 | 201600 | 2025-12-19T09:00:00.0 | 2025-12-26T09:00:00.0 | 2025-12-19T09:00:00.0 | 2025-12-26T09:00:00.0 | 8 días | 189 |  | 2025-09-16T11:37:00.0 | 1.4.1.1.1.2.6 |  | PRORATED | True | True | 9d38e85e-1b93-f011-adcc-c0bfbe9ea20f | True | PRORATED | 201600 | 2025-12-26T09:00:00.0 | 2025-12-19T09:00:00.0 | True | 2025-12-26T09:00:00.0 | True | 1861.02 | 189 |  | 7 | 183 | 147 189 201 FS | 03.01.01.02.06 |  | 1861.02 |  |  | 135 185 189 FF |  |  | 2025-12-19T09:00:00.0 2025-12-26T09:00:00.0 |
| 2025-12-11T09:00:00.0 | ed | 3023.81 | 3023.81 | 3023.81 | TARRAJEO IMPERMEABILIZADO EN CISTERNA | 1.4.1.1.1.2.7 | AS_SOON_AS_POSSIBLE |  | 500 | 144000 | 144000 | 2025-12-11T09:00:00.0 | 2025-12-16T09:00:00.0 | 2026-01-01T09:00:00.0 | 2026-01-06T09:00:00.0 | 6 días | 190 |  | 2025-09-16T11:37:00.0 | 1.4.1.1.1.2.7 |  | PRORATED | True | True | 9f38e85e-1b93-f011-adcc-c0bfbe9ea20f | True | PRORATED | 144000 | 2025-12-16T09:00:00.0 | 2025-12-11T09:00:00.0 | True | 2025-12-16T09:00:00.0 | True | 3023.81 | 190 |  | 7 | 183 | 462 190 223 FS | 03.01.01.02.07 | 604800 | 3023.81 |  | 604800 | 136 108 190 FS | 604800 | 2025-12-11T09:00:00.0 | 2025-12-11T09:00:00.0 2025-12-16T09:00:00.0 |
| 2025-12-13T09:00:00.0 | ed | 779.15 | 779.15 | 779.15 | TARRAJEO IMPERMEABILIZADO EN TRAMPA GRASA | 1.4.1.1.1.2.8 | AS_SOON_AS_POSSIBLE |  | 500 | 57600 | 57600 | 2025-12-13T09:00:00.0 | 2025-12-15T09:00:00.0 | 2026-01-26T09:00:00.0 | 2026-01-28T09:00:00.0 | 3 días | 191 |  | 2025-09-16T11:37:00.0 | 1.4.1.1.1.2.8 |  | PRORATED | True | True | a138e85e-1b93-f011-adcc-c0bfbe9ea20f | True | PRORATED | 57600 | 2025-12-15T09:00:00.0 | 2025-12-13T09:00:00.0 | True | 2025-12-15T09:00:00.0 | True | 779.15 | 191 |  | 7 | 183 |  | 03.01.01.02.08 | 1267200 | 779.15 | 1267200 | 1267200 | 137 116 191 FS | 1267200 | 2025-12-13T09:00:00.0 | 2025-12-13T09:00:00.0 2025-12-15T09:00:00.0 |
| 2025-12-21T09:00:00.0 | ed | 2582.63 | 2582.63 | 2582.63 | REVESTIMIENTO DE MURO C/WOOODPANEL DE PVC CON ACABADO DE MADERA | 1.4.1.1.1.2.9 | AS_SOON_AS_POSSIBLE |  | 500 | 28800 | 28800 | 2025-12-21T09:00:00.0 | 2025-12-22T09:00:00.0 | 2026-01-27T09:00:00.0 | 2026-01-28T09:00:00.0 | 2 días | 192 |  | 2025-09-16T11:37:00.0 | 1.4.1.1.1.2.9 |  | PRORATED | True | True | a338e85e-1b93-f011-adcc-c0bfbe9ea20f | True | PRORATED | 28800 | 2025-12-22T09:00:00.0 | 2025-12-21T09:00:00.0 | True | 2025-12-22T09:00:00.0 | True | 2582.63 | 192 |  | 7 | 183 |  | 03.01.01.02.09 | 1065600 | 2582.63 | 1065600 | 1065600 | 138 178 192 FS | 1065600 | 2025-12-21T09:00:00.0 | 2025-12-21T09:00:00.0 2025-12-22T09:00:00.0 |
| 2025-12-20T09:00:00.0 | ed | 3129.49 | 3129.49 | 3129.49 | REVESTIMIENTO DE MURO CON LAMINA DE PIEDRA NATURAL E=2cm C/ PERFORACION EN FORMA DE CRUZ | 1.4.1.1.1.2.10 | AS_SOON_AS_POSSIBLE |  | 500 | 28800 | 28800 | 2025-12-20T09:00:00.0 | 2025-12-21T09:00:00.0 | 2026-01-27T09:00:00.0 | 2026-01-28T09:00:00.0 | 2 días | 193 |  | 2025-09-16T11:37:00.0 | 1.4.1.1.1.2.10 |  | PRORATED | True | True | a538e85e-1b93-f011-adcc-c0bfbe9ea20f | True | PRORATED | 28800 | 2025-12-21T09:00:00.0 | 2025-12-20T09:00:00.0 | True | 2025-12-21T09:00:00.0 | True | 3129.49 | 193 |  | 7 | 183 |  | 03.01.01.02.10 | 1094400 | 3129.49 | 1094400 | 1094400 | 139 184 193 FS | 1094400 | 2025-12-20T09:00:00.0 | 2025-12-20T09:00:00.0 2025-12-21T09:00:00.0 |
| 2026-01-19T09:00:00.0 | ed | 542.54 | 542.54 | 542.54 | REVESTIMIENTO DE MURO CON ACABADO TERRAZO | 1.4.1.1.1.2.11 | AS_SOON_AS_POSSIBLE |  | 500 | 28800 | 28800 | 2026-01-19T09:00:00.0 | 2026-01-20T09:00:00.0 | 2026-01-27T09:00:00.0 | 2026-01-28T09:00:00.0 | 2 días | 194 |  | 2025-09-16T11:37:00.0 | 1.4.1.1.1.2.11 |  | PRORATED | True | True | a738e85e-1b93-f011-adcc-c0bfbe9ea20f | True | PRORATED | 28800 | 2026-01-20T09:00:00.0 | 2026-01-19T09:00:00.0 | True | 2026-01-20T09:00:00.0 | True | 542.54 | 194 |  | 7 | 183 |  | 03.01.01.02.11 | 230400 | 542.54 | 230400 | 230400 | 140 239 194 FS | 230400 | 2026-01-19T09:00:00.0 | 2026-01-19T09:00:00.0 2026-01-20T09:00:00.0 |
| 2026-01-19T09:00:00.0 | ed | 65.22 | 65.22 | 65.22 | REFUERZO DE MADERA PARA TABLEROS | 1.4.1.1.1.2.12 | AS_SOON_AS_POSSIBLE |  | 500 | 28800 | 28800 | 2026-01-19T09:00:00.0 | 2026-01-20T09:00:00.0 | 2026-01-27T09:00:00.0 | 2026-01-28T09:00:00.0 | 2 días | 195 |  | 2025-09-16T11:37:00.0 | 1.4.1.1.1.2.12 |  | PRORATED | True | True | a938e85e-1b93-f011-adcc-c0bfbe9ea20f | True | PRORATED | 28800 | 2026-01-20T09:00:00.0 | 2026-01-19T09:00:00.0 | True | 2026-01-20T09:00:00.0 | True | 65.22 | 195 |  | 7 | 183 |  | 03.01.01.02.12 | 230400 | 65.22 | 230400 | 230400 | 141 239 195 FS | 230400 | 2026-01-19T09:00:00.0 | 2026-01-19T09:00:00.0 2026-01-20T09:00:00.0 |
| 2025-12-10T09:00:00.0 | ed | 9705.6 | 9705.6 | 9705.6 | CIELO RASOS | 1.4.1.1.1.3 | AS_SOON_AS_POSSIBLE | True | 500 | 691200 | 691200 | 2025-12-10T09:00:00.0 | 2026-01-03T09:00:00.0 | 2025-12-10T09:00:00.0 | 2026-01-28T09:00:00.0 | 25 días | 196 | True | 2025-09-16T11:37:00.0 | 1.4.1.1.1.3 | FIXED_DURATION | PRORATED | True | True | ab38e85e-1b93-f011-adcc-c0bfbe9ea20f | True | PRORATED | 691200 | 2026-01-03T09:00:00.0 | 2025-12-10T09:00:00.0 | True | 2026-01-03T09:00:00.0 | True | 9705.6 | 196 | True | 6 | 171 |  | 03.01.01.03 | 720000 |  |  |  |  |  |  |  |
| 2025-12-10T09:00:00.0 | ed | 7174.86 | 7174.86 | 7174.86 | CIELORASSO CON MEZCLA C:A E=1.5CM | 1.4.1.1.1.3.1 | AS_SOON_AS_POSSIBLE | True | 500 | 432000 | 432000 | 2025-12-10T09:00:00.0 | 2025-12-25T09:00:00.0 | 2025-12-10T09:00:00.0 | 2025-12-25T09:00:00.0 | 16 días | 197 |  | 2025-09-16T11:37:00.0 | 1.4.1.1.1.3.1 |  | PRORATED | True | True | ad38e85e-1b93-f011-adcc-c0bfbe9ea20f | True | PRORATED | 432000 | 2025-12-25T09:00:00.0 | 2025-12-10T09:00:00.0 | True | 2025-12-25T09:00:00.0 | True | 7174.86 | 197 |  | 7 | 196 | 131 197 185 86400 SS, 145 197 198 FS | 03.01.01.03.01 |  | 7174.86 |  |  | 142 174 197 FS |  | 2025-12-10T09:00:00.0 | 2025-12-10T09:00:00.0 2025-12-25T09:00:00.0 |
| 2025-12-25T09:00:00.0 | ed | 259.28 | 259.28 | 259.28 | BLOQUETA DE VIDRIO | 1.4.1.1.1.3.2 | AS_SOON_AS_POSSIBLE |  | 500 | 28800 | 28800 | 2025-12-25T09:00:00.0 | 2025-12-26T09:00:00.0 | 2026-01-27T09:00:00.0 | 2026-01-28T09:00:00.0 | 2 días | 198 |  | 2025-09-16T11:37:00.0 | 1.4.1.1.1.3.2 |  | PRORATED | True | True | af38e85e-1b93-f011-adcc-c0bfbe9ea20f | True | PRORATED | 28800 | 2025-12-26T09:00:00.0 | 2025-12-25T09:00:00.0 | True | 2025-12-26T09:00:00.0 | True | 259.28 | 198 |  | 7 | 196 |  | 03.01.01.03.02 | 950400 | 259.28 | 950400 | 950400 | 145 197 198 FS | 950400 | 2025-12-25T09:00:00.0 | 2025-12-25T09:00:00.0 2025-12-26T09:00:00.0 |
| 2025-12-31T09:00:00.0 | ed | 2271.46 | 2271.46 | 2271.46 | SUMINISTRO E INSTALACION DE CUBIERTA DE ALUZINC TR4 INCL. ACCESORIOS EN CUARTO DE BOMBAS | 1.4.1.1.1.3.3 | AS_SOON_AS_POSSIBLE |  | 500 | 86400 | 86400 | 2025-12-31T09:00:00.0 | 2026-01-03T09:00:00.0 | 2026-01-21T09:00:00.0 | 2026-01-24T09:00:00.0 | 4 días | 199 |  | 2025-09-16T11:37:00.0 | 1.4.1.1.1.3.3 |  | PRORATED | True | True | b138e85e-1b93-f011-adcc-c0bfbe9ea20f | True | PRORATED | 86400 | 2026-01-03T09:00:00.0 | 2025-12-31T09:00:00.0 | True | 2026-01-03T09:00:00.0 | True | 2271.46 | 199 |  | 7 | 196 | 165 199 222 FS, 464 199 225 FS | 03.01.01.03.03 | 604800 | 2271.46 |  | 604800 | 483 224 199 FS | 604800 | 2025-12-31T09:00:00.0 | 2025-12-31T09:00:00.0 2026-01-03T09:00:00.0 |
| 2025-12-20T09:00:00.0 | ed | 35749.46 | 35749.46 | 35749.46 | PISOS Y PAVIMENTOS | 1.4.1.1.1.4 | AS_SOON_AS_POSSIBLE |  | 500 | 1036800 | 1036800 | 2025-12-20T09:00:00.0 | 2026-01-25T09:00:00.0 | 2025-12-26T09:00:00.0 | 2026-01-28T09:00:00.0 | 37 días | 200 | True | 2025-09-16T11:37:00.0 | 1.4.1.1.1.4 | FIXED_DURATION | PRORATED | True | True | b338e85e-1b93-f011-adcc-c0bfbe9ea20f | True | PRORATED | 1036800 | 2026-01-25T09:00:00.0 | 2025-12-20T09:00:00.0 | True | 2026-01-25T09:00:00.0 | True | 35749.46 | 200 | True | 6 | 171 |  | 03.01.01.04 | 86400 |  | 86400 | 86400 |  | 172800 |  |  |
| 2025-12-26T09:00:00.0 | ed | 3850.32 | 3850.32 | 3850.32 | CONTRAPISO E=38mm C:A 1:5 | 1.4.1.1.1.4.1 | AS_SOON_AS_POSSIBLE | True | 500 | 57600 | 57600 | 2025-12-26T09:00:00.0 | 2025-12-28T09:00:00.0 | 2025-12-26T09:00:00.0 | 2025-12-28T09:00:00.0 | 3 días | 201 |  | 2025-09-16T11:37:00.0 | 1.4.1.1.1.4.1 |  | PRORATED | True | True | b538e85e-1b93-f011-adcc-c0bfbe9ea20f | True | PRORATED | 57600 | 2025-12-28T09:00:00.0 | 2025-12-26T09:00:00.0 | True | 2025-12-28T09:00:00.0 | True | 3850.32 | 201 |  | 7 | 200 | 182 201 240 FS | 03.01.01.04.01 |  | 3850.32 |  |  | 147 189 201 FS |  | 2025-12-26T09:00:00.0 | 2025-12-26T09:00:00.0 2025-12-28T09:00:00.0 |
| 2026-01-19T09:00:00.0 | ed | 6449.64 | 6449.64 | 6449.64 | PORCELANATO ANTIDESLIZANTE COLOR GRIS PLATA 0.60X0.60 M (fragua 3mm) | 1.4.1.1.1.4.2 | AS_SOON_AS_POSSIBLE | True | 500 | 172800 | 172800 | 2026-01-19T09:00:00.0 | 2026-01-25T09:00:00.0 | 2026-01-19T09:00:00.0 | 2026-01-25T09:00:00.0 | 7 días | 202 |  | 2025-09-16T11:37:00.0 | 1.4.1.1.1.4.2 |  | PRORATED | True | True | b738e85e-1b93-f011-adcc-c0bfbe9ea20f | True | PRORATED | 172800 | 2026-01-25T09:00:00.0 | 2026-01-19T09:00:00.0 | True | 2026-01-25T09:00:00.0 | True | 6449.64 | 202 |  | 7 | 200 | 149 202 203 FF, 152 202 207 FF, 153 202 208 FF, 159 202 216 FS | 03.01.01.04.02 |  | 6449.64 |  |  | 148 239 202 FS |  | 2026-01-19T09:00:00.0 | 2026-01-19T09:00:00.0 2026-01-25T09:00:00.0 |
| 2026-01-21T09:00:00.0 | ed | 3575.54 | 3575.54 | 3575.54 | PORCELANATO ANTIDESLIZANTE COLOR BLANCO 0.60X0.60 M (fragua 3mm) | 1.4.1.1.1.4.3 | AS_SOON_AS_POSSIBLE | True | 500 | 115200 | 115200 | 2026-01-21T09:00:00.0 | 2026-01-25T09:00:00.0 | 2026-01-21T09:00:00.0 | 2026-01-25T09:00:00.0 | 5 días | 203 |  | 2025-09-16T11:37:00.0 | 1.4.1.1.1.4.3 |  | PRORATED | True | True | b938e85e-1b93-f011-adcc-c0bfbe9ea20f | True | PRORATED | 115200 | 2026-01-25T09:00:00.0 | 2026-01-21T09:00:00.0 | True | 2026-01-25T09:00:00.0 | True | 3575.54 | 203 |  | 7 | 200 | 154 203 209 FS, 160 203 217 FS, 187 203 246 FS, 466 203 429 FS | 03.01.01.04.03 |  | 3575.54 |  |  | 149 202 203 FF |  |  | 2026-01-21T09:00:00.0 2026-01-25T09:00:00.0 |
| 2025-12-20T09:00:00.0 | ed | 11104.49 | 11104.49 | 11104.49 | PISO DE ADOQUIN RECTANGULAR COLOR GRIS | 1.4.1.1.1.4.4 | AS_SOON_AS_POSSIBLE |  | 500 | 28800 | 28800 | 2025-12-20T09:00:00.0 | 2025-12-21T09:00:00.0 | 2026-01-27T09:00:00.0 | 2026-01-28T09:00:00.0 | 2 días | 204 |  | 2025-09-16T11:37:00.0 | 1.4.1.1.1.4.4 |  | PRORATED | True | True | bb38e85e-1b93-f011-adcc-c0bfbe9ea20f | True | PRORATED | 28800 | 2025-12-21T09:00:00.0 | 2025-12-20T09:00:00.0 | True | 2025-12-21T09:00:00.0 | True | 11104.49 | 204 |  | 7 | 200 |  | 03.01.01.04.04 | 1094400 | 11104.49 | 1094400 | 1094400 | 150 184 204 FS | 1094400 | 2025-12-20T09:00:00.0 | 2025-12-20T09:00:00.0 2025-12-21T09:00:00.0 |
| 2025-12-20T09:00:00.0 | ed | 10769.47 | 10769.47 | 10769.47 | PISO DE CONCRETO ACABADO SEMIPULIDO C/IMPERMEABILIZANTE | 1.4.1.1.1.4.5 | AS_SOON_AS_POSSIBLE |  | 500 | 115200 | 115200 | 2025-12-20T09:00:00.0 | 2025-12-24T09:00:00.0 | 2026-01-23T09:00:00.0 | 2026-01-27T09:00:00.0 | 5 días | 205 |  | 2025-09-16T11:37:00.0 | 1.4.1.1.1.4.5 |  | PRORATED | True | True | bd38e85e-1b93-f011-adcc-c0bfbe9ea20f | True | PRORATED | 115200 | 2025-12-24T09:00:00.0 | 2025-12-20T09:00:00.0 | True | 2025-12-24T09:00:00.0 | True | 10769.47 | 205 |  | 7 | 200 |  | 03.01.01.04.05 | 979200 | 10769.47 |  | 979200 | 151 184 205 FS | 979200 | 2025-12-20T09:00:00.0 | 2025-12-20T09:00:00.0 2025-12-24T09:00:00.0 |
| 2025-12-28T09:00:00.0 | ed | 4112.02 | 4112.02 | 4112.02 | ZOCALOS Y CONTRAZOCALOS | 1.4.1.1.1.5 | AS_SOON_AS_POSSIBLE |  | 500 | 835200 | 835200 | 2025-12-28T09:00:00.0 | 2026-01-26T09:00:00.0 | 2026-01-23T09:00:00.0 | 2026-01-28T09:00:00.0 | 30 días | 206 | True | 2025-09-16T11:37:00.0 | 1.4.1.1.1.5 | FIXED_DURATION | PRORATED | True | True | bf38e85e-1b93-f011-adcc-c0bfbe9ea20f | True | PRORATED | 835200 | 2026-01-26T09:00:00.0 | 2025-12-28T09:00:00.0 | True | 2026-01-26T09:00:00.0 | True | 4112.02 | 206 | True | 6 | 171 |  | 03.01.01.05 | 57600 |  | 57600 | 57600 |  | 748800 |  |  |
| 2026-01-23T09:00:00.0 | ed | 1903.8 | 1903.8 | 1903.8 | ZOCALO DE SS.HH DAMAS Y VARONES H=1.20(PORCELANATO ANTIDESLIZANTE COLOR GRIS 0.60X0.60) | 1.4.1.1.1.5.1 | AS_SOON_AS_POSSIBLE |  | 500 | 57600 | 57600 | 2026-01-23T09:00:00.0 | 2026-01-25T09:00:00.0 | 2026-01-25T09:00:00.0 | 2026-01-27T09:00:00.0 | 3 días | 207 |  | 2025-09-16T11:37:00.0 | 1.4.1.1.1.5.1 |  | PRORATED | True | True | c138e85e-1b93-f011-adcc-c0bfbe9ea20f | True | PRORATED | 57600 | 2026-01-25T09:00:00.0 | 2026-01-23T09:00:00.0 | True | 2026-01-25T09:00:00.0 | True | 1903.8 | 207 |  | 7 | 206 | 161 207 218 FS | 03.01.01.05.01 | 57600 | 1903.8 |  | 57600 | 152 202 207 FF | 57600 |  | 2026-01-23T09:00:00.0 2026-01-25T09:00:00.0 |
| 2026-01-23T09:00:00.0 | ed | 768.21 | 768.21 | 768.21 | CONTRAZOCALO DE PORCELANATO COLOR GRIS PLATA PISO H=10 CM | 1.4.1.1.1.5.2 | AS_SOON_AS_POSSIBLE | True | 500 | 57600 | 57600 | 2026-01-23T09:00:00.0 | 2026-01-25T09:00:00.0 | 2026-01-23T09:00:00.0 | 2026-01-25T09:00:00.0 | 3 días | 208 |  | 2025-09-16T11:37:00.0 | 1.4.1.1.1.5.2 |  | PRORATED | True | True | c338e85e-1b93-f011-adcc-c0bfbe9ea20f | True | PRORATED | 57600 | 2026-01-25T09:00:00.0 | 2026-01-23T09:00:00.0 | True | 2026-01-25T09:00:00.0 | True | 768.21 | 208 |  | 7 | 206 | 157 208 213 FS, 158 208 214 FS, 169 208 227 FS, 190 208 252 FS | 03.01.01.05.02 |  | 768.21 |  |  | 153 202 208 FF |  |  | 2026-01-23T09:00:00.0 2026-01-25T09:00:00.0 |
| 2026-01-25T09:00:00.0 | ed | 419.18 | 419.18 | 419.18 | CONTRAZOCALO DE PORCELANATO COLOR BLANCO H=10 CM | 1.4.1.1.1.5.3 | AS_SOON_AS_POSSIBLE |  | 500 | 28800 | 28800 | 2026-01-25T09:00:00.0 | 2026-01-26T09:00:00.0 | 2026-01-26T09:00:00.0 | 2026-01-27T09:00:00.0 | 2 días | 209 |  | 2025-09-16T11:37:00.0 | 1.4.1.1.1.5.3 |  | PRORATED | True | True | c538e85e-1b93-f011-adcc-c0bfbe9ea20f | True | PRORATED | 28800 | 2026-01-26T09:00:00.0 | 2026-01-25T09:00:00.0 | True | 2026-01-26T09:00:00.0 | True | 419.18 | 209 |  | 7 | 206 | 156 209 212 SS | 03.01.01.05.03 | 28800 | 419.18 |  | 28800 | 154 203 209 FS | 28800 | 2026-01-25T09:00:00.0 | 2026-01-25T09:00:00.0 2026-01-26T09:00:00.0 |

| start | leveling_delay_units | cost | cost_variance | remaining_cost | name | wbs | constraint_type | critical | priority | duration | remaining_duration | early_start | early_finish | late_start | late_finish | text2 | unique_id | summary | created | outline_number | type | fixed_cost_accrual | leveling_can_split | level_assignments | guid | active | baseline_fixed_cost_accrual | scheduled_duration | scheduled_finish | scheduled_start | recalc_outline_codes | finish | auto_compute_actuals | remaining_regular_cost | id | rollup | outline_level | parent_task_unique_id | successors | text1 | finish_slack | fixed_cost | free_slack | total_slack | predecessors | start_slack | summary_progress | work_splits |
| --- | --- | --- | --- | --- | --- | --- | --- | --- | --- | --- | --- | --- | --- | --- | --- | --- | --- | --- | --- | --- | --- | --- | --- | --- | --- | --- | --- | --- | --- | --- | --- | --- | --- | --- | --- | --- | --- | --- | --- | --- | --- | --- | --- | --- | --- | --- | --- | --- |
| 2025-12-28T09:00:00.0 | ed | 1020.83 | 1020.83 | 1020.83 | ZOCALO DE PORCELANATO COLOR GRIS PARA CUARTO DE BOMBAS H=0.30M | 1.4.1.1.1.5.4 | AS_SOON_AS_POSSIBLE |  | 500 | 28800 | 28800 | 2025-12-28T09:00:00.0 | 2025-12-29T09:00:00.0 | 2026-01-27T09:00:00.0 | 2026-01-28T09:00:00.0 | 2 días | 210 |  | 2025-09-16T11:37:00.0 | 1.4.1.1.1.5.4 |  | PRORATED | True | True | c738e85e-1b93-f011-adcc-c0bfbe9ea20f | True | PRORATED | 28800 | 2025-12-29T09:00:00.0 | 2025-12-28T09:00:00.0 | True | 2025-12-29T09:00:00.0 | True | 1020.83 | 210 |  | 7 | 206 |  | 03.01.01.05.04 | 864000 | 1020.83 | 864000 | 864000 | 155 182 210 FS | 864000 | 2025-12-28T09:00:00.0 | 2025-12-28T09:00:00.0 2025-12-29T09:00:00.0 |
| 2026-01-25T09:00:00.0 | ed | 3703.4 | 3703.4 | 3703.4 | CARPINTERIA DE MADERA | 1.4.1.1.1.6 | AS_SOON_AS_POSSIBLE |  | 500 | 57600 | 57600 | 2026-01-25T09:00:00.0 | 2026-01-27T09:00:00.0 | 2026-01-26T09:00:00.0 | 2026-01-28T09:00:00.0 | 3 días | 211 | True | 2025-09-16T11:37:00.0 | 1.4.1.1.1.6 | FIXED_DURATION | PRORATED | True | True | c938e85e-1b93-f011-adcc-c0bfbe9ea20f | True | PRORATED | 57600 | 2026-01-27T09:00:00.0 | 2026-01-25T09:00:00.0 | True | 2026-01-27T09:00:00.0 | True | 3703.4 | 211 | True | 6 | 171 |  | 03.01.01.06 | 28800 |  | 28800 | 28800 |  | 28800 |  |  |
| 2026-01-25T09:00:00.0 | ed | 1851.7 | 1851.7 | 1851.7 | SUMINISTRO E INSTALACION DE PUERTA TIPO P-01 DE MADERA CONTRAPLACADA PINTADO COLOR BLANCO CON MARCO | 1.4.1.1.1.6.1 | AS_SOON_AS_POSSIBLE |  | 500 | 57600 | 57600 | 2026-01-25T09:00:00.0 | 2026-01-27T09:00:00.0 | 2026-01-26T09:00:00.0 | 2026-01-28T09:00:00.0 | 3 días | 212 |  | 2025-09-16T11:37:00.0 | 1.4.1.1.1.6.1 |  | PRORATED | True | True | cb38e85e-1b93-f011-adcc-c0bfbe9ea20f | True | PRORATED | 57600 | 2026-01-27T09:00:00.0 | 2026-01-25T09:00:00.0 | True | 2026-01-27T09:00:00.0 | True | 1851.7 | 212 |  | 7 | 211 |  | 03.01.01.06.01 | 28800 | 1851.7 | 28800 | 28800 | 156 209 212 SS | 28800 | 2026-01-25T09:00:00.0 | 2026-01-25T09:00:00.0 2026-01-27T09:00:00.0 |
| 2026-01-25T09:00:00.0 | ed | 925.85 | 925.85 | 925.85 | SUMINISTRO E INSTALACION DE PUERTA TIPO P-03 DE PUERTA DE DOBLE HOJA DE MADERA CONTRAPLACADA , CON BISAGRA DE 3 1/2" X 3 1/2" ALUMINIZADAS DEL TIPO ACERADO CON MANIJA DE PALANCA CON BURLETE DE ESPUMA DE CAUCHO , SEGUN DISEÑO INCL.CERRAJERIA Y ACCES | 1.4.1.1.1.6.2 | AS_SOON_AS_POSSIBLE |  | 500 | 28800 | 28800 | 2026-01-25T09:00:00.0 | 2026-01-26T09:00:00.0 | 2026-01-27T09:00:00.0 | 2026-01-28T09:00:00.0 | 2 días | 213 |  | 2025-09-16T11:37:00.0 | 1.4.1.1.1.6.2 |  | PRORATED | True | True | cd38e85e-1b93-f011-adcc-c0bfbe9ea20f | True | PRORATED | 28800 | 2026-01-26T09:00:00.0 | 2026-01-25T09:00:00.0 | True | 2026-01-26T09:00:00.0 | True | 925.85 | 213 |  | 7 | 211 |  | 03.01.01.06.02 | 57600 | 925.85 | 57600 | 57600 | 157 208 213 FS | 57600 | 2026-01-25T09:00:00.0 | 2026-01-25T09:00:00.0 2026-01-26T09:00:00.0 |
| 2026-01-25T09:00:00.0 | ed | 925.85 | 925.85 | 925.85 | SUMINISTRO E INSTALACION DE PUERTA TIPO P-04 PUERTA BATIENTE DE MADERA CONTRAPLACADA , CON BISAGRA DE 3 1/2" X 3 1/2" ALUMINIZADA TIPO ACERADO CON MANIJA DE PALANCA CON BURLETE DE ESPUMA DE CAUCHO , SEGUN DISEÑO INCL.CERRAJERIA Y ACCESORIOS. | 1.4.1.1.1.6.3 | AS_SOON_AS_POSSIBLE |  | 500 | 28800 | 28800 | 2026-01-25T09:00:00.0 | 2026-01-26T09:00:00.0 | 2026-01-27T09:00:00.0 | 2026-01-28T09:00:00.0 | 2 días | 214 |  | 2025-09-16T11:37:00.0 | 1.4.1.1.1.6.3 |  | PRORATED | True | True | cf38e85e-1b93-f011-adcc-c0bfbe9ea20f | True | PRORATED | 28800 | 2026-01-26T09:00:00.0 | 2026-01-25T09:00:00.0 | True | 2026-01-26T09:00:00.0 | True | 925.85 | 214 |  | 7 | 211 |  | 03.01.01.06.03 | 57600 | 925.85 | 57600 | 57600 | 158 208 214 FS | 57600 | 2026-01-25T09:00:00.0 | 2026-01-25T09:00:00.0 2026-01-26T09:00:00.0 |
| 2025-12-16T09:00:00.0 | ed | 8001.64 | 8001.64 | 8001.64 | CARPINTERIA METALICA | 1.4.1.1.1.7 | AS_SOON_AS_POSSIBLE |  | 500 | 1180800 | 1180800 | 2025-12-16T09:00:00.0 | 2026-01-26T09:00:00.0 | 2026-01-06T09:00:00.0 | 2026-01-28T09:00:00.0 | 42 días | 215 | True | 2025-09-16T11:37:00.0 | 1.4.1.1.1.7 | FIXED_DURATION | PRORATED | True | True | d138e85e-1b93-f011-adcc-c0bfbe9ea20f | True | PRORATED | 1180800 | 2026-01-26T09:00:00.0 | 2025-12-16T09:00:00.0 | True | 2026-01-26T09:00:00.0 | True | 8001.64 | 215 | True | 6 | 171 |  | 03.01.01.07 | 57600 |  | 57600 | 57600 |  | 604800 |  |  |
| 2026-01-25T09:00:00.0 | ed | 513.45 | 513.45 | 513.45 | SUM. E INST.DE REJILLA METALICA SUMIDERO | 1.4.1.1.1.7.1 | AS_SOON_AS_POSSIBLE |  | 500 | 28800 | 28800 | 2026-01-25T09:00:00.0 | 2026-01-26T09:00:00.0 | 2026-01-27T09:00:00.0 | 2026-01-28T09:00:00.0 | 2 días | 216 |  | 2025-09-16T11:37:00.0 | 1.4.1.1.1.7.1 |  | PRORATED | True | True | d338e85e-1b93-f011-adcc-c0bfbe9ea20f | True | PRORATED | 28800 | 2026-01-26T09:00:00.0 | 2026-01-25T09:00:00.0 | True | 2026-01-26T09:00:00.0 | True | 513.45 | 216 |  | 7 | 215 |  | 03.01.01.07.01 | 57600 | 513.45 | 57600 | 57600 | 159 202 216 FS | 57600 | 2026-01-25T09:00:00.0 | 2026-01-25T09:00:00.0 2026-01-26T09:00:00.0 |
| 2026-01-25T09:00:00.0 | ed | 28.86 | 28.86 | 28.86 | SUM. E INST.DE PERFIL DE TRANSICION DE ACERO INOXIDABLE | 1.4.1.1.1.7.2 | AS_SOON_AS_POSSIBLE |  | 500 | 28800 | 28800 | 2026-01-25T09:00:00.0 | 2026-01-26T09:00:00.0 | 2026-01-27T09:00:00.0 | 2026-01-28T09:00:00.0 | 2 días | 217 |  | 2025-09-16T11:37:00.0 | 1.4.1.1.1.7.2 |  | PRORATED | True | True | d538e85e-1b93-f011-adcc-c0bfbe9ea20f | True | PRORATED | 28800 | 2026-01-26T09:00:00.0 | 2026-01-25T09:00:00.0 | True | 2026-01-26T09:00:00.0 | True | 28.86 | 217 |  | 7 | 215 |  | 03.01.01.07.02 | 57600 | 28.86 | 57600 | 57600 | 160 203 217 FS | 57600 | 2026-01-25T09:00:00.0 | 2026-01-25T09:00:00.0 2026-01-26T09:00:00.0 |
| 2026-01-25T09:00:00.0 | ed | 530.86 | 530.86 | 530.86 | SUM.E INST. DE BARRA ABATIBLE DE ACERO INOXIDABLE | 1.4.1.1.1.7.3 | AS_SOON_AS_POSSIBLE |  | 500 | 28800 | 28800 | 2026-01-25T09:00:00.0 | 2026-01-26T09:00:00.0 | 2026-01-27T09:00:00.0 | 2026-01-28T09:00:00.0 | 2 días | 218 |  | 2025-09-16T11:37:00.0 | 1.4.1.1.1.7.3 |  | PRORATED | True | True | d738e85e-1b93-f011-adcc-c0bfbe9ea20f | True | PRORATED | 28800 | 2026-01-26T09:00:00.0 | 2026-01-25T09:00:00.0 | True | 2026-01-26T09:00:00.0 | True | 530.86 | 218 |  | 7 | 215 | 162 218 219 SS | 03.01.01.07.03 | 57600 | 530.86 |  | 57600 | 161 207 218 FS | 57600 | 2026-01-25T09:00:00.0 | 2026-01-25T09:00:00.0 2026-01-26T09:00:00.0 |
| 2026-01-25T09:00:00.0 | ed | 556.98 | 556.98 | 556.98 | SUM.E INST. DE BARRA DE APOYO DE ACERO INOXIDABLE | 1.4.1.1.1.7.4 | AS_SOON_AS_POSSIBLE |  | 500 | 28800 | 28800 | 2026-01-25T09:00:00.0 | 2026-01-26T09:00:00.0 | 2026-01-27T09:00:00.0 | 2026-01-28T09:00:00.0 | 2 días | 219 |  | 2025-09-16T11:37:00.0 | 1.4.1.1.1.7.4 |  | PRORATED | True | True | d938e85e-1b93-f011-adcc-c0bfbe9ea20f | True | PRORATED | 28800 | 2026-01-26T09:00:00.0 | 2026-01-25T09:00:00.0 | True | 2026-01-26T09:00:00.0 | True | 556.98 | 219 |  | 7 | 215 |  | 03.01.01.07.04 | 57600 | 556.98 | 57600 | 57600 | 162 218 219 SS | 57600 | 2026-01-25T09:00:00.0 | 2026-01-25T09:00:00.0 2026-01-26T09:00:00.0 |
| 2025-12-20T09:00:00.0 | ed | 1670.76 | 1670.76 | 1670.76 | SUM.E INST. DE ESCALERA DE GATO | 1.4.1.1.1.7.5 | AS_SOON_AS_POSSIBLE |  | 500 | 86400 | 86400 | 2025-12-20T09:00:00.0 | 2025-12-23T09:00:00.0 | 2026-01-25T09:00:00.0 | 2026-01-28T09:00:00.0 | 4 días | 220 |  | 2025-09-16T11:37:00.0 | 1.4.1.1.1.7.5 |  | PRORATED | True | True | db38e85e-1b93-f011-adcc-c0bfbe9ea20f | True | PRORATED | 86400 | 2025-12-23T09:00:00.0 | 2025-12-20T09:00:00.0 | True | 2025-12-23T09:00:00.0 | True | 1670.76 | 220 |  | 7 | 215 |  | 03.01.01.07.05 | 1036800 | 1670.76 | 1036800 | 1036800 | 163 184 220 FS | 1036800 | 2025-12-20T09:00:00.0 | 2025-12-20T09:00:00.0 2025-12-23T09:00:00.0 |
| 2026-01-19T09:00:00.0 | ed | 818.16 | 818.16 | 818.16 | SUM.E INST.DE MARCOS METALICOS Y AGARRADERAS EN CAJA Y TAPA DE CAJAS REGISTROS | 1.4.1.1.1.7.6 | AS_SOON_AS_POSSIBLE |  | 500 | 28800 | 28800 | 2026-01-19T09:00:00.0 | 2026-01-20T09:00:00.0 | 2026-01-27T09:00:00.0 | 2026-01-28T09:00:00.0 | 2 días | 221 |  | 2025-09-16T11:37:00.0 | 1.4.1.1.1.7.6 |  | PRORATED | True | True | dd38e85e-1b93-f011-adcc-c0bfbe9ea20f | True | PRORATED | 28800 | 2026-01-20T09:00:00.0 | 2026-01-19T09:00:00.0 | True | 2026-01-20T09:00:00.0 | True | 818.16 | 221 |  | 7 | 215 |  | 03.01.01.07.06 | 230400 | 818.16 | 230400 | 230400 | 164 239 221 FS | 230400 | 2026-01-19T09:00:00.0 | 2026-01-19T09:00:00.0 2026-01-20T09:00:00.0 |
| 2026-01-03T09:00:00.0 | ed | 240.65 | 240.65 | 240.65 | SUM.E INST.DE TAPA METALICAS PARA CISTERNA | 1.4.1.1.1.7.7 | AS_SOON_AS_POSSIBLE |  | 500 | 28800 | 28800 | 2026-01-03T09:00:00.0 | 2026-01-04T09:00:00.0 | 2026-01-27T09:00:00.0 | 2026-01-28T09:00:00.0 | 2 días | 222 |  | 2025-09-16T11:37:00.0 | 1.4.1.1.1.7.7 |  | PRORATED | True | True | df38e85e-1b93-f011-adcc-c0bfbe9ea20f | True | PRORATED | 28800 | 2026-01-04T09:00:00.0 | 2026-01-03T09:00:00.0 | True | 2026-01-04T09:00:00.0 | True | 240.65 | 222 |  | 7 | 215 |  | 03.01.01.07.07 | 691200 | 240.65 | 691200 | 691200 | 165 199 222 FS | 691200 | 2026-01-03T09:00:00.0 | 2026-01-03T09:00:00.0 2026-01-04T09:00:00.0 |
| 2025-12-16T09:00:00.0 | ed | 2693.56 | 2693.56 | 2693.56 | SUM.E INST. DE COLUMNAS METALICAS 4"X4" SEGUN DISEÑO INCL.ANCLAJE | 1.4.1.1.1.7.8 | AS_SOON_AS_POSSIBLE |  | 500 | 115200 | 115200 | 2025-12-16T09:00:00.0 | 2025-12-20T09:00:00.0 | 2026-01-06T09:00:00.0 | 2026-01-10T09:00:00.0 | 5 días | 223 |  | 2025-09-16T11:37:00.0 | 1.4.1.1.1.7.8 |  | PRORATED | True | True | e138e85e-1b93-f011-adcc-c0bfbe9ea20f | True | PRORATED | 115200 | 2025-12-20T09:00:00.0 | 2025-12-16T09:00:00.0 | True | 2025-12-20T09:00:00.0 | True | 2693.56 | 223 |  | 7 | 215 | 478 223 182 FS | 03.01.01.07.08 | 604800 | 2693.56 |  | 604800 | 462 190 223 FS | 604800 | 2025-12-16T09:00:00.0 | 2025-12-16T09:00:00.0 2025-12-20T09:00:00.0 |
| 2025-12-28T09:00:00.0 | ed | 425.86 | 425.86 | 425.86 | SUM.E INST.DE VIGAS METALICAS 4"X4" SEGUN DISEÑO | 1.4.1.1.1.7.9 | AS_SOON_AS_POSSIBLE |  | 500 | 86400 | 86400 | 2025-12-28T09:00:00.0 | 2025-12-31T09:00:00.0 | 2026-01-18T09:00:00.0 | 2026-01-21T09:00:00.0 | 4 días | 224 |  | 2025-09-16T11:37:00.0 | 1.4.1.1.1.7.9 |  | PRORATED | True | True | e338e85e-1b93-f011-adcc-c0bfbe9ea20f | True | PRORATED | 86400 | 2025-12-31T09:00:00.0 | 2025-12-28T09:00:00.0 | True | 2025-12-31T09:00:00.0 | True | 425.86 | 224 |  | 7 | 215 | 483 224 199 FS | 03.01.01.07.09 | 604800 | 425.86 |  | 604800 | 463 182 224 FS | 604800 | 2025-12-28T09:00:00.0 | 2025-12-28T09:00:00.0 2025-12-31T09:00:00.0 |
| 2026-01-03T09:00:00.0 | ed | 522.5 | 522.5 | 522.5 | SUM.E INST.DE P-05 PUERTA DE ALUMINIO C/REJILLA DE ALUMINIO INCL.BISAGRA ALUMINIZADA 3 1/2" X 3 1/2" C/MANIJA DE PALANCA | 1.4.1.1.1.7.10 | AS_SOON_AS_POSSIBLE |  | 500 | 28800 | 28800 | 2026-01-03T09:00:00.0 | 2026-01-04T09:00:00.0 | 2026-01-24T09:00:00.0 | 2026-01-25T09:00:00.0 | 2 días | 225 |  | 2025-09-16T11:37:00.0 | 1.4.1.1.1.7.10 |  | PRORATED | True | True | e538e85e-1b93-f011-adcc-c0bfbe9ea20f | True | PRORATED | 28800 | 2026-01-04T09:00:00.0 | 2026-01-03T09:00:00.0 | True | 2026-01-04T09:00:00.0 | True | 522.5 | 225 |  | 7 | 215 | 472 225 523 FS | 03.01.01.07.10 | 604800 | 522.5 |  | 604800 | 464 199 225 FS | 604800 | 2026-01-03T09:00:00.0 | 2026-01-03T09:00:00.0 2026-01-04T09:00:00.0 |
| 2026-01-19T09:00:00.0 | ed | 27649.88 | 27649.88 | 27649.88 | VIDRIOS Y CRISTALES | 1.4.1.1.1.8 | AS_SOON_AS_POSSIBLE | True | 500 | 259200 | 259200 | 2026-01-19T09:00:00.0 | 2026-01-28T09:00:00.0 | 2026-01-19T09:00:00.0 | 2026-01-28T09:00:00.0 | 10 días | 226 | True | 2025-09-16T11:37:00.0 | 1.4.1.1.1.8 | FIXED_DURATION | PRORATED | True | True | e738e85e-1b93-f011-adcc-c0bfbe9ea20f | True | PRORATED | 259200 | 2026-01-28T09:00:00.0 | 2026-01-19T09:00:00.0 | True | 2026-01-28T09:00:00.0 | True | 27649.88 | 226 | True | 6 | 171 |  | 03.01.01.08 |  |  |  |  |  |  |  |  |
| 2026-01-25T09:00:00.0 | ed | 5285.96 | 5285.96 | 5285.96 | SUM.E INST.PUERTA P-02 DE DOBLE HOJA VAIVEN DE VIDRIO TEMPLADO E=8MM | 1.4.1.1.1.8.1 | AS_SOON_AS_POSSIBLE | True | 500 | 86400 | 86400 | 2026-01-25T09:00:00.0 | 2026-01-28T09:00:00.0 | 2026-01-25T09:00:00.0 | 2026-01-28T09:00:00.0 | 4 días | 227 |  | 2025-09-16T11:37:00.0 | 1.4.1.1.1.8.1 |  | PRORATED | True | True | e938e85e-1b93-f011-adcc-c0bfbe9ea20f | True | PRORATED | 86400 | 2026-01-28T09:00:00.0 | 2026-01-25T09:00:00.0 | True | 2026-01-28T09:00:00.0 | True | 5285.96 | 227 |  | 7 | 226 | 179 227 236 -28800 FF | 03.01.01.08.01 |  | 5285.96 |  |  | 169 208 227 FS |  | 2026-01-25T09:00:00.0 | 2026-01-25T09:00:00.0 2026-01-28T09:00:00.0 |
| 2026-01-19T09:00:00.0 | ed | 1090.75 | 1090.75 | 1090.75 | SUM.E INST. DE VENTANA V-01 DE PAÑO SUPERIOR ; VENTANA PIVOTANTE VERTICAL DE VIDRIO TEMPLADO 8MM CON MARCO DE ALUMINIO COLOR NEGRO (SE ELEVA 60 GRADOS ), PAÑO INFERIOR; VENTANA FIJA CON VIDRIO CON VIDRIO TEMPLADO DE 8MM Y MARCO DE ALUMINIO COLOR NE | 1.4.1.1.1.8.2 | AS_SOON_AS_POSSIBLE |  | 500 | 57600 | 57600 | 2026-01-19T09:00:00.0 | 2026-01-21T09:00:00.0 | 2026-01-26T09:00:00.0 | 2026-01-28T09:00:00.0 | 3 días | 228 |  | 2025-09-16T11:37:00.0 | 1.4.1.1.1.8.2 |  | PRORATED | True | True | eb38e85e-1b93-f011-adcc-c0bfbe9ea20f | True | PRORATED | 57600 | 2026-01-21T09:00:00.0 | 2026-01-19T09:00:00.0 | True | 2026-01-21T09:00:00.0 | True | 1090.75 | 228 |  | 7 | 226 |  | 03.01.01.08.02 | 201600 | 1090.75 | 201600 | 201600 | 170 239 228 FS | 201600 | 2026-01-19T09:00:00.0 | 2026-01-19T09:00:00.0 2026-01-21T09:00:00.0 |
| 2026-01-19T09:00:00.0 | ed | 2768.83 | 2768.83 | 2768.83 | SUM.E INST. DE VENTANA V-02 DE PAÑO SUPERIOR ; VENTANA PIVOTANTE VERTICAL DE VIDRIO TEMPLADO 8MM CON MARCO DE ALUMINIO COLOR NEGRO (SE ELEVA 60 GRADOS ), PAÑO INFERIOR; VENTANA FIJA CON VIDRIO CON VIDRIO TEMPLADO DE 8MM Y MARCO DE ALUMINIO COLOR NE | 1.4.1.1.1.8.3 | AS_SOON_AS_POSSIBLE |  | 500 | 57600 | 57600 | 2026-01-19T09:00:00.0 | 2026-01-21T09:00:00.0 | 2026-01-26T09:00:00.0 | 2026-01-28T09:00:00.0 | 3 días | 229 |  | 2025-09-16T11:37:00.0 | 1.4.1.1.1.8.3 |  | PRORATED | True | True | ed38e85e-1b93-f011-adcc-c0bfbe9ea20f | True | PRORATED | 57600 | 2026-01-21T09:00:00.0 | 2026-01-19T09:00:00.0 | True | 2026-01-21T09:00:00.0 | True | 2768.83 | 229 |  | 7 | 226 |  | 03.01.01.08.03 | 201600 | 2768.83 | 201600 | 201600 | 171 239 229 FS | 201600 | 2026-01-19T09:00:00.0 | 2026-01-19T09:00:00.0 2026-01-21T09:00:00.0 |
| 2026-01-19T09:00:00.0 | ed | 4027.39 | 4027.39 | 4027.39 | SUM.E INST. DE VENTANA V-03 DE PAÑO SUPERIOR ; VENTANA PIVOTANTE VERTICAL DE VIDRIO TEMPLADO 8MM CON MARCO DE ALUMINIO COLOR NEGRO (SE ELEVA 60 GRADOS ), PAÑO INFERIOR; VENTANA FIJA CON VIDRIO CON VIDRIO TEMPLADO DE 8MM Y MARCO DE ALUMINIO COLOR NE | 1.4.1.1.1.8.4 | AS_SOON_AS_POSSIBLE |  | 500 | 57600 | 57600 | 2026-01-19T09:00:00.0 | 2026-01-21T09:00:00.0 | 2026-01-26T09:00:00.0 | 2026-01-28T09:00:00.0 | 3 días | 230 |  | 2025-09-16T11:37:00.0 | 1.4.1.1.1.8.4 |  | PRORATED | True | True | ef38e85e-1b93-f011-adcc-c0bfbe9ea20f | True | PRORATED | 57600 | 2026-01-21T09:00:00.0 | 2026-01-19T09:00:00.0 | True | 2026-01-21T09:00:00.0 | True | 4027.39 | 230 |  | 7 | 226 |  | 03.01.01.08.04 | 201600 | 4027.39 | 201600 | 201600 | 172 239 230 FS | 201600 | 2026-01-19T09:00:00.0 | 2026-01-19T09:00:00.0 2026-01-21T09:00:00.0 |
| 2026-01-19T09:00:00.0 | ed | 1006.85 | 1006.85 | 1006.85 | SUM.E INST. DE VENTANA V-04, FIJA DE VIDRIO TEMPLADO DE 8MM Y MARCO DE ALUMINIO COLOR NEGRO , SEGUN DISEÑO ,INCL.CERRAJERIA Y ACCESORIOS | 1.4.1.1.1.8.5 | AS_SOON_AS_POSSIBLE |  | 500 | 57600 | 57600 | 2026-01-19T09:00:00.0 | 2026-01-21T09:00:00.0 | 2026-01-26T09:00:00.0 | 2026-01-28T09:00:00.0 | 3 días | 231 |  | 2025-09-16T11:37:00.0 | 1.4.1.1.1.8.5 |  | PRORATED | True | True | f138e85e-1b93-f011-adcc-c0bfbe9ea20f | True | PRORATED | 57600 | 2026-01-21T09:00:00.0 | 2026-01-19T09:00:00.0 | True | 2026-01-21T09:00:00.0 | True | 1006.85 | 231 |  | 7 | 226 |  | 03.01.01.08.05 | 201600 | 1006.85 | 201600 | 201600 | 174 239 231 FS | 201600 | 2026-01-19T09:00:00.0 | 2026-01-19T09:00:00.0 2026-01-21T09:00:00.0 |
| 2026-01-19T09:00:00.0 | ed | 1090.76 | 1090.76 | 1090.76 | SUM.E INST. DE VENTANA V-05, FIJA DE VIDRIO TEMPLADO DE 8MM Y MARCO DE ALUMINIO COLOR NEGRO , SEGUN DISEÑO ,INCL.CERRAJERIA Y ACCESORIOS | 1.4.1.1.1.8.6 | AS_SOON_AS_POSSIBLE |  | 500 | 57600 | 57600 | 2026-01-19T09:00:00.0 | 2026-01-21T09:00:00.0 | 2026-01-26T09:00:00.0 | 2026-01-28T09:00:00.0 | 3 días | 232 |  | 2025-09-16T11:37:00.0 | 1.4.1.1.1.8.6 |  | PRORATED | True | True | f338e85e-1b93-f011-adcc-c0bfbe9ea20f | True | PRORATED | 57600 | 2026-01-21T09:00:00.0 | 2026-01-19T09:00:00.0 | True | 2026-01-21T09:00:00.0 | True | 1090.76 | 232 |  | 7 | 226 |  | 03.01.01.08.06 | 201600 | 1090.76 | 201600 | 201600 | 175 239 232 FS | 201600 | 2026-01-19T09:00:00.0 | 2026-01-19T09:00:00.0 2026-01-21T09:00:00.0 |
| 2026-01-19T09:00:00.0 | ed | 1887.84 | 1887.84 | 1887.84 | SUM.E INST. DE VENTANA V-06 DE PAÑO SUPERIOR ; VENTANA PIVOTANTE VERTICAL DE VIDRIO TEMPLADO 8MM CON MARCO DE ALUMINIO COLOR NEGRO (SE ELEVA 60 GRADOS ), PAÑO INFERIOR; VENTANA FIJA CON VIDRIO CON VIDRIO TEMPLADO DE 8MM Y MARCO DE ALUMINIO COLOR NE | 1.4.1.1.1.8.7 | AS_SOON_AS_POSSIBLE |  | 500 | 28800 | 28800 | 2026-01-19T09:00:00.0 | 2026-01-20T09:00:00.0 | 2026-01-27T09:00:00.0 | 2026-01-28T09:00:00.0 | 2 días | 233 |  | 2025-09-16T11:37:00.0 | 1.4.1.1.1.8.7 |  | PRORATED | True | True | f538e85e-1b93-f011-adcc-c0bfbe9ea20f | True | PRORATED | 28800 | 2026-01-20T09:00:00.0 | 2026-01-19T09:00:00.0 | True | 2026-01-20T09:00:00.0 | True | 1887.84 | 233 |  | 7 | 226 |  | 03.01.01.08.07 | 230400 | 1887.84 | 230400 | 230400 | 176 239 233 FS | 230400 | 2026-01-19T09:00:00.0 | 2026-01-19T09:00:00.0 2026-01-20T09:00:00.0 |
| 2026-01-19T09:00:00.0 | ed | 1975.24 | 1975.24 | 1975.24 | SUM.E INST. DE VENTANA V-07 DE PAÑO SUPERIOR ; VENTANA PIVOTANTE VERTICAL DE VIDRIO TEMPLADO 8MM CON MARCO DE ALUMINIO COLOR NEGRO (SE ELEVA 60 GRADOS ), PAÑO INFERIOR; VENTANA FIJA CON VIDRIO CON VIDRIO TEMPLADO DE 8MM Y MARCO DE ALUMINIO COLOR NE | 1.4.1.1.1.8.8 | AS_SOON_AS_POSSIBLE | True | 500 | 28800 | 28800 | 2026-01-19T09:00:00.0 | 2026-01-20T09:00:00.0 | 2026-01-19T09:00:00.0 | 2026-01-20T09:00:00.0 | 2 días | 234 |  | 2025-09-16T11:37:00.0 | 1.4.1.1.1.8.8 |  | PRORATED | True | True | f738e85e-1b93-f011-adcc-c0bfbe9ea20f | True | PRORATED | 28800 | 2026-01-20T09:00:00.0 | 2026-01-19T09:00:00.0 | True | 2026-01-20T09:00:00.0 | True | 1975.24 | 234 |  | 7 | 226 | 178 234 235 FS | 03.01.01.08.08 |  | 1975.24 |  |  | 177 239 234 FS |  | 2026-01-19T09:00:00.0 | 2026-01-19T09:00:00.0 2026-01-20T09:00:00.0 |
| 2026-01-20T09:00:00.0 | ed | 2726.88 | 2726.88 | 2726.88 | SUM.E INST. DE VENTANA VA-1 DE 3 CUERPOS PIVOTANTE VERTICAL, CON APERTURA DE 60 GRADOS DE VIDRIO | 1.4.1.1.1.8.9 | AS_SOON_AS_POSSIBLE | True | 500 | 230400 | 230400 | 2026-01-20T09:00:00.0 | 2026-01-28T09:00:00.0 | 2026-01-20T09:00:00.0 | 2026-01-28T09:00:00.0 | 9 días | 235 |  | 2025-09-16T11:37:00.0 | 1.4.1.1.1.8.9 |  | PRORATED | True | True | f938e85e-1b93-f011-adcc-c0bfbe9ea20f | True | PRORATED | 230400 | 2026-01-28T09:00:00.0 | 2026-01-20T09:00:00.0 | True | 2026-01-28T09:00:00.0 | True | 2726.88 | 235 |  | 7 | 226 |  | 03.01.01.08.09 |  | 2726.88 |  |  | 178 234 235 FS |  | 2026-01-20T09:00:00.0 | 2026-01-20T09:00:00.0 2026-01-28T09:00:00.0 |
| 2026-01-26T09:00:00.0 | ed | 2936.64 | 2936.64 | 2936.64 | SUM.E INST. DE MAMPARA M-01, PAÑO SUPERIOR; FIJA DE VIDRIO TEMPLADO E=8MM MARCO DE ALUMINIO NEGRO , PAÑO INFERIOR : MAMPARA CORREDIZA CON JALADOR EMBUTIDO , SEGUN DISEÑO , INCL.CERRAJERIA Y ACCESORIOS | 1.4.1.1.1.8.10 | AS_SOON_AS_POSSIBLE | True | 500 | 28800 | 28800 | 2026-01-26T09:00:00.0 | 2026-01-27T09:00:00.0 | 2026-01-26T09:00:00.0 | 2026-01-27T09:00:00.0 | 2 días | 236 |  | 2025-09-16T11:37:00.0 | 1.4.1.1.1.8.10 |  | PRORATED | True | True | fb38e85e-1b93-f011-adcc-c0bfbe9ea20f | True | PRORATED | 28800 | 2026-01-27T09:00:00.0 | 2026-01-26T09:00:00.0 | True | 2026-01-27T09:00:00.0 | True | 2936.64 | 236 |  | 7 | 226 | 180 236 237 SS | 03.01.01.08.10 |  | 2936.64 |  |  | 179 227 236 -28800 FF |  |  | 2026-01-26T09:00:00.0 2026-01-27T09:00:00.0 |
| 2026-01-26T09:00:00.0 | ed | 2852.74 | 2852.74 | 2852.74 | SUM.E INST .DE MAMPARA M-02 , PAÑO SUPERIOR ; FIJA DE VIDRIO TEMPLADO E=8MM MARCO DE ALUMINIO NEGRO, PAÑO INFERIOR ; MURO CORTINA SEGUN DISEÑO . INCL.CERRAJERIA Y ACCESORIOS | 1.4.1.1.1.8.11 | AS_SOON_AS_POSSIBLE | True | 500 | 57600 | 57600 | 2026-01-26T09:00:00.0 | 2026-01-28T09:00:00.0 | 2026-01-26T09:00:00.0 | 2026-01-28T09:00:00.0 | 3 días | 237 |  | 2025-09-16T11:37:00.0 | 1.4.1.1.1.8.11 |  | PRORATED | True | True | fd38e85e-1b93-f011-adcc-c0bfbe9ea20f | True | PRORATED | 57600 | 2026-01-28T09:00:00.0 | 2026-01-26T09:00:00.0 | True | 2026-01-28T09:00:00.0 | True | 2852.74 | 237 |  | 7 | 226 |  | 03.01.01.08.11 |  | 2852.74 |  |  | 180 236 237 SS |  | 2026-01-26T09:00:00.0 | 2026-01-26T09:00:00.0 2026-01-28T09:00:00.0 |
| 2025-12-28T09:00:00.0 | ed | 8141.11 | 8141.11 | 8141.11 | PINTURAS | 1.4.1.1.1.9 | AS_SOON_AS_POSSIBLE | True | 500 | 633600 | 633600 | 2025-12-28T09:00:00.0 | 2026-01-19T09:00:00.0 | 2025-12-28T09:00:00.0 | 2026-01-19T09:00:00.0 | 23 días | 238 | True | 2025-09-16T11:37:00.0 | 1.4.1.1.1.9 | FIXED_DURATION | PRORATED | True | True | ff38e85e-1b93-f011-adcc-c0bfbe9ea20f | True | PRORATED | 633600 | 2026-01-19T09:00:00.0 | 2025-12-28T09:00:00.0 | True | 2026-01-19T09:00:00.0 | True | 8141.11 | 238 | True | 6 | 171 |  | 03.01.01.09 |  |  |  |  |  |  |  |  |
| 2026-01-02T09:00:00.0 | ed | 6222.4 | 6222.4 | 6222.4 | PINTURA MATE LAVABLE COLOR BLANCO 2 MANOS EN INTERIORES | 1.4.1.1.1.9.1 | AS_SOON_AS_POSSIBLE | True | 500 | 489600 | 489600 | 2026-01-02T09:00:00.0 | 2026-01-19T09:00:00.0 | 2026-01-02T09:00:00.0 | 2026-01-19T09:00:00.0 | 18 días | 239 |  | 2025-09-16T11:37:00.0 | 1.4.1.1.1.9.1 |  | PRORATED | True | True | 0139e85e-1b93-f011-adcc-c0bfbe9ea20f | True | PRORATED | 489600 | 2026-01-19T09:00:00.0 | 2026-01-02T09:00:00.0 | True | 2026-01-19T09:00:00.0 | True | 6222.4 | 239 |  | 7 | 238 | 128 239 181 FS, 140 239 194 FS, 141 239 195 FS, 148 239 202 FS, 164 239 221 FS, 170 239 228 FS, 171 239 229 FS, 172 239 230 FS, 174 239 231 FS, 175 239 232 FS, 176 239 233 FS, 177 239 234 FS, 192 239 256 FS, 196 239 262 FS, 469 239 509 FS, 470 239 516 FS, 473 239 525 FS | 03.01.01.09.01 |  | 6222.4 |  |  | 181 240 239 FS |  | 2026-01-02T09:00:00.0 | 2026-01-02T09:00:00.0 2026-01-19T09:00:00.0 |
| 2025-12-28T09:00:00.0 | ed | 1918.71 | 1918.71 | 1918.71 | PINTURA BLANCA EN CIELO RASSO C/IMPRIMANTE (2 MANOS) ACABADO MATE LAVABLE | 1.4.1.1.1.9.2 | AS_SOON_AS_POSSIBLE | True | 500 | 144000 | 144000 | 2025-12-28T09:00:00.0 | 2026-01-02T09:00:00.0 | 2025-12-28T09:00:00.0 | 2026-01-02T09:00:00.0 | 6 días | 240 |  | 2025-09-16T11:37:00.0 | 1.4.1.1.1.9.2 |  | PRORATED | True | True | 0339e85e-1b93-f011-adcc-c0bfbe9ea20f | True | PRORATED | 144000 | 2026-01-02T09:00:00.0 | 2025-12-28T09:00:00.0 | True | 2026-01-02T09:00:00.0 | True | 1918.71 | 240 |  | 7 | 238 | 181 240 239 FS | 03.01.01.09.02 |  | 1918.71 |  |  | 182 201 240 FS |  | 2025-12-28T09:00:00.0 | 2025-12-28T09:00:00.0 2026-01-02T09:00:00.0 |
| 2025-12-20T09:00:00.0 | ed | 44184.82 | 44184.82 | 44184.82 | VARIOS | 1.4.1.1.1.10 | AS_SOON_AS_POSSIBLE | True | 500 | 1123200 | 1123200 | 2025-12-20T09:00:00.0 | 2026-01-28T09:00:00.0 | 2026-01-25T09:00:00.0 | 2026-01-28T09:00:00.0 | 40 días | 241 | True | 2025-09-16T11:37:00.0 | 1.4.1.1.1.10 | FIXED_DURATION | PRORATED | True | True | 0539e85e-1b93-f011-adcc-c0bfbe9ea20f | True | PRORATED | 1123200 | 2026-01-28T09:00:00.0 | 2025-12-20T09:00:00.0 | True | 2026-01-28T09:00:00.0 | True | 44184.82 | 241 | True | 6 | 171 |  | 03.01.01.10 |  |  |  |  |  | 1036800 |  |  |
| 2025-12-20T09:00:00.0 | ed | 5823.03 | 5823.03 | 5823.03 | SUM. E INST DEL LOGO METALICO GRIS MATE | 1.4.1.1.1.10.1 | AS_SOON_AS_POSSIBLE |  | 500 | 28800 | 28800 | 2025-12-20T09:00:00.0 | 2025-12-21T09:00:00.0 | 2026-01-26T09:00:00.0 | 2026-01-27T09:00:00.0 | 2 días | 242 |  | 2025-09-16T11:37:00.0 | 1.4.1.1.1.10.1 |  | PRORATED | True | True | 0739e85e-1b93-f011-adcc-c0bfbe9ea20f | True | PRORATED | 28800 | 2025-12-21T09:00:00.0 | 2025-12-20T09:00:00.0 | True | 2025-12-21T09:00:00.0 | True | 5823.03 | 242 |  | 7 | 241 | 184 242 243 FS, 185 242 244 SS, 186 242 245 SS | 03.01.01.10.01 | 1065600 | 5823.03 |  | 1065600 | 183 184 242 FS | 1065600 | 2025-12-20T09:00:00.0 | 2025-12-20T09:00:00.0 2025-12-21T09:00:00.0 |
| 2025-12-21T09:00:00.0 | ed | 14276.6 | 14276.6 | 14276.6 | SUM. E INST DE LETRAS METALICAS GRIS MATE GRANDES H=0.35M | 1.4.1.1.1.10.2 | AS_SOON_AS_POSSIBLE |  | 500 | 28800 | 28800 | 2025-12-21T09:00:00.0 | 2025-12-22T09:00:00.0 | 2026-01-27T09:00:00.0 | 2026-01-28T09:00:00.0 | 2 días | 243 |  | 2025-09-16T11:37:00.0 | 1.4.1.1.1.10.2 |  | PRORATED | True | True | 0939e85e-1b93-f011-adcc-c0bfbe9ea20f | True | PRORATED | 28800 | 2025-12-22T09:00:00.0 | 2025-12-21T09:00:00.0 | True | 2025-12-22T09:00:00.0 | True | 14276.6 | 243 |  | 7 | 241 |  | 03.01.01.10.02 | 1065600 | 14276.6 | 1065600 | 1065600 | 184 242 243 FS | 1065600 | 2025-12-21T09:00:00.0 | 2025-12-21T09:00:00.0 2025-12-22T09:00:00.0 |
| 2025-12-20T09:00:00.0 | ed | 10476.6 | 10476.6 | 10476.6 | SUM. E INST DE LETRAS METALICAS GRIS MATE MEDIANAS H=0.18M | 1.4.1.1.1.10.3 | AS_SOON_AS_POSSIBLE |  | 500 | 28800 | 28800 | 2025-12-20T09:00:00.0 | 2025-12-21T09:00:00.0 | 2026-01-27T09:00:00.0 | 2026-01-28T09:00:00.0 | 2 días | 244 |  | 2025-09-16T11:37:00.0 | 1.4.1.1.1.10.3 |  | PRORATED | True | True | 0b39e85e-1b93-f011-adcc-c0bfbe9ea20f | True | PRORATED | 28800 | 2025-12-21T09:00:00.0 | 2025-12-20T09:00:00.0 | True | 2025-12-21T09:00:00.0 | True | 10476.6 | 244 |  | 7 | 241 |  | 03.01.01.10.03 | 1094400 | 10476.6 | 1094400 | 1094400 | 185 242 244 SS | 1094400 | 2025-12-20T09:00:00.0 | 2025-12-20T09:00:00.0 2025-12-21T09:00:00.0 |
| 2025-12-20T09:00:00.0 | ed | 10014.9 | 10014.9 | 10014.9 | SUM. E INST DE LETRAS METALICAS GRIS MATE PEQUEÑAS H=0.10M | 1.4.1.1.1.10.4 | AS_SOON_AS_POSSIBLE |  | 500 | 28800 | 28800 | 2025-12-20T09:00:00.0 | 2025-12-21T09:00:00.0 | 2026-01-27T09:00:00.0 | 2026-01-28T09:00:00.0 | 2 días | 245 |  | 2025-09-16T11:37:00.0 | 1.4.1.1.1.10.4 |  | PRORATED | True | True | 0d39e85e-1b93-f011-adcc-c0bfbe9ea20f | True | PRORATED | 28800 | 2025-12-21T09:00:00.0 | 2025-12-20T09:00:00.0 | True | 2025-12-21T09:00:00.0 | True | 10014.9 | 245 |  | 7 | 241 |  | 03.01.01.10.04 | 1094400 | 10014.9 | 1094400 | 1094400 | 186 242 245 SS | 1094400 | 2025-12-20T09:00:00.0 | 2025-12-20T09:00:00.0 2025-12-21T09:00:00.0 |
| 2026-01-25T09:00:00.0 | ed | 2296.35 | 2296.35 | 2296.35 | SUM. E INST CELOSIA DIVISORIA | 1.4.1.1.1.10.5 | AS_SOON_AS_POSSIBLE | True | 500 | 86400 | 86400 | 2026-01-25T09:00:00.0 | 2026-01-28T09:00:00.0 | 2026-01-25T09:00:00.0 | 2026-01-28T09:00:00.0 | 4 días | 246 |  | 2025-09-16T11:37:00.0 | 1.4.1.1.1.10.5 |  | PRORATED | True | True | 0f39e85e-1b93-f011-adcc-c0bfbe9ea20f | True | PRORATED | 86400 | 2026-01-28T09:00:00.0 | 2026-01-25T09:00:00.0 | True | 2026-01-28T09:00:00.0 | True | 2296.35 | 246 |  | 7 | 241 | 188 246 247 SS | 03.01.01.10.05 |  | 2296.35 |  |  | 187 203 246 FS |  | 2026-01-25T09:00:00.0 | 2026-01-25T09:00:00.0 2026-01-28T09:00:00.0 |
| 2026-01-25T09:00:00.0 | ed | 1297.34 | 1297.34 | 1297.34 | LIMPIEZA FINAL DE OBRA | 1.4.1.1.1.10.6 | AS_SOON_AS_POSSIBLE |  | 500 | 57600 | 57600 | 2026-01-25T09:00:00.0 | 2026-01-27T09:00:00.0 | 2026-01-26T09:00:00.0 | 2026-01-28T09:00:00.0 | 3 días | 247 |  | 2025-09-16T11:37:00.0 | 1.4.1.1.1.10.6 |  | PRORATED | True | True | 1139e85e-1b93-f011-adcc-c0bfbe9ea20f | True | PRORATED | 57600 | 2026-01-27T09:00:00.0 | 2026-01-25T09:00:00.0 | True | 2026-01-27T09:00:00.0 | True | 1297.34 | 247 |  | 7 | 241 |  | 03.01.01.10.06 | 28800 | 1297.34 | 28800 | 28800 | 188 246 247 SS | 28800 | 2026-01-25T09:00:00.0 | 2026-01-25T09:00:00.0 2026-01-27T09:00:00.0 |
| 2026-01-21T09:00:00.0 | ed | 33561.75 | 33561.75 | 33561.75 | EQUIPAMIENTO MOBILIARIO | 1.4.1.1.1.11 | AS_SOON_AS_POSSIBLE | True | 500 | 201600 | 201600 | 2026-01-21T09:00:00.0 | 2026-01-28T09:00:00.0 | 2026-01-21T09:00:00.0 | 2026-01-28T09:00:00.0 | 8 días | 248 | True | 2025-09-16T11:37:00.0 | 1.4.1.1.1.11 | FIXED_DURATION | PRORATED | True | True | 1339e85e-1b93-f011-adcc-c0bfbe9ea20f | True | PRORATED | 201600 | 2026-01-28T09:00:00.0 | 2026-01-21T09:00:00.0 | True | 2026-01-28T09:00:00.0 | True | 33561.75 | 248 | True | 6 | 171 |  | 03.01.01.11 |  |  |  |  |  |  |  |  |
| 2026-01-21T09:00:00.0 | ed | 31071.96 | 31071.96 | 31071.96 | EQUIPAMIENTO | 1.4.1.1.1.11.1 | AS_SOON_AS_POSSIBLE | True | 500 | 201600 | 201600 | 2026-01-21T09:00:00.0 | 2026-01-28T09:00:00.0 | 2026-01-21T09:00:00.0 | 2026-01-28T09:00:00.0 | 8 días | 249 | True | 2025-09-16T11:37:00.0 | 1.4.1.1.1.11.1 | FIXED_DURATION | PRORATED | True | True | 1539e85e-1b93-f011-adcc-c0bfbe9ea20f | True | PRORATED | 201600 | 2026-01-28T09:00:00.0 | 2026-01-21T09:00:00.0 | True | 2026-01-28T09:00:00.0 | True | 31071.96 | 249 | True | 7 | 248 |  | 03.01.01.11.01 |  |  |  |  |  |  |  |  |
| 2026-01-21T09:00:00.0 | ed | 31071.96 | 31071.96 | 31071.96 | SUM.E INST.DE TANQUE DE GLP | 1.4.1.1.1.11.1.1 | AS_SOON_AS_POSSIBLE | True | 500 | 201600 | 201600 | 2026-01-21T09:00:00.0 | 2026-01-28T09:00:00.0 | 2026-01-21T09:00:00.0 | 2026-01-28T09:00:00.0 | 8 días | 250 |  | 2025-09-16T11:37:00.0 | 1.4.1.1.1.11.1.1 |  | PRORATED | True | True | 1739e85e-1b93-f011-adcc-c0bfbe9ea20f | True | PRORATED | 201600 | 2026-01-28T09:00:00.0 | 2026-01-21T09:00:00.0 | True | 2026-01-28T09:00:00.0 | True | 31071.96 | 250 |  | 8 | 249 |  | 03.01.01.11.01.01 |  | 31071.96 |  |  | 465 167 250 -201600 FS |  | 2026-01-21T09:00:00.0 | 2026-01-21T09:00:00.0 2026-01-28T09:00:00.0 |
| 2026-01-25T09:00:00.0 | ed | 2489.79 | 2489.79 | 2489.79 | MOBILIARIO DE AMBIENTE DE CREMACION | 1.4.1.1.1.11.2 | AS_SOON_AS_POSSIBLE | True | 500 | 86400 | 86400 | 2026-01-25T09:00:00.0 | 2026-01-28T09:00:00.0 | 2026-01-25T09:00:00.0 | 2026-01-28T09:00:00.0 | 4 días | 251 | True | 2025-09-16T11:37:00.0 | 1.4.1.1.1.11.2 | FIXED_DURATION | PRORATED | True | True | 1939e85e-1b93-f011-adcc-c0bfbe9ea20f | True | PRORATED | 86400 | 2026-01-28T09:00:00.0 | 2026-01-25T09:00:00.0 | True | 2026-01-28T09:00:00.0 | True | 2489.79 | 251 | True | 7 | 248 |  | 03.01.01.11.02 |  |  |  |  |  |  |  |  |
| 2026-01-25T09:00:00.0 | ed | 2116.52 | 2116.52 | 2116.52 | SUM.E INST. DE MESA DE ACERO INOXIDABLE CON PUERTAS SEGUN DISEÑO INC.ACCESORIOS | 1.4.1.1.1.11.2.1 | AS_SOON_AS_POSSIBLE | True | 500 | 86400 | 86400 | 2026-01-25T09:00:00.0 | 2026-01-28T09:00:00.0 | 2026-01-25T09:00:00.0 | 2026-01-28T09:00:00.0 | 4 días | 252 |  | 2025-09-16T11:37:00.0 | 1.4.1.1.1.11.2.1 |  | PRORATED | True | True | 1b39e85e-1b93-f011-adcc-c0bfbe9ea20f | True | PRORATED | 86400 | 2026-01-28T09:00:00.0 | 2026-01-25T09:00:00.0 | True | 2026-01-28T09:00:00.0 | True | 2116.52 | 252 |  | 8 | 251 | 191 252 253 SS | 03.01.01.11.02.01 |  | 2116.52 |  |  | 190 208 252 FS |  | 2026-01-25T09:00:00.0 | 2026-01-25T09:00:00.0 2026-01-28T09:00:00.0 |
| 2026-01-25T09:00:00.0 | ed | 373.27 | 373.27 | 373.27 | SUM. E INST. DE LAVADERO DE ACERO INOXIDABLE INCL ACCESORIOS | 1.4.1.1.1.11.2.2 | AS_SOON_AS_POSSIBLE | True | 500 | 86400 | 86400 | 2026-01-25T09:00:00.0 | 2026-01-28T09:00:00.0 | 2026-01-25T09:00:00.0 | 2026-01-28T09:00:00.0 | 4 días | 253 |  | 2025-09-16T11:37:00.0 | 1.4.1.1.1.11.2.2 |  | PRORATED | True | True | 1d39e85e-1b93-f011-adcc-c0bfbe9ea20f | True | PRORATED | 86400 | 2026-01-28T09:00:00.0 | 2026-01-25T09:00:00.0 | True | 2026-01-28T09:00:00.0 | True | 373.27 | 253 |  | 8 | 251 |  | 03.01.01.11.02.02 |  | 373.27 |  |  | 191 252 253 SS |  | 2026-01-25T09:00:00.0 | 2026-01-25T09:00:00.0 2026-01-28T09:00:00.0 |
| 2026-01-19T09:00:00.0 | ed | 2530.03 | 2530.03 | 2530.03 | SEGURIDAD Y EVACUACION | 1.4.1.1.1.12 | AS_SOON_AS_POSSIBLE |  | 500 | 57600 | 57600 | 2026-01-19T09:00:00.0 | 2026-01-21T09:00:00.0 | 2026-01-26T09:00:00.0 | 2026-01-28T09:00:00.0 | 3 días | 254 | True | 2025-09-16T11:37:00.0 | 1.4.1.1.1.12 | FIXED_DURATION | PRORATED | True | True | 1f39e85e-1b93-f011-adcc-c0bfbe9ea20f | True | PRORATED | 57600 | 2026-01-21T09:00:00.0 | 2026-01-19T09:00:00.0 | True | 2026-01-21T09:00:00.0 | True | 2530.03 | 254 | True | 6 | 171 |  | 03.01.01.12 | 201600 |  | 201600 | 201600 |  | 201600 |  |  |
| 2026-01-19T09:00:00.0 | ed | 47.63 | 47.63 | 47.63 | ADQUISION DE ALARMAS SONORA | 1.4.1.1.1.12.1 | AS_SOON_AS_POSSIBLE |  | 500 | 28800 | 28800 | 2026-01-19T09:00:00.0 | 2026-01-20T09:00:00.0 | 2026-01-27T09:00:00.0 | 2026-01-28T09:00:00.0 | 2 días | 255 | True | 2025-09-16T11:37:00.0 | 1.4.1.1.1.12.1 | FIXED_DURATION | PRORATED | True | True | 2139e85e-1b93-f011-adcc-c0bfbe9ea20f | True | PRORATED | 28800 | 2026-01-20T09:00:00.0 | 2026-01-19T09:00:00.0 | True | 2026-01-20T09:00:00.0 | True | 47.63 | 255 | True | 7 | 254 |  | 03.01.01.12.01 | 230400 |  | 230400 | 230400 |  | 230400 |  |  |
| 2026-01-19T09:00:00.0 | ed | 47.63 | 47.63 | 47.63 | SUM. E INST. DE SISTEMA DE ALARMA SONORA | 1.4.1.1.1.12.1.1 | AS_SOON_AS_POSSIBLE |  | 500 | 28800 | 28800 | 2026-01-19T09:00:00.0 | 2026-01-20T09:00:00.0 | 2026-01-27T09:00:00.0 | 2026-01-28T09:00:00.0 | 2 días | 256 |  | 2025-09-16T11:37:00.0 | 1.4.1.1.1.12.1.1 |  | PRORATED | True | True | 2339e85e-1b93-f011-adcc-c0bfbe9ea20f | True | PRORATED | 28800 | 2026-01-20T09:00:00.0 | 2026-01-19T09:00:00.0 | True | 2026-01-20T09:00:00.0 | True | 47.63 | 256 |  | 8 | 255 |  | 03.01.01.12.01.01 | 230400 | 47.63 | 230400 | 230400 | 192 239 256 FS | 230400 | 2026-01-19T09:00:00.0 | 2026-01-19T09:00:00.0 2026-01-20T09:00:00.0 |
| 2026-01-20T09:00:00.0 | ed | 2042.66 | 2042.66 | 2042.66 | ADQUISICION DE EXTINTORES | 1.4.1.1.1.12.2 | AS_SOON_AS_POSSIBLE |  | 500 | 28800 | 28800 | 2026-01-20T09:00:00.0 | 2026-01-21T09:00:00.0 | 2026-01-27T09:00:00.0 | 2026-01-28T09:00:00.0 | 2 días | 257 | True | 2025-09-16T11:37:00.0 | 1.4.1.1.1.12.2 | FIXED_DURATION | PRORATED | True | True | 2539e85e-1b93-f011-adcc-c0bfbe9ea20f | True | PRORATED | 28800 | 2026-01-21T09:00:00.0 | 2026-01-20T09:00:00.0 | True | 2026-01-21T09:00:00.0 | True | 2042.66 | 257 | True | 7 | 254 |  | 03.01.01.12.02 | 201600 |  | 201600 | 201600 |  | 201600 |  |  |
| 2026-01-20T09:00:00.0 | ed | 257.43 | 257.43 | 257.43 | SUM. DE EXTINTOR FR POLVO QUIMICO | 1.4.1.1.1.12.2.1 | AS_SOON_AS_POSSIBLE |  | 500 | 28800 | 28800 | 2026-01-20T09:00:00.0 | 2026-01-21T09:00:00.0 | 2026-01-27T09:00:00.0 | 2026-01-28T09:00:00.0 | 2 días | 258 |  | 2025-09-16T11:37:00.0 | 1.4.1.1.1.12.2.1 |  | PRORATED | True | True | 2739e85e-1b93-f011-adcc-c0bfbe9ea20f | True | PRORATED | 28800 | 2026-01-21T09:00:00.0 | 2026-01-20T09:00:00.0 | True | 2026-01-21T09:00:00.0 | True | 257.43 | 258 |  | 8 | 257 | 194 258 259 SS | 03.01.01.12.02.01 | 201600 | 257.43 |  | 201600 | 193 262 258 FS | 201600 | 2026-01-20T09:00:00.0 | 2026-01-20T09:00:00.0 2026-01-21T09:00:00.0 |
| 2026-01-20T09:00:00.0 | ed | 867.21 | 867.21 | 867.21 | SUM. DE EXTINTOR DE ESPUMA | 1.4.1.1.1.12.2.2 | AS_SOON_AS_POSSIBLE |  | 500 | 28800 | 28800 | 2026-01-20T09:00:00.0 | 2026-01-21T09:00:00.0 | 2026-01-27T09:00:00.0 | 2026-01-28T09:00:00.0 | 2 días | 259 |  | 2025-09-16T11:37:00.0 | 1.4.1.1.1.12.2.2 |  | PRORATED | True | True | 2939e85e-1b93-f011-adcc-c0bfbe9ea20f | True | PRORATED | 28800 | 2026-01-21T09:00:00.0 | 2026-01-20T09:00:00.0 | True | 2026-01-21T09:00:00.0 | True | 867.21 | 259 |  | 8 | 257 | 195 259 260 SS | 03.01.01.12.02.02 | 201600 | 867.21 |  | 201600 | 194 258 259 SS | 201600 | 2026-01-20T09:00:00.0 | 2026-01-20T09:00:00.0 2026-01-21T09:00:00.0 |
| 2026-01-20T09:00:00.0 | ed | 918.02 | 918.02 | 918.02 | SUM. DE EXTINTOR DE GAS CARBONICO | 1.4.1.1.1.12.2.3 | AS_SOON_AS_POSSIBLE |  | 500 | 28800 | 28800 | 2026-01-20T09:00:00.0 | 2026-01-21T09:00:00.0 | 2026-01-27T09:00:00.0 | 2026-01-28T09:00:00.0 | 2 días | 260 |  | 2025-09-16T11:37:00.0 | 1.4.1.1.1.12.2.3 |  | PRORATED | True | True | 2b39e85e-1b93-f011-adcc-c0bfbe9ea20f | True | PRORATED | 28800 | 2026-01-21T09:00:00.0 | 2026-01-20T09:00:00.0 | True | 2026-01-21T09:00:00.0 | True | 918.02 | 260 |  | 8 | 257 |  | 03.01.01.12.02.03 | 201600 | 918.02 | 201600 | 201600 | 195 259 260 SS | 201600 | 2026-01-20T09:00:00.0 | 2026-01-20T09:00:00.0 2026-01-21T09:00:00.0 |
| 2026-01-19T09:00:00.0 | ed | 439.74 | 439.74 | 439.74 | ADQUISICION DE SEÑALIZACION | 1.4.1.1.1.12.3 | AS_SOON_AS_POSSIBLE |  | 500 | 28800 | 28800 | 2026-01-19T09:00:00.0 | 2026-01-20T09:00:00.0 | 2026-01-26T09:00:00.0 | 2026-01-28T09:00:00.0 | 2 días | 261 | True | 2025-09-16T11:37:00.0 | 1.4.1.1.1.12.3 | FIXED_DURATION | PRORATED | True | True | e4b6e764-1b93-f011-adcc-c0bfbe9ea20f | True | PRORATED | 28800 | 2026-01-20T09:00:00.0 | 2026-01-19T09:00:00.0 | True | 2026-01-20T09:00:00.0 | True | 439.74 | 261 | True | 7 | 254 |  | 03.01.01.12.03 | 230400 |  | 201600 | 201600 |  | 201600 |  |  |
| 2026-01-19T09:00:00.0 | ed | 36.9 | 36.9 | 36.9 | SUM. E INST. DE SEÑALIZACION DE RIESGO ELECTRICO DE MATERIAL PVC(AUTOADHESIVO 0.20X0.30) | 1.4.1.1.1.12.3.1 | AS_SOON_AS_POSSIBLE |  | 500 | 28800 | 28800 | 2026-01-19T09:00:00.0 | 2026-01-20T09:00:00.0 | 2026-01-26T09:00:00.0 | 2026-01-27T09:00:00.0 | 2 días | 262 |  | 2025-09-16T11:37:00.0 | 1.4.1.1.1.12.3.1 |  | PRORATED | True | True | e6b6e764-1b93-f011-adcc-c0bfbe9ea20f | True | PRORATED | 28800 | 2026-01-20T09:00:00.0 | 2026-01-19T09:00:00.0 | True | 2026-01-20T09:00:00.0 | True | 36.9 | 262 |  | 8 | 261 | 193 262 258 FS, 197 262 263 SS, 198 262 264 SS, 199 262 265 SS, 200 262 266 SS, 201 262 267 SS, 202 262 268 SS, 203 262 269 SS, 204 262 270 SS, 205 262 271 SS, 206 262 272 SS, 207 262 273 SS, 208 262 274 SS, 209 262 275 SS, 210 262 276 SS, 211 262 277 SS, 212 262 278 SS, 213 262 279 SS | 03.01.01.12.03.01 | 201600 | 36.9 |  | 201600 | 196 239 262 FS | 201600 | 2026-01-19T09:00:00.0 | 2026-01-19T09:00:00.0 2026-01-20T09:00:00.0 |
| 2026-01-19T09:00:00.0 | ed | 7.38 | 7.38 | 7.38 | SUM. E INST. DE SEÑALIZACION DE POZO TIERRA DE MATERIAL PVC(AUTOADHESIVO 0.20X0.30) | 1.4.1.1.1.12.3.2 | AS_SOON_AS_POSSIBLE |  | 500 | 28800 | 28800 | 2026-01-19T09:00:00.0 | 2026-01-20T09:00:00.0 | 2026-01-27T09:00:00.0 | 2026-01-28T09:00:00.0 | 2 días | 263 |  | 2025-09-16T11:37:00.0 | 1.4.1.1.1.12.3.2 |  | PRORATED | True | True | e8b6e764-1b93-f011-adcc-c0bfbe9ea20f | True | PRORATED | 28800 | 2026-01-20T09:00:00.0 | 2026-01-19T09:00:00.0 | True | 2026-01-20T09:00:00.0 | True | 7.38 | 263 |  | 8 | 261 |  | 03.01.01.12.03.02 | 230400 | 7.38 | 230400 | 230400 | 197 262 263 SS | 230400 | 2026-01-19T09:00:00.0 | 2026-01-19T09:00:00.0 2026-01-20T09:00:00.0 |
| 2026-01-19T09:00:00.0 | ed | 29.52 | 29.52 | 29.52 | SUM. E INST. DE SEÑALIZACION DE AVISADOR SONORO DE MATERIAL PVC(AUTOADHESIVO 0.20X0.30) | 1.4.1.1.1.12.3.3 | AS_SOON_AS_POSSIBLE |  | 500 | 28800 | 28800 | 2026-01-19T09:00:00.0 | 2026-01-20T09:00:00.0 | 2026-01-27T09:00:00.0 | 2026-01-28T09:00:00.0 | 2 días | 264 |  | 2025-09-16T11:37:00.0 | 1.4.1.1.1.12.3.3 |  | PRORATED | True | True | eab6e764-1b93-f011-adcc-c0bfbe9ea20f | True | PRORATED | 28800 | 2026-01-20T09:00:00.0 | 2026-01-19T09:00:00.0 | True | 2026-01-20T09:00:00.0 | True | 29.52 | 264 |  | 8 | 261 |  | 03.01.01.12.03.03 | 230400 | 29.52 | 230400 | 230400 | 198 262 264 SS | 230400 | 2026-01-19T09:00:00.0 | 2026-01-19T09:00:00.0 2026-01-20T09:00:00.0 |
| 2026-01-19T09:00:00.0 | ed | 22.14 | 22.14 | 22.14 | SUM. E INST. DE SEÑALIZACION DE SALIDA DE MATERIAL PVC(AUTOADHESIVO 0.20X0.30) | 1.4.1.1.1.12.3.4 | AS_SOON_AS_POSSIBLE |  | 500 | 28800 | 28800 | 2026-01-19T09:00:00.0 | 2026-01-20T09:00:00.0 | 2026-01-27T09:00:00.0 | 2026-01-28T09:00:00.0 | 2 días | 265 |  | 2025-09-16T11:37:00.0 | 1.4.1.1.1.12.3.4 |  | PRORATED | True | True | ecb6e764-1b93-f011-adcc-c0bfbe9ea20f | True | PRORATED | 28800 | 2026-01-20T09:00:00.0 | 2026-01-19T09:00:00.0 | True | 2026-01-20T09:00:00.0 | True | 22.14 | 265 |  | 8 | 261 |  | 03.01.01.12.03.04 | 230400 | 22.14 | 230400 | 230400 | 199 262 265 SS | 230400 | 2026-01-19T09:00:00.0 | 2026-01-19T09:00:00.0 2026-01-20T09:00:00.0 |
| 2026-01-19T09:00:00.0 | ed | 22.14 | 22.14 | 22.14 | SUM. E INST. DE SEÑALIZACION DE RUTA DE EVACUACION DE "SALIDA A LA IZQUIERDA" DE MATERIAL PVC(AUTOADHESIVO 0.20X0.30) | 1.4.1.1.1.12.3.5 | AS_SOON_AS_POSSIBLE |  | 500 | 28800 | 28800 | 2026-01-19T09:00:00.0 | 2026-01-20T09:00:00.0 | 2026-01-27T09:00:00.0 | 2026-01-28T09:00:00.0 | 2 días | 266 |  | 2025-09-16T11:37:00.0 | 1.4.1.1.1.12.3.5 |  | PRORATED | True | True | eeb6e764-1b93-f011-adcc-c0bfbe9ea20f | True | PRORATED | 28800 | 2026-01-20T09:00:00.0 | 2026-01-19T09:00:00.0 | True | 2026-01-20T09:00:00.0 | True | 22.14 | 266 |  | 8 | 261 |  | 03.01.01.12.03.05 | 230400 | 22.14 | 230400 | 230400 | 200 262 266 SS | 230400 | 2026-01-19T09:00:00.0 | 2026-01-19T09:00:00.0 2026-01-20T09:00:00.0 |
| 2026-01-19T09:00:00.0 | ed | 14.76 | 14.76 | 14.76 | SUM. E INST. DE SEÑALIZACION DE RUTA DE EVACUACION DE "SALIDA A LA DERECHA" DE MATERIAL PVC(AUTOADHESIVO 0.20X0.30) | 1.4.1.1.1.12.3.6 | AS_SOON_AS_POSSIBLE |  | 500 | 28800 | 28800 | 2026-01-19T09:00:00.0 | 2026-01-20T09:00:00.0 | 2026-01-27T09:00:00.0 | 2026-01-28T09:00:00.0 | 2 días | 267 |  | 2025-09-16T11:37:00.0 | 1.4.1.1.1.12.3.6 |  | PRORATED | True | True | f0b6e764-1b93-f011-adcc-c0bfbe9ea20f | True | PRORATED | 28800 | 2026-01-20T09:00:00.0 | 2026-01-19T09:00:00.0 | True | 2026-01-20T09:00:00.0 | True | 14.76 | 267 |  | 8 | 261 |  | 03.01.01.12.03.06 | 230400 | 14.76 | 230400 | 230400 | 201 262 267 SS | 230400 | 2026-01-19T09:00:00.0 | 2026-01-19T09:00:00.0 2026-01-20T09:00:00.0 |
| 2026-01-19T09:00:00.0 | ed | 29.52 | 29.52 | 29.52 | SUM. E INST. DE SEÑALIZACION DEPULSADOR DE ALARMA (AUTOADHESIVO 0.20X0.30) | 1.4.1.1.1.12.3.7 | AS_SOON_AS_POSSIBLE |  | 500 | 28800 | 28800 | 2026-01-19T09:00:00.0 | 2026-01-20T09:00:00.0 | 2026-01-27T09:00:00.0 | 2026-01-28T09:00:00.0 | 2 días | 268 |  | 2025-09-16T11:37:00.0 | 1.4.1.1.1.12.3.7 |  | PRORATED | True | True | f2b6e764-1b93-f011-adcc-c0bfbe9ea20f | True | PRORATED | 28800 | 2026-01-20T09:00:00.0 | 2026-01-19T09:00:00.0 | True | 2026-01-20T09:00:00.0 | True | 29.52 | 268 |  | 8 | 261 |  | 03.01.01.12.03.07 | 230400 | 29.52 | 230400 | 230400 | 202 262 268 SS | 230400 | 2026-01-19T09:00:00.0 | 2026-01-19T09:00:00.0 2026-01-20T09:00:00.0 |
| 2026-01-19T09:00:00.0 | ed | 14.76 | 14.76 | 14.76 | SUM. E INST. DE SEÑALIZACION DE UBICACION DE EXTINTOR DE POLVO QUIMICO(AUTOADHESIVO 0.20X0.30) | 1.4.1.1.1.12.3.8 | AS_SOON_AS_POSSIBLE |  | 500 | 28800 | 28800 | 2026-01-19T09:00:00.0 | 2026-01-20T09:00:00.0 | 2026-01-27T09:00:00.0 | 2026-01-28T09:00:00.0 | 2 días | 269 |  | 2025-09-16T11:37:00.0 | 1.4.1.1.1.12.3.8 |  | PRORATED | True | True | f4b6e764-1b93-f011-adcc-c0bfbe9ea20f | True | PRORATED | 28800 | 2026-01-20T09:00:00.0 | 2026-01-19T09:00:00.0 | True | 2026-01-20T09:00:00.0 | True | 14.76 | 269 |  | 8 | 261 |  | 03.01.01.12.03.08 | 230400 | 14.76 | 230400 | 230400 | 203 262 269 SS | 230400 | 2026-01-19T09:00:00.0 | 2026-01-19T09:00:00.0 2026-01-20T09:00:00.0 |
| 2026-01-19T09:00:00.0 | ed | 7.38 | 7.38 | 7.38 | SUM. E INST. DE SEÑALIZACION DE UBICACION DE EXTINTOR DE ESPUMA (AUTOADHESIVO 0.20X0.30) | 1.4.1.1.1.12.3.9 | AS_SOON_AS_POSSIBLE |  | 500 | 28800 | 28800 | 2026-01-19T09:00:00.0 | 2026-01-20T09:00:00.0 | 2026-01-27T09:00:00.0 | 2026-01-28T09:00:00.0 | 2 días | 270 |  | 2025-09-16T11:37:00.0 | 1.4.1.1.1.12.3.9 |  | PRORATED | True | True | f6b6e764-1b93-f011-adcc-c0bfbe9ea20f | True | PRORATED | 28800 | 2026-01-20T09:00:00.0 | 2026-01-19T09:00:00.0 | True | 2026-01-20T09:00:00.0 | True | 7.38 | 270 |  | 8 | 261 |  | 03.01.01.12.03.09 | 230400 | 7.38 | 230400 | 230400 | 204 262 270 SS | 230400 | 2026-01-19T09:00:00.0 | 2026-01-19T09:00:00.0 2026-01-20T09:00:00.0 |
| 2026-01-19T09:00:00.0 | ed | 22.14 | 22.14 | 22.14 | SUM. E INST. DE SEÑALIZACION DE UBICACION DE EXTINTOR DE GAS CARBONICO (AUTOADHESIVO 0.20X0.30) | 1.4.1.1.1.12.3.10 | AS_SOON_AS_POSSIBLE |  | 500 | 28800 | 28800 | 2026-01-19T09:00:00.0 | 2026-01-20T09:00:00.0 | 2026-01-27T09:00:00.0 | 2026-01-28T09:00:00.0 | 2 días | 271 |  | 2025-09-16T11:37:00.0 | 1.4.1.1.1.12.3.10 |  | PRORATED | True | True | f8b6e764-1b93-f011-adcc-c0bfbe9ea20f | True | PRORATED | 28800 | 2026-01-20T09:00:00.0 | 2026-01-19T09:00:00.0 | True | 2026-01-20T09:00:00.0 | True | 22.14 | 271 |  | 8 | 261 |  | 03.01.01.12.03.10 | 230400 | 22.14 | 230400 | 230400 | 205 262 271 SS | 230400 | 2026-01-19T09:00:00.0 | 2026-01-19T09:00:00.0 2026-01-20T09:00:00.0 |
| 2026-01-19T09:00:00.0 | ed | 7.38 | 7.38 | 7.38 | SUM. E INST. DE SEÑALIZACION DE BOTIQUIN DE PRIMEROS AUXILIOS DE MATERIAL PVC (AUTOADHESIVO 0.20X0.30) | 1.4.1.1.1.12.3.11 | AS_SOON_AS_POSSIBLE |  | 500 | 28800 | 28800 | 2026-01-19T09:00:00.0 | 2026-01-20T09:00:00.0 | 2026-01-27T09:00:00.0 | 2026-01-28T09:00:00.0 | 2 días | 272 |  | 2025-09-16T11:37:00.0 | 1.4.1.1.1.12.3.11 |  | PRORATED | True | True | fab6e764-1b93-f011-adcc-c0bfbe9ea20f | True | PRORATED | 28800 | 2026-01-20T09:00:00.0 | 2026-01-19T09:00:00.0 | True | 2026-01-20T09:00:00.0 | True | 7.38 | 272 |  | 8 | 261 |  | 03.01.01.12.03.11 | 230400 | 7.38 | 230400 | 230400 | 206 262 272 SS | 230400 | 2026-01-19T09:00:00.0 | 2026-01-19T09:00:00.0 2026-01-20T09:00:00.0 |
| 2026-01-19T09:00:00.0 | ed | 29.52 | 29.52 | 29.52 | SUM. E INST. DE SEÑALIZACION DE AREA RESTRINGIDA DE MATERIAL PVC (AUTOADHESIVO 0.20X0.30) | 1.4.1.1.1.12.3.12 | AS_SOON_AS_POSSIBLE |  | 500 | 28800 | 28800 | 2026-01-19T09:00:00.0 | 2026-01-20T09:00:00.0 | 2026-01-27T09:00:00.0 | 2026-01-28T09:00:00.0 | 2 días | 273 |  | 2025-09-16T11:37:00.0 | 1.4.1.1.1.12.3.12 |  | PRORATED | True | True | fcb6e764-1b93-f011-adcc-c0bfbe9ea20f | True | PRORATED | 28800 | 2026-01-20T09:00:00.0 | 2026-01-19T09:00:00.0 | True | 2026-01-20T09:00:00.0 | True | 29.52 | 273 |  | 8 | 261 |  | 03.01.01.12.03.12 | 230400 | 29.52 | 230400 | 230400 | 207 262 273 SS | 230400 | 2026-01-19T09:00:00.0 | 2026-01-19T09:00:00.0 2026-01-20T09:00:00.0 |
| 2026-01-19T09:00:00.0 | ed | 51.66 | 51.66 | 51.66 | SUM. E INST. DE SEÑALIZACION DE LUZ DE EMERGENCIA CONECTADA A CIRCUITO DE MATERIAL PVC (AUTOADHESIVO 0.20X0.30) | 1.4.1.1.1.12.3.13 | AS_SOON_AS_POSSIBLE |  | 500 | 28800 | 28800 | 2026-01-19T09:00:00.0 | 2026-01-20T09:00:00.0 | 2026-01-27T09:00:00.0 | 2026-01-28T09:00:00.0 | 2 días | 274 |  | 2025-09-16T11:37:00.0 | 1.4.1.1.1.12.3.13 |  | PRORATED | True | True | feb6e764-1b93-f011-adcc-c0bfbe9ea20f | True | PRORATED | 28800 | 2026-01-20T09:00:00.0 | 2026-01-19T09:00:00.0 | True | 2026-01-20T09:00:00.0 | True | 51.66 | 274 |  | 8 | 261 |  | 03.01.01.12.03.13 | 230400 | 51.66 | 230400 | 230400 | 208 262 274 SS | 230400 | 2026-01-19T09:00:00.0 | 2026-01-19T09:00:00.0 2026-01-20T09:00:00.0 |
| 2026-01-19T09:00:00.0 | ed | 12.24 | 12.24 | 12.24 | SUM. E INST. DE SEÑALIZACION DE CENTRAL DE ALARMA CONTRA INCENDIO DE MATERIAL PVC(AUTOADHESIVO 0.20X0.30) | 1.4.1.1.1.12.3.14 | AS_SOON_AS_POSSIBLE |  | 500 | 28800 | 28800 | 2026-01-19T09:00:00.0 | 2026-01-20T09:00:00.0 | 2026-01-27T09:00:00.0 | 2026-01-28T09:00:00.0 | 2 días | 275 |  | 2025-09-16T11:37:00.0 | 1.4.1.1.1.12.3.14 |  | PRORATED | True | True | 00b7e764-1b93-f011-adcc-c0bfbe9ea20f | True | PRORATED | 28800 | 2026-01-20T09:00:00.0 | 2026-01-19T09:00:00.0 | True | 2026-01-20T09:00:00.0 | True | 12.24 | 275 |  | 8 | 261 |  | 03.01.01.12.03.14 | 230400 | 12.24 | 230400 | 230400 | 209 262 275 SS | 230400 | 2026-01-19T09:00:00.0 | 2026-01-19T09:00:00.0 2026-01-20T09:00:00.0 |
| 2026-01-19T09:00:00.0 | ed | 48.96 | 48.96 | 48.96 | SUM. E INST. DE SEÑALIZACION DE DETECTOR DE TEMPERATURA | 1.4.1.1.1.12.3.15 | AS_SOON_AS_POSSIBLE |  | 500 | 28800 | 28800 | 2026-01-19T09:00:00.0 | 2026-01-20T09:00:00.0 | 2026-01-27T09:00:00.0 | 2026-01-28T09:00:00.0 | 2 días | 276 |  | 2025-09-16T11:37:00.0 | 1.4.1.1.1.12.3.15 |  | PRORATED | True | True | 02b7e764-1b93-f011-adcc-c0bfbe9ea20f | True | PRORATED | 28800 | 2026-01-20T09:00:00.0 | 2026-01-19T09:00:00.0 | True | 2026-01-20T09:00:00.0 | True | 48.96 | 276 |  | 8 | 261 |  | 03.01.01.12.03.15 | 230400 | 48.96 | 230400 | 230400 | 210 262 276 SS | 230400 | 2026-01-19T09:00:00.0 | 2026-01-19T09:00:00.0 2026-01-20T09:00:00.0 |
| 2026-01-19T09:00:00.0 | ed | 61.2 | 61.2 | 61.2 | SUM. E INST. DE SEÑALIZACION DE DETECTOR DE HUMO | 1.4.1.1.1.12.3.16 | AS_SOON_AS_POSSIBLE |  | 500 | 28800 | 28800 | 2026-01-19T09:00:00.0 | 2026-01-20T09:00:00.0 | 2026-01-27T09:00:00.0 | 2026-01-28T09:00:00.0 | 2 días | 277 |  | 2025-09-16T11:37:00.0 | 1.4.1.1.1.12.3.16 |  | PRORATED | True | True | 04b7e764-1b93-f011-adcc-c0bfbe9ea20f | True | PRORATED | 28800 | 2026-01-20T09:00:00.0 | 2026-01-19T09:00:00.0 | True | 2026-01-20T09:00:00.0 | True | 61.2 | 277 |  | 8 | 261 |  | 03.01.01.12.03.16 | 230400 | 61.2 | 230400 | 230400 | 211 262 277 SS | 230400 | 2026-01-19T09:00:00.0 | 2026-01-19T09:00:00.0 2026-01-20T09:00:00.0 |
| 2026-01-19T09:00:00.0 | ed | 7.38 | 7.38 | 7.38 | SUM. E INST. DE SEÑALIZACION DE LETRERO DE CAPACIDAD DE AFORO DE MATERIAL PVC AUTOADHESIVO | 1.4.1.1.1.12.3.17 | AS_SOON_AS_POSSIBLE |  | 500 | 28800 | 28800 | 2026-01-19T09:00:00.0 | 2026-01-20T09:00:00.0 | 2026-01-27T09:00:00.0 | 2026-01-28T09:00:00.0 | 2 días | 278 |  | 2025-09-16T11:37:00.0 | 1.4.1.1.1.12.3.17 |  | PRORATED | True | True | 06b7e764-1b93-f011-adcc-c0bfbe9ea20f | True | PRORATED | 28800 | 2026-01-20T09:00:00.0 | 2026-01-19T09:00:00.0 | True | 2026-01-20T09:00:00.0 | True | 7.38 | 278 |  | 8 | 261 |  | 03.01.01.12.03.17 | 230400 | 7.38 | 230400 | 230400 | 212 262 278 SS | 230400 | 2026-01-19T09:00:00.0 | 2026-01-19T09:00:00.0 2026-01-20T09:00:00.0 |
| 2026-01-19T09:00:00.0 | ed | 14.76 | 14.76 | 14.76 | SUM. E INST. DE SEÑALIZACION DE BAÑOS DE MATERIAL DE PVC AUTOADHESIVO (0.20X0.30M) | 1.4.1.1.1.12.3.18 | AS_SOON_AS_POSSIBLE |  | 500 | 28800 | 28800 | 2026-01-19T09:00:00.0 | 2026-01-20T09:00:00.0 | 2026-01-27T09:00:00.0 | 2026-01-28T09:00:00.0 | 2 días | 279 |  | 2025-09-16T11:37:00.0 | 1.4.1.1.1.12.3.18 |  | PRORATED | True | True | 08b7e764-1b93-f011-adcc-c0bfbe9ea20f | True | PRORATED | 28800 | 2026-01-20T09:00:00.0 | 2026-01-19T09:00:00.0 | True | 2026-01-20T09:00:00.0 | True | 14.76 | 279 |  | 8 | 261 |  | 03.01.01.12.03.18 | 230400 | 14.76 | 230400 | 230400 | 213 262 279 SS | 230400 | 2026-01-19T09:00:00.0 | 2026-01-19T09:00:00.0 2026-01-20T09:00:00.0 |

| start | leveling_delay_units | cost | cost_variance | remaining_cost | name | wbs | constraint_type | critical | priority | duration | remaining_duration | early_start | early_finish | late_start | late_finish | text2 | unique_id | summary | created | outline_number | type | fixed_cost_accrual | leveling_can_split | level_assignments | guid | active | baseline_fixed_cost_accrual | scheduled_duration | scheduled_finish | scheduled_start | recalc_outline_codes | finish | auto_compute_actuals | remaining_regular_cost | id | rollup | outline_level | parent_task_unique_id | successors | text1 | finish_slack | fixed_cost | free_slack | total_slack | predecessors | start_slack | summary_progress | work_splits |
| --- | --- | --- | --- | --- | --- | --- | --- | --- | --- | --- | --- | --- | --- | --- | --- | --- | --- | --- | --- | --- | --- | --- | --- | --- | --- | --- | --- | --- | --- | --- | --- | --- | --- | --- | --- | --- | --- | --- | --- | --- | --- | --- | --- | --- | --- | --- | --- | --- |
| 2025-10-24T09:00:00.0 | ed | 43461.65 | 43461.65 | 43461.65 | VELATORIO | 1.4.1.1.2 | AS_SOON_AS_POSSIBLE |  | 500 | 1699200 | 1699200 | 2025-10-24T09:00:00.0 | 2025-12-22T09:00:00.0 | 2025-11-30T09:00:00.0 | 2026-01-28T09:00:00.0 | 60 días | 280 | True | 2025-09-16T11:37:00.0 | 1.4.1.1.2 | FIXED_DURATION | PRORATED | True | True | 0ab7e764-1b93-f011-adcc-c0bfbe9ea20f | True | PRORATED | 1699200 | 2025-12-22T09:00:00.0 | 2025-10-24T09:00:00.0 | True | 2025-12-22T09:00:00.0 | True | 43461.65 | 280 | True | 5 | 170 |  | 03.01.02 | 1065600 |  | 1065600 | 1065600 |  | 1065600 |  |  |
| 2025-10-24T09:00:00.0 | ed | 2475.32 | 2475.32 | 2475.32 | MUROS Y TABIQUES DE ALBALIÑERIA | 1.4.1.1.2.1 | AS_SOON_AS_POSSIBLE |  | 500 | 230400 | 230400 | 2025-10-24T09:00:00.0 | 2025-11-01T09:00:00.0 | 2025-11-30T09:00:00.0 | 2025-12-08T09:00:00.0 | 9 días | 281 | True | 2025-09-16T11:37:00.0 | 1.4.1.1.2.1 | FIXED_DURATION | PRORATED | True | True | 0cb7e764-1b93-f011-adcc-c0bfbe9ea20f | True | PRORATED | 230400 | 2025-11-01T09:00:00.0 | 2025-10-24T09:00:00.0 | True | 2025-11-01T09:00:00.0 | True | 2475.32 | 281 | True | 6 | 280 |  | 03.01.02.01 | 1065600 |  | 1065600 | 1065600 |  | 1065600 |  |  |
| 2025-10-24T09:00:00.0 | ed | 2475.32 | 2475.32 | 2475.32 | MURO DE SOGA LADRILLO KING KONG TIPO IV | 1.4.1.1.2.1.1 | AS_SOON_AS_POSSIBLE |  | 500 | 230400 | 230400 | 2025-10-24T09:00:00.0 | 2025-11-01T09:00:00.0 | 2025-11-30T09:00:00.0 | 2025-12-08T09:00:00.0 | 9 días | 282 |  | 2025-09-16T11:37:00.0 | 1.4.1.1.2.1.1 |  | PRORATED | True | True | 0eb7e764-1b93-f011-adcc-c0bfbe9ea20f | True | PRORATED | 230400 | 2025-11-01T09:00:00.0 | 2025-10-24T09:00:00.0 | True | 2025-11-01T09:00:00.0 | True | 2475.32 | 282 |  | 7 | 281 | 99 282 135 FS | 03.01.02.01.01 | 1065600 | 2475.32 |  | 1065600 | 461 121 282 FS | 1065600 | 2025-10-24T09:00:00.0 | 2025-10-24T09:00:00.0 2025-11-01T09:00:00.0 |
| 2025-11-06T09:00:00.0 | ed | 3082.76 | 3082.76 | 3082.76 | REVOQUES Y REVESTIMIENTOS | 1.4.1.1.2.2 | AS_SOON_AS_POSSIBLE |  | 500 | 345600 | 345600 | 2025-11-06T09:00:00.0 | 2025-11-18T09:00:00.0 | 2025-12-13T09:00:00.0 | 2026-01-28T09:00:00.0 | 13 días | 283 | True | 2025-09-16T11:37:00.0 | 1.4.1.1.2.2 | FIXED_DURATION | PRORATED | True | True | 10b7e764-1b93-f011-adcc-c0bfbe9ea20f | True | PRORATED | 345600 | 2025-11-18T09:00:00.0 | 2025-11-06T09:00:00.0 | True | 2025-11-18T09:00:00.0 | True | 3082.76 | 283 | True | 6 | 280 |  | 03.01.02.02 | 2044800 |  | 1065600 | 1065600 |  | 1065600 |  |  |
| 2025-11-06T09:00:00.0 | ed | 1110.39 | 1110.39 | 1110.39 | PREPARACION DE SUPERFICIE | 1.4.1.1.2.2.1 | AS_SOON_AS_POSSIBLE |  | 500 | 57600 | 57600 | 2025-11-06T09:00:00.0 | 2025-11-08T09:00:00.0 | 2025-12-13T09:00:00.0 | 2025-12-15T09:00:00.0 | 3 días | 284 |  | 2025-09-16T11:37:00.0 | 1.4.1.1.2.2.1 |  | PRORATED | True | True | 12b7e764-1b93-f011-adcc-c0bfbe9ea20f | True | PRORATED | 57600 | 2025-11-08T09:00:00.0 | 2025-11-06T09:00:00.0 | True | 2025-11-08T09:00:00.0 | True | 1110.39 | 284 |  | 7 | 283 | 216 284 285 FS, 220 284 290 FS | 03.01.02.02.01 | 1065600 | 1110.39 |  | 1065600 | 215 134 284 FS | 1065600 | 2025-11-06T09:00:00.0 | 2025-11-06T09:00:00.0 2025-11-08T09:00:00.0 |
| 2025-11-08T09:00:00.0 | ed | 897.9 | 897.9 | 897.9 | TARRAJEO EN INTERIORES C/A 1:5 e=1.50cm | 1.4.1.1.2.2.2 | AS_SOON_AS_POSSIBLE |  | 500 | 115200 | 115200 | 2025-11-08T09:00:00.0 | 2025-11-12T09:00:00.0 | 2025-12-15T09:00:00.0 | 2025-12-19T09:00:00.0 | 5 días | 285 |  | 2025-09-16T11:37:00.0 | 1.4.1.1.2.2.2 |  | PRORATED | True | True | 14b7e764-1b93-f011-adcc-c0bfbe9ea20f | True | PRORATED | 115200 | 2025-11-12T09:00:00.0 | 2025-11-08T09:00:00.0 | True | 2025-11-12T09:00:00.0 | True | 897.9 | 285 |  | 7 | 283 | 101 285 138 FS, 217 285 286 FS, 225 285 298 FS | 03.01.02.02.02 | 1065600 | 897.9 |  | 1065600 | 216 284 285 FS | 1065600 | 2025-11-08T09:00:00.0 | 2025-11-08T09:00:00.0 2025-11-12T09:00:00.0 |
| 2025-11-12T09:00:00.0 | ed | 437.88 | 437.88 | 437.88 | TARRAJEO EN EXTERIORES C/A 1:5 e=1.50cm | 1.4.1.1.2.2.3 | AS_SOON_AS_POSSIBLE |  | 500 | 86400 | 86400 | 2025-11-12T09:00:00.0 | 2025-11-15T09:00:00.0 | 2025-12-19T09:00:00.0 | 2025-12-22T09:00:00.0 | 4 días | 286 |  | 2025-09-16T11:37:00.0 | 1.4.1.1.2.2.3 |  | PRORATED | True | True | 16b7e764-1b93-f011-adcc-c0bfbe9ea20f | True | PRORATED | 86400 | 2025-11-15T09:00:00.0 | 2025-11-12T09:00:00.0 | True | 2025-11-15T09:00:00.0 | True | 437.88 | 286 |  | 7 | 283 | 218 286 287 FS, 249 286 331 FS | 03.01.02.02.03 | 1065600 | 437.88 |  | 1065600 | 217 285 286 FS | 1065600 | 2025-11-12T09:00:00.0 | 2025-11-12T09:00:00.0 2025-11-15T09:00:00.0 |
| 2025-11-15T09:00:00.0 | ed | 488.13 | 488.13 | 488.13 | VESTIDURA DE DERRAMES C:A 1:5 e=1.5 Cm | 1.4.1.1.2.2.4 | AS_SOON_AS_POSSIBLE |  | 500 | 86400 | 86400 | 2025-11-15T09:00:00.0 | 2025-11-18T09:00:00.0 | 2025-12-22T09:00:00.0 | 2025-12-25T09:00:00.0 | 4 días | 287 |  | 2025-09-16T11:37:00.0 | 1.4.1.1.2.2.4 |  | PRORATED | True | True | 18b7e764-1b93-f011-adcc-c0bfbe9ea20f | True | PRORATED | 86400 | 2025-11-18T09:00:00.0 | 2025-11-15T09:00:00.0 | True | 2025-11-18T09:00:00.0 | True | 488.13 | 287 |  | 7 | 283 | 219 287 288 SS, 222 287 294 FS | 03.01.02.02.04 | 1065600 | 488.13 |  | 1065600 | 218 286 287 FS | 1065600 | 2025-11-15T09:00:00.0 | 2025-11-15T09:00:00.0 2025-11-18T09:00:00.0 |
| 2025-11-15T09:00:00.0 | ed | 148.46 | 148.46 | 148.46 | TARRAJEO EN DUCTOS | 1.4.1.1.2.2.5 | AS_SOON_AS_POSSIBLE |  | 500 | 57600 | 57600 | 2025-11-15T09:00:00.0 | 2025-11-17T09:00:00.0 | 2026-01-26T09:00:00.0 | 2026-01-28T09:00:00.0 | 3 días | 288 |  | 2025-09-16T11:37:00.0 | 1.4.1.1.2.2.5 |  | PRORATED | True | True | 1ab7e764-1b93-f011-adcc-c0bfbe9ea20f | True | PRORATED | 57600 | 2025-11-17T09:00:00.0 | 2025-11-15T09:00:00.0 | True | 2025-11-17T09:00:00.0 | True | 148.46 | 288 |  | 7 | 283 |  | 03.01.02.02.05 | 2073600 | 148.46 | 2073600 | 2073600 | 219 287 288 SS | 2073600 | 2025-11-15T09:00:00.0 | 2025-11-15T09:00:00.0 2025-11-17T09:00:00.0 |
| 2025-11-06T09:00:00.0 | ed | 369.12 | 369.12 | 369.12 | CIELO RASOS | 1.4.1.1.2.3 | AS_SOON_AS_POSSIBLE |  | 500 | 115200 | 115200 | 2025-11-06T09:00:00.0 | 2025-11-10T09:00:00.0 | 2026-01-26T09:00:00.0 | 2026-01-28T09:00:00.0 | 5 días | 289 | True | 2025-09-16T11:37:00.0 | 1.4.1.1.2.3 | FIXED_DURATION | PRORATED | True | True | 1cb7e764-1b93-f011-adcc-c0bfbe9ea20f | True | PRORATED | 115200 | 2025-11-10T09:00:00.0 | 2025-11-06T09:00:00.0 | True | 2025-11-10T09:00:00.0 | True | 369.12 | 289 | True | 6 | 280 |  | 03.01.02.03 | 2275200 |  | 2275200 | 2275200 |  | 2332800 |  |  |
| 2025-11-08T09:00:00.0 | ed | 189.29 | 189.29 | 189.29 | CIELORRASO CON MEZCLA | 1.4.1.1.2.3.1 | AS_SOON_AS_POSSIBLE |  | 500 | 57600 | 57600 | 2025-11-08T09:00:00.0 | 2025-11-10T09:00:00.0 | 2026-01-26T09:00:00.0 | 2026-01-28T09:00:00.0 | 3 días | 290 |  | 2025-09-16T11:37:00.0 | 1.4.1.1.2.3.1 |  | PRORATED | True | True | 1eb7e764-1b93-f011-adcc-c0bfbe9ea20f | True | PRORATED | 57600 | 2025-11-10T09:00:00.0 | 2025-11-08T09:00:00.0 | True | 2025-11-10T09:00:00.0 | True | 189.29 | 290 |  | 7 | 289 |  | 03.01.02.03.01 | 2275200 | 189.29 | 2275200 | 2275200 | 220 284 290 FS | 2275200 | 2025-11-08T09:00:00.0 | 2025-11-08T09:00:00.0 2025-11-10T09:00:00.0 |
| 2025-11-06T09:00:00.0 | ed | 179.83 | 179.83 | 179.83 | SUMINISTRO E INSTALACION DE LADRILLO PASTELERO EN TECHO | 1.4.1.1.2.3.2 | AS_SOON_AS_POSSIBLE |  | 500 | 57600 | 57600 | 2025-11-06T09:00:00.0 | 2025-11-08T09:00:00.0 | 2026-01-26T09:00:00.0 | 2026-01-28T09:00:00.0 | 3 días | 291 |  | 2025-09-16T11:37:00.0 | 1.4.1.1.2.3.2 |  | PRORATED | True | True | 20b7e764-1b93-f011-adcc-c0bfbe9ea20f | True | PRORATED | 57600 | 2025-11-08T09:00:00.0 | 2025-11-06T09:00:00.0 | True | 2025-11-08T09:00:00.0 | True | 179.83 | 291 |  | 7 | 289 |  | 03.01.02.03.02 | 2332800 | 179.83 | 2332800 | 2332800 | 221 134 291 FS | 2332800 | 2025-11-06T09:00:00.0 | 2025-11-06T09:00:00.0 2025-11-08T09:00:00.0 |
| 2025-11-12T09:00:00.0 | ed | 6862.68 | 6862.68 | 6862.68 | PISOS Y PAVIMENTOS | 1.4.1.1.2.4 | AS_SOON_AS_POSSIBLE |  | 500 | 806400 | 806400 | 2025-11-12T09:00:00.0 | 2025-12-10T09:00:00.0 | 2025-12-25T09:00:00.0 | 2026-01-28T09:00:00.0 | 29 días | 292 | True | 2025-09-16T11:37:00.0 | 1.4.1.1.2.4 | FIXED_DURATION | PRORATED | True | True | 22b7e764-1b93-f011-adcc-c0bfbe9ea20f | True | PRORATED | 806400 | 2025-12-10T09:00:00.0 | 2025-11-12T09:00:00.0 | True | 2025-12-10T09:00:00.0 | True | 6862.68 | 292 | True | 6 | 280 |  | 03.01.02.04 | 1411200 |  | 1238400 | 1238400 |  | 1238400 |  |  |
| 2025-11-18T09:00:00.0 | ed | 1580.55 | 1580.55 | 1580.55 | CONTRAPISOS | 1.4.1.1.2.4.1 | AS_SOON_AS_POSSIBLE |  | 500 | 57600 | 57600 | 2025-11-18T09:00:00.0 | 2025-11-20T09:00:00.0 | 2025-12-25T09:00:00.0 | 2025-12-27T09:00:00.0 | 3 días | 293 | True | 2025-09-16T11:37:00.0 | 1.4.1.1.2.4.1 | FIXED_DURATION | PRORATED | True | True | 24b7e764-1b93-f011-adcc-c0bfbe9ea20f | True | PRORATED | 57600 | 2025-11-20T09:00:00.0 | 2025-11-18T09:00:00.0 | True | 2025-11-20T09:00:00.0 | True | 1580.55 | 293 | True | 7 | 292 |  | 03.01.02.04.01 | 1065600 |  | 1065600 | 1065600 |  | 1065600 |  |  |
| 2025-11-18T09:00:00.0 | ed | 1580.55 | 1580.55 | 1580.55 | CONTRAPISO C:A 1:5 e=4" | 1.4.1.1.2.4.1.1 | AS_SOON_AS_POSSIBLE |  | 500 | 57600 | 57600 | 2025-11-18T09:00:00.0 | 2025-11-20T09:00:00.0 | 2025-12-25T09:00:00.0 | 2025-12-27T09:00:00.0 | 3 días | 294 |  | 2025-09-16T11:37:00.0 | 1.4.1.1.2.4.1.1 |  | PRORATED | True | True | 26b7e764-1b93-f011-adcc-c0bfbe9ea20f | True | PRORATED | 57600 | 2025-11-20T09:00:00.0 | 2025-11-18T09:00:00.0 | True | 2025-11-20T09:00:00.0 | True | 1580.55 | 294 |  | 8 | 293 | 242 294 323 FS | 03.01.02.04.01.01 | 1065600 | 1580.55 |  | 1065600 | 222 287 294 FS | 1065600 | 2025-11-18T09:00:00.0 | 2025-11-18T09:00:00.0 2025-11-20T09:00:00.0 |
| 2025-11-12T09:00:00.0 | ed | 5282.13 | 5282.13 | 5282.13 | PISOS | 1.4.1.1.2.4.2 | AS_SOON_AS_POSSIBLE |  | 500 | 806400 | 806400 | 2025-11-12T09:00:00.0 | 2025-12-10T09:00:00.0 | 2026-01-06T09:00:00.0 | 2026-01-28T09:00:00.0 | 29 días | 295 | True | 2025-09-16T11:37:00.0 | 1.4.1.1.2.4.2 | FIXED_DURATION | PRORATED | True | True | 28b7e764-1b93-f011-adcc-c0bfbe9ea20f | True | PRORATED | 806400 | 2025-12-10T09:00:00.0 | 2025-11-12T09:00:00.0 | True | 2025-12-10T09:00:00.0 | True | 5282.13 | 295 | True | 7 | 292 |  | 03.01.02.04.02 | 1411200 |  | 1411200 | 1411200 |  | 1584000 |  |  |
| 2025-12-07T09:00:00.0 | ed | 157.26 | 157.26 | 157.26 | PORCELANATO COLOR GRIS | 1.4.1.1.2.4.2.1 | AS_SOON_AS_POSSIBLE |  | 500 | 86400 | 86400 | 2025-12-07T09:00:00.0 | 2025-12-10T09:00:00.0 | 2026-01-25T09:00:00.0 | 2026-01-28T09:00:00.0 | 4 días | 296 |  | 2025-09-16T11:37:00.0 | 1.4.1.1.2.4.2.1 |  | PRORATED | True | True | 2ab7e764-1b93-f011-adcc-c0bfbe9ea20f | True | PRORATED | 86400 | 2025-12-10T09:00:00.0 | 2025-12-07T09:00:00.0 | True | 2025-12-10T09:00:00.0 | True | 157.26 | 296 |  | 8 | 295 |  | 03.01.02.04.02.01 | 1411200 | 157.26 | 1411200 | 1411200 | 223 297 296 FF | 1411200 |  | 2025-12-07T09:00:00.0 2025-12-10T09:00:00.0 |
| 2025-11-30T09:00:00.0 | ed | 5069.47 | 5069.47 | 5069.47 | PORCELANATO COLOR ARENA | 1.4.1.1.2.4.2.2 | AS_SOON_AS_POSSIBLE |  | 500 | 288000 | 288000 | 2025-11-30T09:00:00.0 | 2025-12-10T09:00:00.0 | 2026-01-06T09:00:00.0 | 2026-01-16T09:00:00.0 | 11 días | 297 |  | 2025-09-16T11:37:00.0 | 1.4.1.1.2.4.2.2 |  | PRORATED | True | True | 2cb7e764-1b93-f011-adcc-c0bfbe9ea20f | True | PRORATED | 288000 | 2025-12-10T09:00:00.0 | 2025-11-30T09:00:00.0 | True | 2025-12-10T09:00:00.0 | True | 5069.47 | 297 |  | 8 | 295 | 223 297 296 FF, 226 297 301 FS | 03.01.02.04.02.02 | 1065600 | 5069.47 |  | 1065600 | 224 324 297 FS | 1065600 | 2025-11-30T09:00:00.0 | 2025-11-30T09:00:00.0 2025-12-10T09:00:00.0 |
| 2025-11-12T09:00:00.0 | ed | 55.4 | 55.4 | 55.4 | ADOQUINES DE CONCRETO | 1.4.1.1.2.4.2.3 | AS_SOON_AS_POSSIBLE |  | 500 | 115200 | 115200 | 2025-11-12T09:00:00.0 | 2025-11-16T09:00:00.0 | 2026-01-24T09:00:00.0 | 2026-01-28T09:00:00.0 | 5 días | 298 |  | 2025-09-16T11:37:00.0 | 1.4.1.1.2.4.2.3 |  | PRORATED | True | True | 2eb7e764-1b93-f011-adcc-c0bfbe9ea20f | True | PRORATED | 115200 | 2025-11-16T09:00:00.0 | 2025-11-12T09:00:00.0 | True | 2025-11-16T09:00:00.0 | True | 55.4 | 298 |  | 8 | 295 |  | 03.01.02.04.02.03 | 2102400 | 55.4 | 2102400 | 2102400 | 225 285 298 FS | 2102400 | 2025-11-12T09:00:00.0 | 2025-11-12T09:00:00.0 2025-11-16T09:00:00.0 |
| 2025-11-30T09:00:00.0 | ed | 914.75 | 914.75 | 914.75 | ZOCALOS Y CONTRAZOCALOS | 1.4.1.1.2.5 | AS_SOON_AS_POSSIBLE |  | 500 | 489600 | 489600 | 2025-11-30T09:00:00.0 | 2025-12-17T09:00:00.0 | 2026-01-16T09:00:00.0 | 2026-01-28T09:00:00.0 | 18 días | 299 | True | 2025-09-16T11:37:00.0 | 1.4.1.1.2.5 | FIXED_DURATION | PRORATED | True | True | 30b7e764-1b93-f011-adcc-c0bfbe9ea20f | True | PRORATED | 489600 | 2025-12-17T09:00:00.0 | 2025-11-30T09:00:00.0 | True | 2025-12-17T09:00:00.0 | True | 914.75 | 299 | True | 6 | 280 |  | 03.01.02.05 | 1209600 |  | 1209600 | 1209600 |  | 1353600 |  |  |
| 2025-12-10T09:00:00.0 | ed | 832.37 | 832.37 | 832.37 | ZOCALOS | 1.4.1.1.2.5.1 | AS_SOON_AS_POSSIBLE |  | 500 | 115200 | 115200 | 2025-12-10T09:00:00.0 | 2025-12-14T09:00:00.0 | 2026-01-16T09:00:00.0 | 2026-01-20T09:00:00.0 | 5 días | 300 | True | 2025-09-16T11:37:00.0 | 1.4.1.1.2.5.1 | FIXED_DURATION | PRORATED | True | True | 32b7e764-1b93-f011-adcc-c0bfbe9ea20f | True | PRORATED | 115200 | 2025-12-14T09:00:00.0 | 2025-12-10T09:00:00.0 | True | 2025-12-14T09:00:00.0 | True | 832.37 | 300 | True | 7 | 299 |  | 03.01.02.05.01 | 1065600 |  | 1065600 | 1065600 |  | 1065600 |  |  |
| 2025-12-10T09:00:00.0 | ed | 832.37 | 832.37 | 832.37 | PORCELANATO | 1.4.1.1.2.5.1.1 | AS_SOON_AS_POSSIBLE |  | 500 | 115200 | 115200 | 2025-12-10T09:00:00.0 | 2025-12-14T09:00:00.0 | 2026-01-16T09:00:00.0 | 2026-01-20T09:00:00.0 | 5 días | 301 |  | 2025-09-16T11:37:00.0 | 1.4.1.1.2.5.1.1 |  | PRORATED | True | True | 34b7e764-1b93-f011-adcc-c0bfbe9ea20f | True | PRORATED | 115200 | 2025-12-14T09:00:00.0 | 2025-12-10T09:00:00.0 | True | 2025-12-14T09:00:00.0 | True | 832.37 | 301 |  | 8 | 300 | 227 301 303 FS | 03.01.02.05.01.01 | 1065600 | 832.37 |  | 1065600 | 226 297 301 FS | 1065600 | 2025-12-10T09:00:00.0 | 2025-12-10T09:00:00.0 2025-12-14T09:00:00.0 |
| 2025-11-30T09:00:00.0 | ed | 82.38 | 82.38 | 82.38 | CONTRAZOCALOS | 1.4.1.1.2.5.2 | AS_SOON_AS_POSSIBLE |  | 500 | 489600 | 489600 | 2025-11-30T09:00:00.0 | 2025-12-17T09:00:00.0 | 2026-01-20T09:00:00.0 | 2026-01-28T09:00:00.0 | 18 días | 302 | True | 2025-09-16T11:37:00.0 | 1.4.1.1.2.5.2 | FIXED_DURATION | PRORATED | True | True | 36b7e764-1b93-f011-adcc-c0bfbe9ea20f | True | PRORATED | 489600 | 2025-12-17T09:00:00.0 | 2025-11-30T09:00:00.0 | True | 2025-12-17T09:00:00.0 | True | 82.38 | 302 | True | 7 | 299 |  | 03.01.02.05.02 | 1209600 |  | 1209600 | 1209600 |  | 1468800 |  |  |
| 2025-12-14T09:00:00.0 | ed | 49.86 | 49.86 | 49.86 | PORCELANATO. | 1.4.1.1.2.5.2.1 | AS_SOON_AS_POSSIBLE |  | 500 | 86400 | 86400 | 2025-12-14T09:00:00.0 | 2025-12-17T09:00:00.0 | 2026-01-20T09:00:00.0 | 2026-01-23T09:00:00.0 | 4 días | 303 |  | 2025-09-16T11:37:00.0 | 1.4.1.1.2.5.2.1 |  | PRORATED | True | True | 38b7e764-1b93-f011-adcc-c0bfbe9ea20f | True | PRORATED | 86400 | 2025-12-17T09:00:00.0 | 2025-12-14T09:00:00.0 | True | 2025-12-17T09:00:00.0 | True | 49.86 | 303 |  | 8 | 302 | 452 303 325 FS | 03.01.02.05.02.01 | 1065600 | 49.86 |  | 1065600 | 227 301 303 FS | 1065600 | 2025-12-14T09:00:00.0 | 2025-12-14T09:00:00.0 2025-12-17T09:00:00.0 |
| 2025-11-30T09:00:00.0 | ed | 32.52 | 32.52 | 32.52 | PINTADO DE CONTRAZOCALOS COLOR NEGRO | 1.4.1.1.2.5.2.2 | AS_SOON_AS_POSSIBLE |  | 500 | 28800 | 28800 | 2025-11-30T09:00:00.0 | 2025-12-01T09:00:00.0 | 2026-01-27T09:00:00.0 | 2026-01-28T09:00:00.0 | 2 días | 304 |  | 2025-09-16T11:37:00.0 | 1.4.1.1.2.5.2.2 |  | PRORATED | True | True | 3ab7e764-1b93-f011-adcc-c0bfbe9ea20f | True | PRORATED | 28800 | 2025-12-01T09:00:00.0 | 2025-11-30T09:00:00.0 | True | 2025-12-01T09:00:00.0 | True | 32.52 | 304 |  | 8 | 302 |  | 03.01.02.05.02.02 | 1670400 | 32.52 | 1670400 | 1670400 | 228 324 304 FS | 1670400 | 2025-11-30T09:00:00.0 | 2025-11-30T09:00:00.0 2025-12-01T09:00:00.0 |
| 2025-12-03T09:00:00.0 | ed | 8283.35 | 8283.35 | 8283.35 | CARPINTERIA DE MADERA Y METALICA | 1.4.1.1.2.6 | AS_SOON_AS_POSSIBLE |  | 500 | 489600 | 489600 | 2025-12-03T09:00:00.0 | 2025-12-20T09:00:00.0 | 2026-01-22T09:00:00.0 | 2026-01-28T09:00:00.0 | 18 días | 305 | True | 2025-09-16T11:37:00.0 | 1.4.1.1.2.6 | FIXED_DURATION | PRORATED | True | True | 3cb7e764-1b93-f011-adcc-c0bfbe9ea20f | True | PRORATED | 489600 | 2025-12-20T09:00:00.0 | 2025-12-03T09:00:00.0 | True | 2025-12-20T09:00:00.0 | True | 8283.35 | 305 | True | 6 | 280 |  | 03.01.02.06 | 1123200 |  | 1123200 | 1123200 |  | 1440000 |  |  |
| 2025-12-03T09:00:00.0 | ed | 946.29 | 946.29 | 946.29 | VENTANAS | 1.4.1.1.2.6.1 | AS_SOON_AS_POSSIBLE |  | 500 | 172800 | 172800 | 2025-12-03T09:00:00.0 | 2025-12-09T09:00:00.0 | 2026-01-22T09:00:00.0 | 2026-01-28T09:00:00.0 | 7 días | 306 | True | 2025-09-16T11:37:00.0 | 1.4.1.1.2.6.1 | FIXED_DURATION | PRORATED | True | True | 3eb7e764-1b93-f011-adcc-c0bfbe9ea20f | True | PRORATED | 172800 | 2025-12-09T09:00:00.0 | 2025-12-03T09:00:00.0 | True | 2025-12-09T09:00:00.0 | True | 946.29 | 306 | True | 7 | 305 |  | 03.01.02.06.01 | 1440000 |  | 1440000 | 1440000 |  | 1440000 |  |  |
| 2025-12-05T09:00:00.0 | ed | 159.63 | 159.63 | 159.63 | REUBICACION Y PAVONADO DE VENTANA V-1 | 1.4.1.1.2.6.1.1 | AS_SOON_AS_POSSIBLE |  | 500 | 57600 | 57600 | 2025-12-05T09:00:00.0 | 2025-12-07T09:00:00.0 | 2026-01-24T09:00:00.0 | 2026-01-26T09:00:00.0 | 3 días | 307 |  | 2025-09-16T11:37:00.0 | 1.4.1.1.2.6.1.1 |  | PRORATED | True | True | 40b7e764-1b93-f011-adcc-c0bfbe9ea20f | True | PRORATED | 57600 | 2025-12-07T09:00:00.0 | 2025-12-05T09:00:00.0 | True | 2025-12-07T09:00:00.0 | True | 159.63 | 307 |  | 8 | 306 | 230 307 308 FS | 03.01.02.06.01.01 | 1440000 | 159.63 |  | 1440000 | 229 310 307 FS | 1440000 | 2025-12-05T09:00:00.0 | 2025-12-05T09:00:00.0 2025-12-07T09:00:00.0 |
| 2025-12-07T09:00:00.0 | ed | 14.72 | 14.72 | 14.72 | REUBICACION DE VENTANA VA-1 | 1.4.1.1.2.6.1.2 | AS_SOON_AS_POSSIBLE |  | 500 | 57600 | 57600 | 2025-12-07T09:00:00.0 | 2025-12-09T09:00:00.0 | 2026-01-26T09:00:00.0 | 2026-01-28T09:00:00.0 | 3 días | 308 |  | 2025-09-16T11:37:00.0 | 1.4.1.1.2.6.1.2 |  | PRORATED | True | True | 42b7e764-1b93-f011-adcc-c0bfbe9ea20f | True | PRORATED | 57600 | 2025-12-09T09:00:00.0 | 2025-12-07T09:00:00.0 | True | 2025-12-09T09:00:00.0 | True | 14.72 | 308 |  | 8 | 306 |  | 03.01.02.06.01.02 | 1440000 | 14.72 | 1440000 | 1440000 | 230 307 308 FS | 1440000 | 2025-12-07T09:00:00.0 | 2025-12-07T09:00:00.0 2025-12-09T09:00:00.0 |
| 2025-12-05T09:00:00.0 | ed | 445.32 | 445.32 | 445.32 | VENTANA VA-2 | 1.4.1.1.2.6.1.3 | AS_SOON_AS_POSSIBLE |  | 500 | 57600 | 57600 | 2025-12-05T09:00:00.0 | 2025-12-07T09:00:00.0 | 2026-01-26T09:00:00.0 | 2026-01-28T09:00:00.0 | 3 días | 309 |  | 2025-09-16T11:37:00.0 | 1.4.1.1.2.6.1.3 |  | PRORATED | True | True | 44b7e764-1b93-f011-adcc-c0bfbe9ea20f | True | PRORATED | 57600 | 2025-12-07T09:00:00.0 | 2025-12-05T09:00:00.0 | True | 2025-12-07T09:00:00.0 | True | 445.32 | 309 |  | 8 | 306 |  | 03.01.02.06.01.03 | 1497600 | 445.32 | 1497600 | 1497600 | 231 310 309 FS | 1497600 | 2025-12-05T09:00:00.0 | 2025-12-05T09:00:00.0 2025-12-07T09:00:00.0 |
| 2025-12-03T09:00:00.0 | ed | 326.62 | 326.62 | 326.62 | MANTENIMIENTO Y PAVONADO DE VENTANAS | 1.4.1.1.2.6.1.4 | AS_SOON_AS_POSSIBLE |  | 500 | 57600 | 57600 | 2025-12-03T09:00:00.0 | 2025-12-05T09:00:00.0 | 2026-01-22T09:00:00.0 | 2026-01-24T09:00:00.0 | 3 días | 310 |  | 2025-09-16T11:37:00.0 | 1.4.1.1.2.6.1.4 |  | PRORATED | True | True | 46b7e764-1b93-f011-adcc-c0bfbe9ea20f | True | PRORATED | 57600 | 2025-12-05T09:00:00.0 | 2025-12-03T09:00:00.0 | True | 2025-12-05T09:00:00.0 | True | 326.62 | 310 |  | 8 | 306 | 229 310 307 FS, 231 310 309 FS, 236 310 315 FS | 03.01.02.06.01.04 | 1440000 | 326.62 |  | 1440000 | 232 326 310 FS | 1440000 | 2025-12-03T09:00:00.0 | 2025-12-03T09:00:00.0 2025-12-05T09:00:00.0 |
| 2025-12-18T09:00:00.0 | ed | 3356.08 | 3356.08 | 3356.08 | PUERTAS | 1.4.1.1.2.6.2 | AS_SOON_AS_POSSIBLE |  | 500 | 57600 | 57600 | 2025-12-18T09:00:00.0 | 2025-12-20T09:00:00.0 | 2026-01-24T09:00:00.0 | 2026-01-28T09:00:00.0 | 3 días | 311 | True | 2025-09-16T11:37:00.0 | 1.4.1.1.2.6.2 | FIXED_DURATION | PRORATED | True | True | 48b7e764-1b93-f011-adcc-c0bfbe9ea20f | True | PRORATED | 57600 | 2025-12-20T09:00:00.0 | 2025-12-18T09:00:00.0 | True | 2025-12-20T09:00:00.0 | True | 3356.08 | 311 | True | 7 | 305 |  | 03.01.02.06.02 | 1123200 |  | 1065600 | 1065600 |  | 1065600 |  |  |
| 2025-12-18T09:00:00.0 | ed | 2685.04 | 2685.04 | 2685.04 | PUERTA P-01 | 1.4.1.1.2.6.2.1 | AS_SOON_AS_POSSIBLE |  | 500 | 57600 | 57600 | 2025-12-18T09:00:00.0 | 2025-12-20T09:00:00.0 | 2026-01-26T09:00:00.0 | 2026-01-28T09:00:00.0 | 3 días | 312 |  | 2025-09-16T11:37:00.0 | 1.4.1.1.2.6.2.1 |  | PRORATED | True | True | 4ab7e764-1b93-f011-adcc-c0bfbe9ea20f | True | PRORATED | 57600 | 2025-12-20T09:00:00.0 | 2025-12-18T09:00:00.0 | True | 2025-12-20T09:00:00.0 | True | 2685.04 | 312 |  | 8 | 311 |  | 03.01.02.06.02.01 | 1123200 | 2685.04 | 1123200 | 1123200 | 455 325 312 FS | 1123200 | 2025-12-18T09:00:00.0 | 2025-12-18T09:00:00.0 2025-12-20T09:00:00.0 |
| 2025-12-18T09:00:00.0 | ed | 671.04 | 671.04 | 671.04 | PUERTA P-02 | 1.4.1.1.2.6.2.2 | AS_SOON_AS_POSSIBLE |  | 500 | 57600 | 57600 | 2025-12-18T09:00:00.0 | 2025-12-20T09:00:00.0 | 2026-01-24T09:00:00.0 | 2026-01-26T09:00:00.0 | 3 días | 313 |  | 2025-09-16T11:37:00.0 | 1.4.1.1.2.6.2.2 |  | PRORATED | True | True | 4cb7e764-1b93-f011-adcc-c0bfbe9ea20f | True | PRORATED | 57600 | 2025-12-20T09:00:00.0 | 2025-12-18T09:00:00.0 | True | 2025-12-20T09:00:00.0 | True | 671.04 | 313 |  | 8 | 311 | 250 313 332 FS | 03.01.02.06.02.02 | 1065600 | 671.04 |  | 1065600 | 457 325 313 FS | 1065600 | 2025-12-18T09:00:00.0 | 2025-12-18T09:00:00.0 2025-12-20T09:00:00.0 |
| 2025-12-05T09:00:00.0 | ed | 3980.98 | 3980.98 | 3980.98 | MAMPARAS | 1.4.1.1.2.6.3 | AS_SOON_AS_POSSIBLE |  | 500 | 86400 | 86400 | 2025-12-05T09:00:00.0 | 2025-12-08T09:00:00.0 | 2026-01-24T09:00:00.0 | 2026-01-27T09:00:00.0 | 4 días | 314 | True | 2025-09-16T11:37:00.0 | 1.4.1.1.2.6.3 | FIXED_DURATION | PRORATED | True | True | 4eb7e764-1b93-f011-adcc-c0bfbe9ea20f | True | PRORATED | 86400 | 2025-12-08T09:00:00.0 | 2025-12-05T09:00:00.0 | True | 2025-12-08T09:00:00.0 | True | 3980.98 | 314 | True | 7 | 305 |  | 03.01.02.06.03 | 1440000 |  | 1440000 | 1440000 |  | 1440000 |  |  |
| 2025-12-05T09:00:00.0 | ed | 3980.98 | 3980.98 | 3980.98 | MAMPARA-01 | 1.4.1.1.2.6.3.1 | AS_SOON_AS_POSSIBLE |  | 500 | 86400 | 86400 | 2025-12-05T09:00:00.0 | 2025-12-08T09:00:00.0 | 2026-01-24T09:00:00.0 | 2026-01-27T09:00:00.0 | 4 días | 315 |  | 2025-09-16T11:37:00.0 | 1.4.1.1.2.6.3.1 |  | PRORATED | True | True | 50b7e764-1b93-f011-adcc-c0bfbe9ea20f | True | PRORATED | 86400 | 2025-12-08T09:00:00.0 | 2025-12-05T09:00:00.0 | True | 2025-12-08T09:00:00.0 | True | 3980.98 | 315 |  | 8 | 314 | 454 315 319 FS | 03.01.02.06.03.01 | 1440000 | 3980.98 |  | 1440000 | 236 310 315 FS | 1440000 | 2025-12-05T09:00:00.0 | 2025-12-05T09:00:00.0 2025-12-08T09:00:00.0 |
| 2025-12-08T09:00:00.0 | ed | 432.64 | 432.64 | 432.64 | CERRAJERIA | 1.4.1.1.2.7 | AS_SOON_AS_POSSIBLE |  | 500 | 316800 | 316800 | 2025-12-08T09:00:00.0 | 2025-12-19T09:00:00.0 | 2026-01-27T09:00:00.0 | 2026-01-28T09:00:00.0 | 12 días | 316 | True | 2025-09-16T11:37:00.0 | 1.4.1.1.2.7 | FIXED_DURATION | PRORATED | True | True | 52b7e764-1b93-f011-adcc-c0bfbe9ea20f | True | PRORATED | 316800 | 2025-12-19T09:00:00.0 | 2025-12-08T09:00:00.0 | True | 2025-12-19T09:00:00.0 | True | 432.64 | 316 | True | 6 | 280 |  | 03.01.02.07 | 1152000 |  | 1152000 | 1152000 |  | 1440000 |  |  |
| 2025-12-18T09:00:00.0 | ed | 99.32 | 99.32 | 99.32 | BISAGRA PARA PUERTA P-01 | 1.4.1.1.2.7.1 | AS_SOON_AS_POSSIBLE |  | 500 | 28800 | 28800 | 2025-12-18T09:00:00.0 | 2025-12-19T09:00:00.0 | 2026-01-27T09:00:00.0 | 2026-01-28T09:00:00.0 | 2 días | 317 |  | 2025-09-16T11:37:00.0 | 1.4.1.1.2.7.1 |  | PRORATED | True | True | 54b7e764-1b93-f011-adcc-c0bfbe9ea20f | True | PRORATED | 28800 | 2025-12-19T09:00:00.0 | 2025-12-18T09:00:00.0 | True | 2025-12-19T09:00:00.0 | True | 99.32 | 317 |  | 7 | 316 |  | 03.01.02.07.01 | 1152000 | 99.32 | 1152000 | 1152000 | 237 325 317 FS | 1152000 | 2025-12-18T09:00:00.0 | 2025-12-18T09:00:00.0 2025-12-19T09:00:00.0 |
| 2025-12-18T09:00:00.0 | ed | 49.66 | 49.66 | 49.66 | BISAGRA PARA PUERTA P-02 | 1.4.1.1.2.7.2 | AS_SOON_AS_POSSIBLE |  | 500 | 28800 | 28800 | 2025-12-18T09:00:00.0 | 2025-12-19T09:00:00.0 | 2026-01-27T09:00:00.0 | 2026-01-28T09:00:00.0 | 2 días | 318 |  | 2025-09-16T11:37:00.0 | 1.4.1.1.2.7.2 |  | PRORATED | True | True | 56b7e764-1b93-f011-adcc-c0bfbe9ea20f | True | PRORATED | 28800 | 2025-12-19T09:00:00.0 | 2025-12-18T09:00:00.0 | True | 2025-12-19T09:00:00.0 | True | 49.66 | 318 |  | 7 | 316 |  | 03.01.02.07.02 | 1152000 | 49.66 | 1152000 | 1152000 | 456 325 318 FS | 1152000 | 2025-12-18T09:00:00.0 | 2025-12-18T09:00:00.0 2025-12-19T09:00:00.0 |
| 2025-12-08T09:00:00.0 | ed | 88.97 | 88.97 | 88.97 | CERRADURA PARA M-01 | 1.4.1.1.2.7.3 | AS_SOON_AS_POSSIBLE |  | 500 | 28800 | 28800 | 2025-12-08T09:00:00.0 | 2025-12-09T09:00:00.0 | 2026-01-27T09:00:00.0 | 2026-01-28T09:00:00.0 | 2 días | 319 |  | 2025-09-16T11:37:00.0 | 1.4.1.1.2.7.3 |  | PRORATED | True | True | 58b7e764-1b93-f011-adcc-c0bfbe9ea20f | True | PRORATED | 28800 | 2025-12-09T09:00:00.0 | 2025-12-08T09:00:00.0 | True | 2025-12-09T09:00:00.0 | True | 88.97 | 319 |  | 7 | 316 |  | 03.01.02.07.03 | 1440000 | 88.97 | 1440000 | 1440000 | 454 315 319 FS | 1440000 | 2025-12-08T09:00:00.0 | 2025-12-08T09:00:00.0 2025-12-09T09:00:00.0 |
| 2025-12-18T09:00:00.0 | ed | 105.72 | 105.72 | 105.72 | CERRADURA PARA P-01 | 1.4.1.1.2.7.4 | AS_SOON_AS_POSSIBLE |  | 500 | 28800 | 28800 | 2025-12-18T09:00:00.0 | 2025-12-19T09:00:00.0 | 2026-01-27T09:00:00.0 | 2026-01-28T09:00:00.0 | 2 días | 320 |  | 2025-09-16T11:37:00.0 | 1.4.1.1.2.7.4 |  | PRORATED | True | True | 5ab7e764-1b93-f011-adcc-c0bfbe9ea20f | True | PRORATED | 28800 | 2025-12-19T09:00:00.0 | 2025-12-18T09:00:00.0 | True | 2025-12-19T09:00:00.0 | True | 105.72 | 320 |  | 7 | 316 |  | 03.01.02.07.04 | 1152000 | 105.72 | 1152000 | 1152000 | 458 325 320 FS | 1152000 | 2025-12-18T09:00:00.0 | 2025-12-18T09:00:00.0 2025-12-19T09:00:00.0 |
| 2025-12-18T09:00:00.0 | ed | 88.97 | 88.97 | 88.97 | CERRADURA PARA P-02 | 1.4.1.1.2.7.5 | AS_SOON_AS_POSSIBLE |  | 500 | 28800 | 28800 | 2025-12-18T09:00:00.0 | 2025-12-19T09:00:00.0 | 2026-01-27T09:00:00.0 | 2026-01-28T09:00:00.0 | 2 días | 321 |  | 2025-09-16T11:37:00.0 | 1.4.1.1.2.7.5 |  | PRORATED | True | True | 5cb7e764-1b93-f011-adcc-c0bfbe9ea20f | True | PRORATED | 28800 | 2025-12-19T09:00:00.0 | 2025-12-18T09:00:00.0 | True | 2025-12-19T09:00:00.0 | True | 88.97 | 321 |  | 7 | 316 |  | 03.01.02.07.05 | 1152000 | 88.97 | 1152000 | 1152000 | 459 325 321 FS | 1152000 | 2025-12-18T09:00:00.0 | 2025-12-18T09:00:00.0 2025-12-19T09:00:00.0 |
| 2025-11-20T09:00:00.0 | ed | 15445.06 | 15445.06 | 15445.06 | PINTURAS | 1.4.1.1.2.8 | AS_SOON_AS_POSSIBLE |  | 500 | 806400 | 806400 | 2025-11-20T09:00:00.0 | 2025-12-18T09:00:00.0 | 2025-12-27T09:00:00.0 | 2026-01-25T09:00:00.0 | 29 días | 322 | True | 2025-09-16T11:37:00.0 | 1.4.1.1.2.8 | FIXED_DURATION | PRORATED | True | True | 5eb7e764-1b93-f011-adcc-c0bfbe9ea20f | True | PRORATED | 806400 | 2025-12-18T09:00:00.0 | 2025-11-20T09:00:00.0 | True | 2025-12-18T09:00:00.0 | True | 15445.06 | 322 | True | 6 | 280 |  | 03.01.02.08 | 1094400 |  | 1065600 | 1065600 |  | 1065600 |  |  |
| 2025-11-20T09:00:00.0 | ed | 2397.08 | 2397.08 | 2397.08 | PINTURA DE CIELOS RASO Y PAREDES | 1.4.1.1.2.8.1 | AS_SOON_AS_POSSIBLE |  | 500 | 172800 | 172800 | 2025-11-20T09:00:00.0 | 2025-11-26T09:00:00.0 | 2025-12-27T09:00:00.0 | 2026-01-02T09:00:00.0 | 7 días | 323 |  | 2025-09-16T11:37:00.0 | 1.4.1.1.2.8.1 |  | PRORATED | True | True | 60b7e764-1b93-f011-adcc-c0bfbe9ea20f | True | PRORATED | 172800 | 2025-11-26T09:00:00.0 | 2025-11-20T09:00:00.0 | True | 2025-11-26T09:00:00.0 | True | 2397.08 | 323 |  | 7 | 322 | 102 323 140 FS, 243 323 324 -86400 FS, 253 323 334 FS, 474 323 536 FS, 477 323 552 FS | 03.01.02.08.01 | 1065600 | 2397.08 |  | 1065600 | 242 294 323 FS | 1065600 | 2025-11-20T09:00:00.0 | 2025-11-20T09:00:00.0 2025-11-26T09:00:00.0 |
| 2025-11-23T09:00:00.0 | ed | 10959.35 | 10959.35 | 10959.35 | ACABADO DE ESTUCADO COLOR GRIS CEMENTO | 1.4.1.1.2.8.2 | AS_SOON_AS_POSSIBLE |  | 500 | 201600 | 201600 | 2025-11-23T09:00:00.0 | 2025-11-30T09:00:00.0 | 2025-12-30T09:00:00.0 | 2026-01-06T09:00:00.0 | 8 días | 324 |  | 2025-09-16T11:37:00.0 | 1.4.1.1.2.8.2 |  | PRORATED | True | True | 62b7e764-1b93-f011-adcc-c0bfbe9ea20f | True | PRORATED | 201600 | 2025-11-30T09:00:00.0 | 2025-11-23T09:00:00.0 | True | 2025-11-30T09:00:00.0 | True | 10959.35 | 324 |  | 7 | 322 | 103 324 141 FS, 224 324 297 FS, 228 324 304 FS, 245 324 326 FS, 246 324 327 FS, 254 324 335 FS | 03.01.02.08.02 | 1065600 | 10959.35 |  | 1065600 | 243 323 324 -86400 FS | 1065600 | 2025-11-23T09:00:00.0 | 2025-11-23T09:00:00.0 2025-11-30T09:00:00.0 |
| 2025-12-17T09:00:00.0 | ed | 285.12 | 285.12 | 285.12 | PINTURA DE PUERTAS | 1.4.1.1.2.8.3 | AS_SOON_AS_POSSIBLE |  | 500 | 28800 | 28800 | 2025-12-17T09:00:00.0 | 2025-12-18T09:00:00.0 | 2026-01-23T09:00:00.0 | 2026-01-24T09:00:00.0 | 2 días | 325 |  | 2025-09-16T11:37:00.0 | 1.4.1.1.2.8.3 |  | PRORATED | True | True | 64b7e764-1b93-f011-adcc-c0bfbe9ea20f | True | PRORATED | 28800 | 2025-12-18T09:00:00.0 | 2025-12-17T09:00:00.0 | True | 2025-12-18T09:00:00.0 | True | 285.12 | 325 |  | 7 | 322 | 237 325 317 FS, 455 325 312 FS, 456 325 318 FS, 457 325 313 FS, 458 325 320 FS, 459 325 321 FS | 03.01.02.08.03 | 1065600 | 285.12 |  | 1065600 | 452 303 325 FS | 1065600 | 2025-12-17T09:00:00.0 | 2025-12-17T09:00:00.0 2025-12-18T09:00:00.0 |
| 2025-11-30T09:00:00.0 | ed | 1038.62 | 1038.62 | 1038.62 | PINTURA DE DERRAMES | 1.4.1.1.2.8.4 | AS_SOON_AS_POSSIBLE |  | 500 | 86400 | 86400 | 2025-11-30T09:00:00.0 | 2025-12-03T09:00:00.0 | 2026-01-19T09:00:00.0 | 2026-01-22T09:00:00.0 | 4 días | 326 |  | 2025-09-16T11:37:00.0 | 1.4.1.1.2.8.4 |  | PRORATED | True | True | 66b7e764-1b93-f011-adcc-c0bfbe9ea20f | True | PRORATED | 86400 | 2025-12-03T09:00:00.0 | 2025-11-30T09:00:00.0 | True | 2025-12-03T09:00:00.0 | True | 1038.62 | 326 |  | 7 | 322 | 232 326 310 FS | 03.01.02.08.04 | 1440000 | 1038.62 |  | 1440000 | 245 324 326 FS | 1440000 | 2025-11-30T09:00:00.0 | 2025-11-30T09:00:00.0 2025-12-03T09:00:00.0 |
| 2025-11-30T09:00:00.0 | ed | 764.89 | 764.89 | 764.89 | ACABADO DE FACHALETA H=5CM C/LARGOS VARIABLES | 1.4.1.1.2.8.5 | AS_SOON_AS_POSSIBLE |  | 500 | 86400 | 86400 | 2025-11-30T09:00:00.0 | 2025-12-03T09:00:00.0 | 2026-01-22T09:00:00.0 | 2026-01-25T09:00:00.0 | 4 días | 327 |  | 2025-09-16T11:37:00.0 | 1.4.1.1.2.8.5 |  | PRORATED | True | True | 68b7e764-1b93-f011-adcc-c0bfbe9ea20f | True | PRORATED | 86400 | 2025-12-03T09:00:00.0 | 2025-11-30T09:00:00.0 | True | 2025-12-03T09:00:00.0 | True | 764.89 | 327 |  | 7 | 322 | 247 327 329 FS, 248 327 330 FS | 03.01.02.08.05 | 1526400 | 764.89 |  | 1526400 | 246 324 327 FS | 1526400 | 2025-11-30T09:00:00.0 | 2025-11-30T09:00:00.0 2025-12-03T09:00:00.0 |
| 2025-11-15T09:00:00.0 | ed | 4831.45 | 4831.45 | 4831.45 | VARIOS | 1.4.1.1.2.9 | AS_SOON_AS_POSSIBLE |  | 500 | 1065600 | 1065600 | 2025-11-15T09:00:00.0 | 2025-12-22T09:00:00.0 | 2026-01-25T09:00:00.0 | 2026-01-28T09:00:00.0 | 38 días | 328 | True | 2025-09-16T11:37:00.0 | 1.4.1.1.2.9 | FIXED_DURATION | PRORATED | True | True | 6ab7e764-1b93-f011-adcc-c0bfbe9ea20f | True | PRORATED | 1065600 | 2025-12-22T09:00:00.0 | 2025-11-15T09:00:00.0 | True | 2025-12-22T09:00:00.0 | True | 4831.45 | 328 | True | 6 | 280 |  | 03.01.02.09 | 1065600 |  | 1065600 | 1065600 |  | 2044800 |  |  |
| 2025-12-03T09:00:00.0 | ed | 2798.42 | 2798.42 | 2798.42 | LIMPIEZA PERMANENTE DE OBRA | 1.4.1.1.2.9.1 | AS_SOON_AS_POSSIBLE |  | 500 | 86400 | 86400 | 2025-12-03T09:00:00.0 | 2025-12-06T09:00:00.0 | 2026-01-25T09:00:00.0 | 2026-01-28T09:00:00.0 | 4 días | 329 |  | 2025-09-16T11:37:00.0 | 1.4.1.1.2.9.1 |  | PRORATED | True | True | 6cb7e764-1b93-f011-adcc-c0bfbe9ea20f | True | PRORATED | 86400 | 2025-12-06T09:00:00.0 | 2025-12-03T09:00:00.0 | True | 2025-12-06T09:00:00.0 | True | 2798.42 | 329 |  | 7 | 328 |  | 03.01.02.09.01 | 1526400 | 2798.42 | 1526400 | 1526400 | 247 327 329 FS | 1526400 | 2025-12-03T09:00:00.0 | 2025-12-03T09:00:00.0 2025-12-06T09:00:00.0 |
| 2025-12-03T09:00:00.0 | ed | 265.58 | 265.58 | 265.58 | SUMINISTRO E INSTALACION DE CRUZ EN PARED | 1.4.1.1.2.9.2 | AS_SOON_AS_POSSIBLE |  | 500 | 28800 | 28800 | 2025-12-03T09:00:00.0 | 2025-12-04T09:00:00.0 | 2026-01-27T09:00:00.0 | 2026-01-28T09:00:00.0 | 2 días | 330 |  | 2025-09-16T11:37:00.0 | 1.4.1.1.2.9.2 |  | PRORATED | True | True | 6eb7e764-1b93-f011-adcc-c0bfbe9ea20f | True | PRORATED | 28800 | 2025-12-04T09:00:00.0 | 2025-12-03T09:00:00.0 | True | 2025-12-04T09:00:00.0 | True | 265.58 | 330 |  | 7 | 328 |  | 03.01.02.09.02 | 1584000 | 265.58 | 1584000 | 1584000 | 248 327 330 FS | 1584000 | 2025-12-03T09:00:00.0 | 2025-12-03T09:00:00.0 2025-12-04T09:00:00.0 |
| 2025-11-15T09:00:00.0 | ed | 371.07 | 371.07 | 371.07 | SUMINISTRO E INSTALACION DE LOSETA PIEDRA DE 0.40x0.40 E=1/2", EN MUROS EXTERIOR | 1.4.1.1.2.9.3 | AS_SOON_AS_POSSIBLE |  | 500 | 28800 | 28800 | 2025-11-15T09:00:00.0 | 2025-11-16T09:00:00.0 | 2026-01-27T09:00:00.0 | 2026-01-28T09:00:00.0 | 2 días | 331 |  | 2025-09-16T11:37:00.0 | 1.4.1.1.2.9.3 |  | PRORATED | True | True | 70b7e764-1b93-f011-adcc-c0bfbe9ea20f | True | PRORATED | 28800 | 2025-11-16T09:00:00.0 | 2025-11-15T09:00:00.0 | True | 2025-11-16T09:00:00.0 | True | 371.07 | 331 |  | 7 | 328 |  | 03.01.02.09.03 | 2102400 | 371.07 | 2102400 | 2102400 | 249 286 331 FS | 2102400 | 2025-11-15T09:00:00.0 | 2025-11-15T09:00:00.0 2025-11-16T09:00:00.0 |
| 2025-12-20T09:00:00.0 | ed | 1396.38 | 1396.38 | 1396.38 | LIMPIEZA FINAL | 1.4.1.1.2.9.4 | AS_SOON_AS_POSSIBLE |  | 500 | 57600 | 57600 | 2025-12-20T09:00:00.0 | 2025-12-22T09:00:00.0 | 2026-01-26T09:00:00.0 | 2026-01-28T09:00:00.0 | 3 días | 332 |  | 2025-09-16T11:37:00.0 | 1.4.1.1.2.9.4 |  | PRORATED | True | True | 72b7e764-1b93-f011-adcc-c0bfbe9ea20f | True | PRORATED | 57600 | 2025-12-22T09:00:00.0 | 2025-12-20T09:00:00.0 | True | 2025-12-22T09:00:00.0 | True | 1396.38 | 332 |  | 7 | 328 |  | 03.01.02.09.04 | 1065600 | 1396.38 | 1065600 | 1065600 | 250 313 332 FS | 1065600 | 2025-12-20T09:00:00.0 | 2025-12-20T09:00:00.0 2025-12-22T09:00:00.0 |
| 2025-11-26T09:00:00.0 | ed | 764.52 | 764.52 | 764.52 | SEGURIDAD Y EVACUACION | 1.4.1.1.2.10 | AS_SOON_AS_POSSIBLE |  | 500 | 230400 | 230400 | 2025-11-26T09:00:00.0 | 2025-12-04T09:00:00.0 | 2026-01-20T09:00:00.0 | 2026-01-28T09:00:00.0 | 9 días | 333 | True | 2025-09-16T11:37:00.0 | 1.4.1.1.2.10 | FIXED_DURATION | PRORATED | True | True | 74b7e764-1b93-f011-adcc-c0bfbe9ea20f | True | PRORATED | 230400 | 2025-12-04T09:00:00.0 | 2025-11-26T09:00:00.0 | True | 2025-12-04T09:00:00.0 | True | 764.52 | 333 | True | 6 | 280 |  | 03.01.02.10 | 1584000 |  | 1584000 | 1584000 |  | 1584000 |  |  |
| 2025-11-26T09:00:00.0 | ed | 508.16 | 508.16 | 508.16 | EXTINTOR | 1.4.1.1.2.10.1 | AS_SOON_AS_POSSIBLE |  | 500 | 57600 | 57600 | 2025-11-26T09:00:00.0 | 2025-11-28T09:00:00.0 | 2026-01-20T09:00:00.0 | 2026-01-22T09:00:00.0 | 3 días | 334 |  | 2025-09-16T11:37:00.0 | 1.4.1.1.2.10.1 |  | PRORATED | True | True | 76b7e764-1b93-f011-adcc-c0bfbe9ea20f | True | PRORATED | 57600 | 2025-11-28T09:00:00.0 | 2025-11-26T09:00:00.0 | True | 2025-11-28T09:00:00.0 | True | 508.16 | 334 |  | 7 | 333 | 255 334 336 FS | 03.01.02.10.01 | 1584000 | 508.16 |  | 1584000 | 253 323 334 FS | 1584000 | 2025-11-26T09:00:00.0 | 2025-11-26T09:00:00.0 2025-11-28T09:00:00.0 |
| 2025-11-30T09:00:00.0 | ed | 110.56 | 110.56 | 110.56 | LUCES DE SEGURIDAD | 1.4.1.1.2.10.2 | AS_SOON_AS_POSSIBLE |  | 500 | 57600 | 57600 | 2025-11-30T09:00:00.0 | 2025-12-02T09:00:00.0 | 2026-01-26T09:00:00.0 | 2026-01-28T09:00:00.0 | 3 días | 335 |  | 2025-09-16T11:37:00.0 | 1.4.1.1.2.10.2 |  | PRORATED | True | True | 78b7e764-1b93-f011-adcc-c0bfbe9ea20f | True | PRORATED | 57600 | 2025-12-02T09:00:00.0 | 2025-11-30T09:00:00.0 | True | 2025-12-02T09:00:00.0 | True | 110.56 | 335 |  | 7 | 333 |  | 03.01.02.10.02 | 1641600 | 110.56 | 1641600 | 1641600 | 254 324 335 FS | 1641600 | 2025-11-30T09:00:00.0 | 2025-11-30T09:00:00.0 2025-12-02T09:00:00.0 |
| 2025-11-28T09:00:00.0 | ed | 145.8 | 145.8 | 145.8 | SEÑALES FOTOLUMINISCENTES | 1.4.1.1.2.10.3 | AS_SOON_AS_POSSIBLE |  | 500 | 172800 | 172800 | 2025-11-28T09:00:00.0 | 2025-12-04T09:00:00.0 | 2026-01-22T09:00:00.0 | 2026-01-28T09:00:00.0 | 7 días | 336 |  | 2025-09-16T11:37:00.0 | 1.4.1.1.2.10.3 |  | PRORATED | True | True | 7ab7e764-1b93-f011-adcc-c0bfbe9ea20f | True | PRORATED | 172800 | 2025-12-04T09:00:00.0 | 2025-11-28T09:00:00.0 | True | 2025-12-04T09:00:00.0 | True | 145.8 | 336 |  | 7 | 333 |  | 03.01.02.10.03 | 1584000 | 145.8 | 1584000 | 1584000 | 255 334 336 FS | 1584000 | 2025-11-28T09:00:00.0 | 2025-11-28T09:00:00.0 2025-12-04T09:00:00.0 |
| 2025-10-18T09:00:00.0 | ed | 68068.34 | 68068.34 | 68068.34 | COLUMBARIO | 1.4.1.1.3 | AS_SOON_AS_POSSIBLE | True | 500 | 2937600 | 2937600 | 2025-10-18T09:00:00.0 | 2026-01-28T09:00:00.0 | 2025-12-18T09:00:00.0 | 2026-01-28T09:00:00.0 | 103 días | 337 | True | 2025-09-16T11:37:00.0 | 1.4.1.1.3 | FIXED_DURATION | PRORATED | True | True | 7cb7e764-1b93-f011-adcc-c0bfbe9ea20f | True | PRORATED | 2937600 | 2026-01-28T09:00:00.0 | 2025-10-18T09:00:00.0 | True | 2026-01-28T09:00:00.0 | True | 68068.34 | 337 | True | 5 | 170 |  | 03.01.03 |  |  |  |  |  | 1756800 |  |  |
| 2025-10-18T09:00:00.0 | ed | 13903.24 | 13903.24 | 13903.24 | PISOS Y PAVIMENTOS | 1.4.1.1.3.1 | AS_SOON_AS_POSSIBLE |  | 500 | 2851200 | 2851200 | 2025-10-18T09:00:00.0 | 2026-01-25T09:00:00.0 | 2026-01-22T09:00:00.0 | 2026-01-28T09:00:00.0 | 100 días | 338 | True | 2025-09-16T11:37:00.0 | 1.4.1.1.3.1 | FIXED_DURATION | PRORATED | True | True | 7eb7e764-1b93-f011-adcc-c0bfbe9ea20f | True | PRORATED | 2851200 | 2026-01-25T09:00:00.0 | 2025-10-18T09:00:00.0 | True | 2026-01-25T09:00:00.0 | True | 13903.24 | 338 | True | 6 | 337 |  | 03.01.03.01 | 86400 |  | 86400 | 86400 |  | 2764800 |  |  |
| 2025-10-18T09:00:00.0 | ed | 13002.43 | 13002.43 | 13002.43 | VEREDAS DE ADOQUIN | 1.4.1.1.3.1.1 | AS_SOON_AS_POSSIBLE |  | 500 | 2851200 | 2851200 | 2025-10-18T09:00:00.0 | 2026-01-25T09:00:00.0 | 2026-01-22T09:00:00.0 | 2026-01-28T09:00:00.0 | 100 días | 339 | True | 2025-09-16T11:37:00.0 | 1.4.1.1.3.1.1 | FIXED_DURATION | PRORATED | True | True | 80b7e764-1b93-f011-adcc-c0bfbe9ea20f | True | PRORATED | 2851200 | 2026-01-25T09:00:00.0 | 2025-10-18T09:00:00.0 | True | 2026-01-25T09:00:00.0 | True | 13002.43 | 339 | True | 7 | 338 |  | 03.01.03.01.01 | 86400 |  | 86400 | 86400 |  | 2764800 |  |  |
| 2025-10-18T09:00:00.0 | ed | 2289.23 | 2289.23 | 2289.23 | EXCAVACION A NIVEL DE SUB RASANTE CON EQUIPO EN TERRENO NORMAL EN VEREDAS DE ADOQUIN | 1.4.1.1.3.1.1.1 | AS_SOON_AS_POSSIBLE |  | 500 | 115200 | 115200 | 2025-10-18T09:00:00.0 | 2025-10-22T09:00:00.0 | 2026-01-24T09:00:00.0 | 2026-01-28T09:00:00.0 | 5 días | 340 |  | 2025-09-16T11:37:00.0 | 1.4.1.1.3.1.1.1 |  | PRORATED | True | True | 82b7e764-1b93-f011-adcc-c0bfbe9ea20f | True | PRORATED | 115200 | 2025-10-22T09:00:00.0 | 2025-10-18T09:00:00.0 | True | 2025-10-22T09:00:00.0 | True | 2289.23 | 340 |  | 8 | 339 | 262 340 347 FF, 276 340 369 -57600 FF | 03.01.03.01.01.01 | 2822400 | 2289.23 |  | 2822400 | 256 145 340 FF | 2822400 |  | 2025-10-18T09:00:00.0 2025-10-22T09:00:00.0 |
| 2025-11-25T09:00:00.0 | ed | 1305.97 | 1305.97 | 1305.97 | CONFORMACION Y COMPACTACION DE SUBRASANTE PARA VEREDAS DE ADOQUIN | 1.4.1.1.3.1.1.2 | AS_SOON_AS_POSSIBLE |  | 500 | 28800 | 28800 | 2025-11-25T09:00:00.0 | 2025-11-26T09:00:00.0 | 2026-01-23T09:00:00.0 | 2026-01-24T09:00:00.0 | 2 días | 341 |  | 2025-09-16T11:37:00.0 | 1.4.1.1.3.1.1.2 |  | PRORATED | True | True | 84b7e764-1b93-f011-adcc-c0bfbe9ea20f | True | PRORATED | 28800 | 2025-11-26T09:00:00.0 | 2025-11-25T09:00:00.0 | True | 2025-11-26T09:00:00.0 | True | 1305.97 | 341 |  | 8 | 339 | 258 341 342 FS, 263 341 348 FF, 278 341 371 FF | 03.01.03.01.01.02 | 1699200 | 1305.97 |  | 1699200 | 257 147 341 FF | 1699200 |  | 2025-11-25T09:00:00.0 2025-11-26T09:00:00.0 |
| 2025-11-26T09:00:00.0 | ed | 2347.48 | 2347.48 | 2347.48 | BASE GRANULAR E=0.10 m C/ EQUIPO PARA VEREDAS DE ADOQUIN | 1.4.1.1.3.1.1.3 | AS_SOON_AS_POSSIBLE |  | 500 | 28800 | 28800 | 2025-11-26T09:00:00.0 | 2025-11-27T09:00:00.0 | 2026-01-27T09:00:00.0 | 2026-01-28T09:00:00.0 | 2 días | 342 |  | 2025-09-16T11:37:00.0 | 1.4.1.1.3.1.1.3 |  | PRORATED | True | True | 86b7e764-1b93-f011-adcc-c0bfbe9ea20f | True | PRORATED | 28800 | 2025-11-27T09:00:00.0 | 2025-11-26T09:00:00.0 | True | 2025-11-27T09:00:00.0 | True | 2347.48 | 342 |  | 8 | 339 |  | 03.01.03.01.01.03 | 1785600 | 2347.48 | 1785600 | 1785600 | 258 341 342 FS | 1785600 | 2025-11-26T09:00:00.0 | 2025-11-26T09:00:00.0 2025-11-27T09:00:00.0 |
| 2026-01-22T09:00:00.0 | ed | 912.2 | 912.2 | 912.2 | CAMA DE ARENA h=0.05m PARA ADOQUINADO | 1.4.1.1.3.1.1.4 | AS_SOON_AS_POSSIBLE | True | 500 | 28800 | 28800 | 2026-01-22T09:00:00.0 | 2026-01-23T09:00:00.0 | 2026-01-22T09:00:00.0 | 2026-01-23T09:00:00.0 | 2 días | 343 |  | 2025-09-16T11:37:00.0 | 1.4.1.1.3.1.1.4 |  | PRORATED | True | True | 88b7e764-1b93-f011-adcc-c0bfbe9ea20f | True | PRORATED | 28800 | 2026-01-23T09:00:00.0 | 2026-01-22T09:00:00.0 | True | 2026-01-23T09:00:00.0 | True | 912.2 | 343 |  | 8 | 339 | 260 343 344 FS | 03.01.03.01.01.04 |  | 912.2 |  |  | 259 381 343 FS |  | 2026-01-22T09:00:00.0 | 2026-01-22T09:00:00.0 2026-01-23T09:00:00.0 |
| 2026-01-23T09:00:00.0 | ed | 3376.17 | 3376.17 | 3376.17 | ADOQUINADO DE CONCRETO (4x10x20cm) | 1.4.1.1.3.1.1.5 | AS_SOON_AS_POSSIBLE | True | 500 | 57600 | 57600 | 2026-01-23T09:00:00.0 | 2026-01-25T09:00:00.0 | 2026-01-23T09:00:00.0 | 2026-01-25T09:00:00.0 | 3 días | 344 |  | 2025-09-16T11:37:00.0 | 1.4.1.1.3.1.1.5 |  | PRORATED | True | True | 8ab7e764-1b93-f011-adcc-c0bfbe9ea20f | True | PRORATED | 57600 | 2026-01-25T09:00:00.0 | 2026-01-23T09:00:00.0 | True | 2026-01-25T09:00:00.0 | True | 3376.17 | 344 |  | 8 | 339 | 261 344 345 FF, 270 344 358 FS, 273 344 365 FS, 280 344 374 FS | 03.01.03.01.01.05 |  | 3376.17 |  |  | 260 343 344 FS |  | 2026-01-23T09:00:00.0 | 2026-01-23T09:00:00.0 2026-01-25T09:00:00.0 |
| 2026-01-24T09:00:00.0 | ed | 2771.38 | 2771.38 | 2771.38 | ELIMINACION DE MATERIAL EXCEDENTE C/VOLQ. 15M3, D=10km | 1.4.1.1.3.1.1.6 | AS_SOON_AS_POSSIBLE |  | 500 | 28800 | 28800 | 2026-01-24T09:00:00.0 | 2026-01-25T09:00:00.0 | 2026-01-27T09:00:00.0 | 2026-01-28T09:00:00.0 | 2 días | 345 |  | 2025-09-16T11:37:00.0 | 1.4.1.1.3.1.1.6 |  | PRORATED | True | True | 8cb7e764-1b93-f011-adcc-c0bfbe9ea20f | True | PRORATED | 28800 | 2026-01-25T09:00:00.0 | 2026-01-24T09:00:00.0 | True | 2026-01-25T09:00:00.0 | True | 2771.38 | 345 |  | 8 | 339 |  | 03.01.03.01.01.06 | 86400 | 2771.38 | 86400 | 86400 | 261 344 345 FF | 86400 |  | 2026-01-24T09:00:00.0 2026-01-25T09:00:00.0 |
| 2025-10-21T09:00:00.0 | ed | 900.81 | 900.81 | 900.81 | VEREDAS DE CONCRETO | 1.4.1.1.3.1.2 | AS_SOON_AS_POSSIBLE |  | 500 | 1152000 | 1152000 | 2025-10-21T09:00:00.0 | 2025-11-30T09:00:00.0 | 2026-01-23T09:00:00.0 | 2026-01-28T09:00:00.0 | 41 días | 346 | True | 2025-09-16T11:37:00.0 | 1.4.1.1.3.1.2 | FIXED_DURATION | PRORATED | True | True | 8eb7e764-1b93-f011-adcc-c0bfbe9ea20f | True | PRORATED | 1152000 | 2025-11-30T09:00:00.0 | 2025-10-21T09:00:00.0 | True | 2025-11-30T09:00:00.0 | True | 900.81 | 346 | True | 7 | 338 |  | 03.01.03.01.02 | 1699200 |  | 1699200 | 1699200 |  | 2707200 |  |  |
| 2025-10-21T09:00:00.0 | ed | 22.4 | 22.4 | 22.4 | EXCAVACION A NIVEL DE SUB RASANTE CON EQUIPO EN TERRENO NORMAL EN VEREDAS DE CONCRETO | 1.4.1.1.3.1.2.1 | AS_SOON_AS_POSSIBLE |  | 500 | 28800 | 28800 | 2025-10-21T09:00:00.0 | 2025-10-22T09:00:00.0 | 2026-01-27T09:00:00.0 | 2026-01-28T09:00:00.0 | 2 días | 347 |  | 2025-09-16T11:37:00.0 | 1.4.1.1.3.1.2.1 |  | PRORATED | True | True | 90b7e764-1b93-f011-adcc-c0bfbe9ea20f | True | PRORATED | 28800 | 2025-10-22T09:00:00.0 | 2025-10-21T09:00:00.0 | True | 2025-10-22T09:00:00.0 | True | 22.4 | 347 |  | 8 | 346 | 279 347 372 FF | 03.01.03.01.02.01 | 2822400 | 22.4 |  | 2822400 | 262 340 347 FF | 2822400 |  | 2025-10-21T09:00:00.0 2025-10-22T09:00:00.0 |
| 2025-11-25T09:00:00.0 | ed | 48.76 | 48.76 | 48.76 | CONFORMACION Y COMPACTACION DE SUBRASANTE PARA VEREDAS DE CONCRETO | 1.4.1.1.3.1.2.2 | AS_SOON_AS_POSSIBLE |  | 500 | 28800 | 28800 | 2025-11-25T09:00:00.0 | 2025-11-26T09:00:00.0 | 2026-01-23T09:00:00.0 | 2026-01-24T09:00:00.0 | 2 días | 348 |  | 2025-09-16T11:37:00.0 | 1.4.1.1.3.1.2.2 |  | PRORATED | True | True | 92b7e764-1b93-f011-adcc-c0bfbe9ea20f | True | PRORATED | 28800 | 2025-11-26T09:00:00.0 | 2025-11-25T09:00:00.0 | True | 2025-11-26T09:00:00.0 | True | 48.76 | 348 |  | 8 | 346 | 264 348 349 FS | 03.01.03.01.02.02 | 1699200 | 48.76 |  | 1699200 | 263 341 348 FF | 1699200 |  | 2025-11-25T09:00:00.0 2025-11-26T09:00:00.0 |
| 2025-11-26T09:00:00.0 | ed | 87.65 | 87.65 | 87.65 | BASE GRANULAR E=0.10 m C/ EQUIPO PARA VEREDAS DE CONCRETO | 1.4.1.1.3.1.2.3 | AS_SOON_AS_POSSIBLE |  | 500 | 28800 | 28800 | 2025-11-26T09:00:00.0 | 2025-11-27T09:00:00.0 | 2026-01-24T09:00:00.0 | 2026-01-25T09:00:00.0 | 2 días | 349 |  | 2025-09-16T11:37:00.0 | 1.4.1.1.3.1.2.3 |  | PRORATED | True | True | 94b7e764-1b93-f011-adcc-c0bfbe9ea20f | True | PRORATED | 28800 | 2025-11-27T09:00:00.0 | 2025-11-26T09:00:00.0 | True | 2025-11-27T09:00:00.0 | True | 87.65 | 349 |  | 8 | 346 | 265 349 350 FS | 03.01.03.01.02.03 | 1699200 | 87.65 |  | 1699200 | 264 348 349 FS | 1699200 | 2025-11-26T09:00:00.0 | 2025-11-26T09:00:00.0 2025-11-27T09:00:00.0 |

| start | leveling_delay_units | cost | cost_variance | remaining_cost | name | wbs | constraint_type | critical | priority | duration | remaining_duration | early_start | early_finish | late_start | late_finish | text2 | unique_id | summary | created | outline_number | type | fixed_cost_accrual | leveling_can_split | level_assignments | guid | active | baseline_fixed_cost_accrual | scheduled_duration | scheduled_finish | scheduled_start | recalc_outline_codes | finish | auto_compute_actuals | remaining_regular_cost | id | rollup | outline_level | parent_task_unique_id | successors | text1 | finish_slack | fixed_cost | free_slack | total_slack | predecessors | start_slack | summary_progress | work_splits |
| --- | --- | --- | --- | --- | --- | --- | --- | --- | --- | --- | --- | --- | --- | --- | --- | --- | --- | --- | --- | --- | --- | --- | --- | --- | --- | --- | --- | --- | --- | --- | --- | --- | --- | --- | --- | --- | --- | --- | --- | --- | --- | --- | --- | --- | --- | --- | --- | --- |
| 2025-11-27T09:00:00.0 | ed | 499.75 | 499.75 | 499.75 | ENCOFRADO Y DESENCOFRADO EN VEREDAS DE CONCRETO | 1.4.1.1.3.1.2.4 | AS_SOON_AS_POSSIBLE |  | 500 | 28800 | 28800 | 2025-11-27T09:00:00.0 | 2025-11-28T09:00:00.0 | 2026-01-25T09:00:00.0 | 2026-01-26T09:00:00.0 | 2 días | 350 |  | 2025-09-16T11:37:00.0 | 1.4.1.1.3.1.2.4 |  | PRORATED | True | True | 96b7e764-1b93-f011-adcc-c0bfbe9ea20f | True | PRORATED | 28800 | 2025-11-28T09:00:00.0 | 2025-11-27T09:00:00.0 | True | 2025-11-28T09:00:00.0 | True | 499.75 | 350 |  | 8 | 346 | 266 350 351 FS | 03.01.03.01.02.04 | 1699200 | 499.75 |  | 1699200 | 265 349 350 FS | 1699200 | 2025-11-27T09:00:00.0 | 2025-11-27T09:00:00.0 2025-11-28T09:00:00.0 |
| 2025-11-28T09:00:00.0 | ed | 201.23 | 201.23 | 201.23 | CONCRETO PREMEZCLADO fc=175 kg/cm2 EN VEREDAS INCL. BRUÑADO | 1.4.1.1.3.1.2.5 | AS_SOON_AS_POSSIBLE |  | 500 | 28800 | 28800 | 2025-11-28T09:00:00.0 | 2025-11-29T09:00:00.0 | 2026-01-26T09:00:00.0 | 2026-01-27T09:00:00.0 | 2 días | 351 |  | 2025-09-16T11:37:00.0 | 1.4.1.1.3.1.2.5 |  | PRORATED | True | True | 98b7e764-1b93-f011-adcc-c0bfbe9ea20f | True | PRORATED | 28800 | 2025-11-29T09:00:00.0 | 2025-11-28T09:00:00.0 | True | 2025-11-29T09:00:00.0 | True | 201.23 | 351 |  | 8 | 346 | 267 351 352 FS | 03.01.03.01.02.05 | 1699200 | 201.23 |  | 1699200 | 266 350 351 FS | 1699200 | 2025-11-28T09:00:00.0 | 2025-11-28T09:00:00.0 2025-11-29T09:00:00.0 |
| 2025-11-29T09:00:00.0 | ed | 17.44 | 17.44 | 17.44 | CURADO DE CONCRETO CON ADITIVO CURADOR | 1.4.1.1.3.1.2.6 | AS_SOON_AS_POSSIBLE |  | 500 | 28800 | 28800 | 2025-11-29T09:00:00.0 | 2025-11-30T09:00:00.0 | 2026-01-27T09:00:00.0 | 2026-01-28T09:00:00.0 | 2 días | 352 |  | 2025-09-16T11:37:00.0 | 1.4.1.1.3.1.2.6 |  | PRORATED | True | True | 9ab7e764-1b93-f011-adcc-c0bfbe9ea20f | True | PRORATED | 28800 | 2025-11-30T09:00:00.0 | 2025-11-29T09:00:00.0 | True | 2025-11-30T09:00:00.0 | True | 17.44 | 352 |  | 8 | 346 | 268 352 353 SS | 03.01.03.01.02.06 | 1699200 | 17.44 |  | 1699200 | 267 351 352 FS | 1699200 | 2025-11-29T09:00:00.0 | 2025-11-29T09:00:00.0 2025-11-30T09:00:00.0 |
| 2025-11-29T09:00:00.0 | ed | 23.58 | 23.58 | 23.58 | ELIMINACION DE MATERIAL EXCEDENTE C/VOLQ. 15M3, D=10km | 1.4.1.1.3.1.2.7 | AS_SOON_AS_POSSIBLE |  | 500 | 28800 | 28800 | 2025-11-29T09:00:00.0 | 2025-11-30T09:00:00.0 | 2026-01-27T09:00:00.0 | 2026-01-28T09:00:00.0 | 2 días | 353 |  | 2025-09-16T11:37:00.0 | 1.4.1.1.3.1.2.7 |  | PRORATED | True | True | 9cb7e764-1b93-f011-adcc-c0bfbe9ea20f | True | PRORATED | 28800 | 2025-11-30T09:00:00.0 | 2025-11-29T09:00:00.0 | True | 2025-11-30T09:00:00.0 | True | 23.58 | 353 |  | 8 | 346 |  | 03.01.03.01.02.07 | 1699200 | 23.58 | 1699200 | 1699200 | 268 352 353 SS | 1699200 | 2025-11-29T09:00:00.0 | 2025-11-29T09:00:00.0 2025-11-30T09:00:00.0 |
| 2025-12-18T09:00:00.0 | ed | 7480.24 | 7480.24 | 7480.24 | MURETES DE ALBAÑILERIA | 1.4.1.1.3.2 | AS_SOON_AS_POSSIBLE | True | 500 | 288000 | 288000 | 2025-12-18T09:00:00.0 | 2025-12-28T09:00:00.0 | 2025-12-18T09:00:00.0 | 2025-12-28T09:00:00.0 | 11 días | 354 | True | 2025-09-16T11:37:00.0 | 1.4.1.1.3.2 | FIXED_DURATION | PRORATED | True | True | 9eb7e764-1b93-f011-adcc-c0bfbe9ea20f | True | PRORATED | 288000 | 2025-12-28T09:00:00.0 | 2025-12-18T09:00:00.0 | True | 2025-12-28T09:00:00.0 | True | 7480.24 | 354 | True | 6 | 337 |  | 03.01.03.02 |  |  |  |  |  |  |  |  |
| 2025-12-18T09:00:00.0 | ed | 7480.24 | 7480.24 | 7480.24 | MURO DE LADRILLO KING KONG H18 | 1.4.1.1.3.2.1 | AS_SOON_AS_POSSIBLE | True | 500 | 288000 | 288000 | 2025-12-18T09:00:00.0 | 2025-12-28T09:00:00.0 | 2025-12-18T09:00:00.0 | 2025-12-28T09:00:00.0 | 11 días | 355 |  | 2025-09-16T11:37:00.0 | 1.4.1.1.3.2.1 |  | PRORATED | True | True | a0b7e764-1b93-f011-adcc-c0bfbe9ea20f | True | PRORATED | 288000 | 2025-12-28T09:00:00.0 | 2025-12-18T09:00:00.0 | True | 2025-12-28T09:00:00.0 | True | 7480.24 | 355 |  | 7 | 354 | 282 355 379 -28800 FS | 03.01.03.02.01 |  | 7480.24 |  |  | 269 163 355 -57600 FS |  | 2025-12-18T09:00:00.0 | 2025-12-18T09:00:00.0 2025-12-28T09:00:00.0 |
| 2026-01-25T09:00:00.0 | ed | 1522.61 | 1522.61 | 1522.61 | PINTURA | 1.4.1.1.3.3 | AS_SOON_AS_POSSIBLE | True | 500 | 86400 | 86400 | 2026-01-25T09:00:00.0 | 2026-01-28T09:00:00.0 | 2026-01-25T09:00:00.0 | 2026-01-28T09:00:00.0 | 4 días | 356 | True | 2025-09-16T11:37:00.0 | 1.4.1.1.3.3 | FIXED_DURATION | PRORATED | True | True | a2b7e764-1b93-f011-adcc-c0bfbe9ea20f | True | PRORATED | 86400 | 2026-01-28T09:00:00.0 | 2026-01-25T09:00:00.0 | True | 2026-01-28T09:00:00.0 | True | 1522.61 | 356 | True | 6 | 337 |  | 03.01.03.03 |  |  |  |  |  |  |  |  |
| 2026-01-25T09:00:00.0 | ed | 1216.06 | 1216.06 | 1216.06 | PINTURA EN MURO EXTERIOR DE COLUMBARIOS H=2.60 | 1.4.1.1.3.3.1 | AS_SOON_AS_POSSIBLE | True | 500 | 86400 | 86400 | 2026-01-25T09:00:00.0 | 2026-01-28T09:00:00.0 | 2026-01-25T09:00:00.0 | 2026-01-28T09:00:00.0 | 4 días | 357 | True | 2025-09-16T11:37:00.0 | 1.4.1.1.3.3.1 | FIXED_DURATION | PRORATED | True | True | a4b7e764-1b93-f011-adcc-c0bfbe9ea20f | True | PRORATED | 86400 | 2026-01-28T09:00:00.0 | 2026-01-25T09:00:00.0 | True | 2026-01-28T09:00:00.0 | True | 1216.06 | 357 | True | 7 | 356 |  | 03.01.03.03.01 |  |  |  |  |  |  |  |  |
| 2026-01-25T09:00:00.0 | ed | 1216.06 | 1216.06 | 1216.06 | PINTURA LATEX EN MUROS 2 MANOS | 1.4.1.1.3.3.1.1 | AS_SOON_AS_POSSIBLE | True | 500 | 86400 | 86400 | 2026-01-25T09:00:00.0 | 2026-01-28T09:00:00.0 | 2026-01-25T09:00:00.0 | 2026-01-28T09:00:00.0 | 4 días | 358 |  | 2025-09-16T11:37:00.0 | 1.4.1.1.3.3.1.1 |  | PRORATED | True | True | a6b7e764-1b93-f011-adcc-c0bfbe9ea20f | True | PRORATED | 86400 | 2026-01-28T09:00:00.0 | 2026-01-25T09:00:00.0 | True | 2026-01-28T09:00:00.0 | True | 1216.06 | 358 |  | 8 | 357 | 271 358 360 SS, 285 358 383 FF, 416 358 555 FS | 03.01.03.03.01.01 |  | 1216.06 |  |  | 270 344 358 FS |  | 2026-01-25T09:00:00.0 | 2026-01-25T09:00:00.0 2026-01-28T09:00:00.0 |
| 2026-01-25T09:00:00.0 | ed | 255.53 | 255.53 | 255.53 | PINTURA DE RAMPAS | 1.4.1.1.3.3.2 | AS_SOON_AS_POSSIBLE |  | 500 | 28800 | 28800 | 2026-01-25T09:00:00.0 | 2026-01-26T09:00:00.0 | 2026-01-27T09:00:00.0 | 2026-01-28T09:00:00.0 | 2 días | 359 | True | 2025-09-16T11:37:00.0 | 1.4.1.1.3.3.2 | FIXED_DURATION | PRORATED | True | True | a8b7e764-1b93-f011-adcc-c0bfbe9ea20f | True | PRORATED | 28800 | 2026-01-26T09:00:00.0 | 2026-01-25T09:00:00.0 | True | 2026-01-26T09:00:00.0 | True | 255.53 | 359 | True | 7 | 356 |  | 03.01.03.03.02 | 57600 |  | 57600 | 57600 |  | 57600 |  |  |
| 2026-01-25T09:00:00.0 | ed | 255.53 | 255.53 | 255.53 | PINTURA ACRILICA ANTIDESLIZANTE AMARILLA | 1.4.1.1.3.3.2.1 | AS_SOON_AS_POSSIBLE |  | 500 | 28800 | 28800 | 2026-01-25T09:00:00.0 | 2026-01-26T09:00:00.0 | 2026-01-27T09:00:00.0 | 2026-01-28T09:00:00.0 | 2 días | 360 |  | 2025-09-16T11:37:00.0 | 1.4.1.1.3.3.2.1 |  | PRORATED | True | True | aab7e764-1b93-f011-adcc-c0bfbe9ea20f | True | PRORATED | 28800 | 2026-01-26T09:00:00.0 | 2026-01-25T09:00:00.0 | True | 2026-01-26T09:00:00.0 | True | 255.53 | 360 |  | 8 | 359 |  | 03.01.03.03.02.01 | 57600 | 255.53 | 57600 | 57600 | 271 358 360 SS | 57600 | 2026-01-25T09:00:00.0 | 2026-01-25T09:00:00.0 2026-01-26T09:00:00.0 |
| 2026-01-27T09:00:00.0 | ed | 51.02 | 51.02 | 51.02 | PINTURA DE POSTE DE SEÑALIZACION | 1.4.1.1.3.3.3 | AS_SOON_AS_POSSIBLE | True | 500 | 28800 | 28800 | 2026-01-27T09:00:00.0 | 2026-01-28T09:00:00.0 | 2026-01-27T09:00:00.0 | 2026-01-28T09:00:00.0 | 2 días | 361 | True | 2025-09-16T11:37:00.0 | 1.4.1.1.3.3.3 | FIXED_DURATION | PRORATED | True | True | acb7e764-1b93-f011-adcc-c0bfbe9ea20f | True | PRORATED | 28800 | 2026-01-28T09:00:00.0 | 2026-01-27T09:00:00.0 | True | 2026-01-28T09:00:00.0 | True | 51.02 | 361 | True | 7 | 356 |  | 03.01.03.03.03 |  |  |  |  |  |  |  |  |
| 2026-01-27T09:00:00.0 | ed | 51.02 | 51.02 | 51.02 | REFRACCION, MANTENIMIENTO Y PINTURA EN ACRILICO GRIS | 1.4.1.1.3.3.3.1 | AS_SOON_AS_POSSIBLE | True | 500 | 28800 | 28800 | 2026-01-27T09:00:00.0 | 2026-01-28T09:00:00.0 | 2026-01-27T09:00:00.0 | 2026-01-28T09:00:00.0 | 2 días | 362 |  | 2025-09-16T11:37:00.0 | 1.4.1.1.3.3.3.1 |  | PRORATED | True | True | aeb7e764-1b93-f011-adcc-c0bfbe9ea20f | True | PRORATED | 28800 | 2026-01-28T09:00:00.0 | 2026-01-27T09:00:00.0 | True | 2026-01-28T09:00:00.0 | True | 51.02 | 362 |  | 8 | 361 |  | 03.01.03.03.03.01 |  | 51.02 |  |  | 272 366 362 FS |  | 2026-01-27T09:00:00.0 | 2026-01-27T09:00:00.0 2026-01-28T09:00:00.0 |
| 2025-10-19T09:00:00.0 | ed | 4731.5 | 4731.5 | 4731.5 | VARIOS | 1.4.1.1.3.4 | AS_SOON_AS_POSSIBLE | True | 500 | 2908800 | 2908800 | 2025-10-19T09:00:00.0 | 2026-01-28T09:00:00.0 | 2026-01-25T09:00:00.0 | 2026-01-28T09:00:00.0 | 102 días | 363 | True | 2025-09-16T11:37:00.0 | 1.4.1.1.3.4 | FIXED_DURATION | PRORATED | True | True | b0b7e764-1b93-f011-adcc-c0bfbe9ea20f | True | PRORATED | 2908800 | 2026-01-28T09:00:00.0 | 2025-10-19T09:00:00.0 | True | 2026-01-28T09:00:00.0 | True | 4731.5 | 363 | True | 6 | 337 |  | 03.01.03.04 |  |  |  |  |  | 2822400 |  |  |
| 2026-01-25T09:00:00.0 | ed | 145.12 | 145.12 | 145.12 | REUBICACION DE POSTE DE SEÑALIZACION | 1.4.1.1.3.4.1 | AS_SOON_AS_POSSIBLE | True | 500 | 86400 | 86400 | 2026-01-25T09:00:00.0 | 2026-01-28T09:00:00.0 | 2026-01-25T09:00:00.0 | 2026-01-28T09:00:00.0 | 4 días | 364 | True | 2025-09-16T11:37:00.0 | 1.4.1.1.3.4.1 | FIXED_DURATION | PRORATED | True | True | b2b7e764-1b93-f011-adcc-c0bfbe9ea20f | True | PRORATED | 86400 | 2026-01-28T09:00:00.0 | 2026-01-25T09:00:00.0 | True | 2026-01-28T09:00:00.0 | True | 145.12 | 364 | True | 7 | 363 |  | 03.01.03.04.01 |  |  |  |  |  |  |  |  |
| 2026-01-25T09:00:00.0 | ed | 3.86 | 3.86 | 3.86 | EXCAVACION PARA BASE DE CONCRETO 50x50x50CM | 1.4.1.1.3.4.1.1 | AS_SOON_AS_POSSIBLE | True | 500 | 28800 | 28800 | 2026-01-25T09:00:00.0 | 2026-01-26T09:00:00.0 | 2026-01-25T09:00:00.0 | 2026-01-26T09:00:00.0 | 2 días | 365 |  | 2025-09-16T11:37:00.0 | 1.4.1.1.3.4.1.1 |  | PRORATED | True | True | b4b7e764-1b93-f011-adcc-c0bfbe9ea20f | True | PRORATED | 28800 | 2026-01-26T09:00:00.0 | 2026-01-25T09:00:00.0 | True | 2026-01-26T09:00:00.0 | True | 3.86 | 365 |  | 8 | 364 | 274 365 366 FS | 03.01.03.04.01.01 |  | 3.86 |  |  | 273 344 365 FS |  | 2026-01-25T09:00:00.0 | 2026-01-25T09:00:00.0 2026-01-26T09:00:00.0 |
| 2026-01-26T09:00:00.0 | ed | 129.68 | 129.68 | 129.68 | DADO BASE DE CONCRETO 50x50x50cm | 1.4.1.1.3.4.1.2 | AS_SOON_AS_POSSIBLE | True | 500 | 28800 | 28800 | 2026-01-26T09:00:00.0 | 2026-01-27T09:00:00.0 | 2026-01-26T09:00:00.0 | 2026-01-27T09:00:00.0 | 2 días | 366 |  | 2025-09-16T11:37:00.0 | 1.4.1.1.3.4.1.2 |  | PRORATED | True | True | 5fdcea6a-1b93-f011-adcc-c0bfbe9ea20f | True | PRORATED | 28800 | 2026-01-27T09:00:00.0 | 2026-01-26T09:00:00.0 | True | 2026-01-27T09:00:00.0 | True | 129.68 | 366 |  | 8 | 364 | 272 366 362 FS, 275 366 367 FS | 03.01.03.04.01.02 |  | 129.68 |  |  | 274 365 366 FS |  | 2026-01-26T09:00:00.0 | 2026-01-26T09:00:00.0 2026-01-27T09:00:00.0 |
| 2026-01-27T09:00:00.0 | ed | 11.58 | 11.58 | 11.58 | ELIMINACION DE MATERIAL EXCEDENTE C/VOLQ. 15M3, D=10km | 1.4.1.1.3.4.1.3 | AS_SOON_AS_POSSIBLE | True | 500 | 28800 | 28800 | 2026-01-27T09:00:00.0 | 2026-01-28T09:00:00.0 | 2026-01-27T09:00:00.0 | 2026-01-28T09:00:00.0 | 2 días | 367 |  | 2025-09-16T11:37:00.0 | 1.4.1.1.3.4.1.3 |  | PRORATED | True | True | 61dcea6a-1b93-f011-adcc-c0bfbe9ea20f | True | PRORATED | 28800 | 2026-01-28T09:00:00.0 | 2026-01-27T09:00:00.0 | True | 2026-01-28T09:00:00.0 | True | 11.58 | 367 |  | 8 | 364 |  | 03.01.03.04.01.03 |  | 11.58 |  |  | 275 366 367 FS |  | 2026-01-27T09:00:00.0 | 2026-01-27T09:00:00.0 2026-01-28T09:00:00.0 |
| 2025-10-19T09:00:00.0 | ed | 4220.67 | 4220.67 | 4220.67 | DEMOLICION Y CONSTRUCCION DE RED Y BUZON DE AGUA | 1.4.1.1.3.4.2 | AS_SOON_AS_POSSIBLE |  | 500 | 1094400 | 1094400 | 2025-10-19T09:00:00.0 | 2025-11-26T09:00:00.0 | 2026-01-26T09:00:00.0 | 2026-01-28T09:00:00.0 | 39 días | 368 | True | 2025-09-16T11:37:00.0 | 1.4.1.1.3.4.2 | FIXED_DURATION | PRORATED | True | True | 63dcea6a-1b93-f011-adcc-c0bfbe9ea20f | True | PRORATED | 1094400 | 2025-11-26T09:00:00.0 | 2025-10-19T09:00:00.0 | True | 2025-11-26T09:00:00.0 | True | 4220.67 | 368 | True | 7 | 363 |  | 03.01.03.04.02 | 1814400 |  | 1814400 | 1814400 |  | 2851200 |  |  |
| 2025-10-19T09:00:00.0 | ed | 117.46 | 117.46 | 117.46 | DEMOLICION Y SELLADO DE SALIDA DE BUZON EXISTENTE | 1.4.1.1.3.4.2.1 | AS_SOON_AS_POSSIBLE |  | 500 | 28800 | 28800 | 2025-10-19T09:00:00.0 | 2025-10-20T09:00:00.0 | 2026-01-26T09:00:00.0 | 2026-01-27T09:00:00.0 | 2 días | 369 |  | 2025-09-16T11:37:00.0 | 1.4.1.1.3.4.2.1 |  | PRORATED | True | True | 65dcea6a-1b93-f011-adcc-c0bfbe9ea20f | True | PRORATED | 28800 | 2025-10-20T09:00:00.0 | 2025-10-19T09:00:00.0 | True | 2025-10-20T09:00:00.0 | True | 117.46 | 369 |  | 8 | 368 | 277 369 370 FS | 03.01.03.04.02.01 | 2851200 | 117.46 |  | 2851200 | 276 340 369 -57600 FF | 2851200 |  | 2025-10-19T09:00:00.0 2025-10-20T09:00:00.0 |
| 2025-10-20T09:00:00.0 | ed | 186.29 | 186.29 | 186.29 | EXCAVACION PARA NUEVA TUBERIA Y BUZONES | 1.4.1.1.3.4.2.2 | AS_SOON_AS_POSSIBLE |  | 500 | 28800 | 28800 | 2025-10-20T09:00:00.0 | 2025-10-21T09:00:00.0 | 2026-01-27T09:00:00.0 | 2026-01-28T09:00:00.0 | 2 días | 370 |  | 2025-09-16T11:37:00.0 | 1.4.1.1.3.4.2.2 |  | PRORATED | True | True | 67dcea6a-1b93-f011-adcc-c0bfbe9ea20f | True | PRORATED | 28800 | 2025-10-21T09:00:00.0 | 2025-10-20T09:00:00.0 | True | 2025-10-21T09:00:00.0 | True | 186.29 | 370 |  | 8 | 368 |  | 03.01.03.04.02.02 | 2851200 | 186.29 | 2851200 | 2851200 | 277 369 370 FS | 2851200 | 2025-10-20T09:00:00.0 | 2025-10-20T09:00:00.0 2025-10-21T09:00:00.0 |
| 2025-11-25T09:00:00.0 | ed | 210.72 | 210.72 | 210.72 | CONSTRUCCION DE NUEVOS BUZONES DE INSPECCION INC. SALIDA DE AGUA | 1.4.1.1.3.4.2.3 | AS_SOON_AS_POSSIBLE |  | 500 | 28800 | 28800 | 2025-11-25T09:00:00.0 | 2025-11-26T09:00:00.0 | 2026-01-27T09:00:00.0 | 2026-01-28T09:00:00.0 | 2 días | 371 |  | 2025-09-16T11:37:00.0 | 1.4.1.1.3.4.2.3 |  | PRORATED | True | True | 69dcea6a-1b93-f011-adcc-c0bfbe9ea20f | True | PRORATED | 28800 | 2025-11-26T09:00:00.0 | 2025-11-25T09:00:00.0 | True | 2025-11-26T09:00:00.0 | True | 210.72 | 371 |  | 8 | 368 |  | 03.01.03.04.02.03 | 1814400 | 210.72 | 1814400 | 1814400 | 278 341 371 FF | 1814400 |  | 2025-11-25T09:00:00.0 2025-11-26T09:00:00.0 |
| 2025-10-20T09:00:00.0 | ed | 3706.2 | 3706.2 | 3706.2 | RED DE DISTRIBUCION TUBERIA DE 2" PVC | 1.4.1.1.3.4.2.4 | AS_SOON_AS_POSSIBLE |  | 500 | 57600 | 57600 | 2025-10-20T09:00:00.0 | 2025-10-22T09:00:00.0 | 2026-01-26T09:00:00.0 | 2026-01-28T09:00:00.0 | 3 días | 372 |  | 2025-09-16T11:37:00.0 | 1.4.1.1.3.4.2.4 |  | PRORATED | True | True | 6bdcea6a-1b93-f011-adcc-c0bfbe9ea20f | True | PRORATED | 57600 | 2025-10-22T09:00:00.0 | 2025-10-20T09:00:00.0 | True | 2025-10-22T09:00:00.0 | True | 3706.2 | 372 |  | 8 | 368 |  | 03.01.03.04.02.04 | 2822400 | 3706.2 | 2822400 | 2822400 | 279 347 372 FF | 2822400 |  | 2025-10-20T09:00:00.0 2025-10-22T09:00:00.0 |
| 2026-01-25T09:00:00.0 | ed | 65.49 | 65.49 | 65.49 | SEMBRADO | 1.4.1.1.3.4.3 | AS_SOON_AS_POSSIBLE |  | 500 | 28800 | 28800 | 2026-01-25T09:00:00.0 | 2026-01-26T09:00:00.0 | 2026-01-27T09:00:00.0 | 2026-01-28T09:00:00.0 | 2 días | 373 | True | 2025-09-16T11:37:00.0 | 1.4.1.1.3.4.3 | FIXED_DURATION | PRORATED | True | True | 6ddcea6a-1b93-f011-adcc-c0bfbe9ea20f | True | PRORATED | 28800 | 2026-01-26T09:00:00.0 | 2026-01-25T09:00:00.0 | True | 2026-01-26T09:00:00.0 | True | 65.49 | 373 | True | 7 | 363 |  | 03.01.03.04.03 | 57600 |  | 57600 | 57600 |  | 57600 |  |  |
| 2026-01-25T09:00:00.0 | ed | 65.49 | 65.49 | 65.49 | SEMBRADO DE PLANTA PERENNE | 1.4.1.1.3.4.3.1 | AS_SOON_AS_POSSIBLE |  | 500 | 28800 | 28800 | 2026-01-25T09:00:00.0 | 2026-01-26T09:00:00.0 | 2026-01-27T09:00:00.0 | 2026-01-28T09:00:00.0 | 2 días | 374 |  | 2025-09-16T11:37:00.0 | 1.4.1.1.3.4.3.1 |  | PRORATED | True | True | 6fdcea6a-1b93-f011-adcc-c0bfbe9ea20f | True | PRORATED | 28800 | 2026-01-26T09:00:00.0 | 2026-01-25T09:00:00.0 | True | 2026-01-26T09:00:00.0 | True | 65.49 | 374 |  | 8 | 373 |  | 03.01.03.04.03.01 | 57600 | 65.49 | 57600 | 57600 | 280 344 374 FS | 57600 | 2026-01-25T09:00:00.0 | 2026-01-25T09:00:00.0 2026-01-26T09:00:00.0 |
| 2026-01-23T09:00:00.0 | ed | 300.22 | 300.22 | 300.22 | LETRERO DE PABELLON | 1.4.1.1.3.4.4 | AS_SOON_AS_POSSIBLE |  | 500 | 28800 | 28800 | 2026-01-23T09:00:00.0 | 2026-01-24T09:00:00.0 | 2026-01-27T09:00:00.0 | 2026-01-28T09:00:00.0 | 2 días | 375 | True | 2025-09-16T11:37:00.0 | 1.4.1.1.3.4.4 | FIXED_DURATION | PRORATED | True | True | 71dcea6a-1b93-f011-adcc-c0bfbe9ea20f | True | PRORATED | 28800 | 2026-01-24T09:00:00.0 | 2026-01-23T09:00:00.0 | True | 2026-01-24T09:00:00.0 | True | 300.22 | 375 | True | 7 | 363 |  | 03.01.03.04.04 | 115200 |  | 115200 | 115200 |  | 115200 |  |  |
| 2026-01-23T09:00:00.0 | ed | 300.22 | 300.22 | 300.22 | LETRERO DE PABELLON 1.25 X .35 DE ACERO INOXIDABLE DE ACUERDO A | 1.4.1.1.3.4.4.1 | AS_SOON_AS_POSSIBLE |  | 500 | 28800 | 28800 | 2026-01-23T09:00:00.0 | 2026-01-24T09:00:00.0 | 2026-01-27T09:00:00.0 | 2026-01-28T09:00:00.0 | 2 días | 376 |  | 2025-09-16T11:37:00.0 | 1.4.1.1.3.4.4.1 |  | PRORATED | True | True | 73dcea6a-1b93-f011-adcc-c0bfbe9ea20f | True | PRORATED | 28800 | 2026-01-24T09:00:00.0 | 2026-01-23T09:00:00.0 | True | 2026-01-24T09:00:00.0 | True | 300.22 | 376 |  | 8 | 375 |  | 03.01.03.04.04.01 | 115200 | 300.22 | 115200 | 115200 | 281 380 376 FS | 115200 | 2026-01-23T09:00:00.0 | 2026-01-23T09:00:00.0 2026-01-24T09:00:00.0 |
| 2025-12-27T09:00:00.0 | ed | 40337.7 | 40337.7 | 40337.7 | REVOQUES Y REVESTIMIENTOS | 1.4.1.1.3.5 | AS_SOON_AS_POSSIBLE | True | 500 | 777600 | 777600 | 2025-12-27T09:00:00.0 | 2026-01-23T09:00:00.0 | 2025-12-27T09:00:00.0 | 2026-01-27T09:00:00.0 | 28 días | 377 | True | 2025-09-16T11:37:00.0 | 1.4.1.1.3.5 | FIXED_DURATION | PRORATED | True | True | 75dcea6a-1b93-f011-adcc-c0bfbe9ea20f | True | PRORATED | 777600 | 2026-01-23T09:00:00.0 | 2025-12-27T09:00:00.0 | True | 2026-01-23T09:00:00.0 | True | 40337.7 | 377 | True | 6 | 337 |  | 03.01.03.05 | 115200 |  |  |  |  |  |  |  |
| 2025-12-27T09:00:00.0 | ed | 40337.7 | 40337.7 | 40337.7 | MURO EXTERIOR E INTERIOR PARA COLUMBARIO | 1.4.1.1.3.5.1 | AS_SOON_AS_POSSIBLE | True | 500 | 777600 | 777600 | 2025-12-27T09:00:00.0 | 2026-01-23T09:00:00.0 | 2025-12-27T09:00:00.0 | 2026-01-27T09:00:00.0 | 28 días | 378 | True | 2025-09-16T11:37:00.0 | 1.4.1.1.3.5.1 | FIXED_DURATION | PRORATED | True | True | 77dcea6a-1b93-f011-adcc-c0bfbe9ea20f | True | PRORATED | 777600 | 2026-01-23T09:00:00.0 | 2025-12-27T09:00:00.0 | True | 2026-01-23T09:00:00.0 | True | 40337.7 | 378 | True | 7 | 377 |  | 03.01.03.05.01 | 115200 |  |  |  |  |  |  |  |
| 2025-12-27T09:00:00.0 | ed | 1575.22 | 1575.22 | 1575.22 | PREPARACION DE SUPERFICIE | 1.4.1.1.3.5.1.1 | AS_SOON_AS_POSSIBLE | True | 500 | 57600 | 57600 | 2025-12-27T09:00:00.0 | 2025-12-29T09:00:00.0 | 2025-12-27T09:00:00.0 | 2025-12-29T09:00:00.0 | 3 días | 379 |  | 2025-09-16T11:37:00.0 | 1.4.1.1.3.5.1.1 |  | PRORATED | True | True | 79dcea6a-1b93-f011-adcc-c0bfbe9ea20f | True | PRORATED | 57600 | 2025-12-29T09:00:00.0 | 2025-12-27T09:00:00.0 | True | 2025-12-29T09:00:00.0 | True | 1575.22 | 379 |  | 8 | 378 | 284 379 381 FS | 03.01.03.05.01.01 |  | 1575.22 |  |  | 282 355 379 -28800 FS |  | 2025-12-27T09:00:00.0 | 2025-12-27T09:00:00.0 2025-12-29T09:00:00.0 |
| 2026-01-22T09:00:00.0 | ed | 1163.46 | 1163.46 | 1163.46 | ACABADO DE CEMENTO PULIDO | 1.4.1.1.3.5.1.2 | AS_SOON_AS_POSSIBLE |  | 500 | 28800 | 28800 | 2026-01-22T09:00:00.0 | 2026-01-23T09:00:00.0 | 2026-01-26T09:00:00.0 | 2026-01-27T09:00:00.0 | 2 días | 380 |  | 2025-09-16T11:37:00.0 | 1.4.1.1.3.5.1.2 |  | PRORATED | True | True | 7bdcea6a-1b93-f011-adcc-c0bfbe9ea20f | True | PRORATED | 28800 | 2026-01-23T09:00:00.0 | 2026-01-22T09:00:00.0 | True | 2026-01-23T09:00:00.0 | True | 1163.46 | 380 |  | 8 | 378 | 281 380 376 FS | 03.01.03.05.01.02 | 115200 | 1163.46 |  | 115200 | 283 381 380 FS | 115200 | 2026-01-22T09:00:00.0 | 2026-01-22T09:00:00.0 2026-01-23T09:00:00.0 |
| 2025-12-29T09:00:00.0 | ed | 37599.02 | 37599.02 | 37599.02 | TARRAJEO EN MUROS | 1.4.1.1.3.5.1.3 | AS_SOON_AS_POSSIBLE | True | 500 | 691200 | 691200 | 2025-12-29T09:00:00.0 | 2026-01-22T09:00:00.0 | 2025-12-29T09:00:00.0 | 2026-01-22T09:00:00.0 | 25 días | 381 |  | 2025-09-16T11:37:00.0 | 1.4.1.1.3.5.1.3 |  | PRORATED | True | True | 7ddcea6a-1b93-f011-adcc-c0bfbe9ea20f | True | PRORATED | 691200 | 2026-01-22T09:00:00.0 | 2025-12-29T09:00:00.0 | True | 2026-01-22T09:00:00.0 | True | 37599.02 | 381 |  | 8 | 378 | 259 381 343 FS, 283 381 380 FS | 03.01.03.05.01.03 |  | 37599.02 |  |  | 284 379 381 FS |  | 2025-12-29T09:00:00.0 | 2025-12-29T09:00:00.0 2026-01-22T09:00:00.0 |
| 2026-01-27T09:00:00.0 | ed | 93.05 | 93.05 | 93.05 | LIMPIEZA FINAL | 1.4.1.1.3.6 | AS_SOON_AS_POSSIBLE | True | 500 | 28800 | 28800 | 2026-01-27T09:00:00.0 | 2026-01-28T09:00:00.0 | 2026-01-27T09:00:00.0 | 2026-01-28T09:00:00.0 | 2 días | 382 | True | 2025-09-16T11:37:00.0 | 1.4.1.1.3.6 | FIXED_DURATION | PRORATED | True | True | 7fdcea6a-1b93-f011-adcc-c0bfbe9ea20f | True | PRORATED | 28800 | 2026-01-28T09:00:00.0 | 2026-01-27T09:00:00.0 | True | 2026-01-28T09:00:00.0 | True | 93.05 | 382 | True | 6 | 337 |  | 03.01.03.06 |  |  |  |  |  |  |  |  |
| 2026-01-27T09:00:00.0 | ed | 93.05 | 93.05 | 93.05 | LIMPIEZA FINAL DE OBRA | 1.4.1.1.3.6.1 | AS_SOON_AS_POSSIBLE | True | 500 | 28800 | 28800 | 2026-01-27T09:00:00.0 | 2026-01-28T09:00:00.0 | 2026-01-27T09:00:00.0 | 2026-01-28T09:00:00.0 | 2 días | 383 |  | 2025-09-16T11:37:00.0 | 1.4.1.1.3.6.1 |  | PRORATED | True | True | 81dcea6a-1b93-f011-adcc-c0bfbe9ea20f | True | PRORATED | 28800 | 2026-01-28T09:00:00.0 | 2026-01-27T09:00:00.0 | True | 2026-01-28T09:00:00.0 | True | 93.05 | 383 |  | 7 | 382 |  | 03.01.03.06.01 |  | 93.05 |  |  | 285 358 383 FF |  |  | 2026-01-27T09:00:00.0 2026-01-28T09:00:00.0 |
| 2025-10-18T09:00:00.0 | ed | 29037.32 | 29037.32 | 29037.32 | INSTALACIONES SANITARIAS | 1.5 | AS_SOON_AS_POSSIBLE | True | 500 | 2937600 | 2937600 | 2025-10-18T09:00:00.0 | 2026-01-28T09:00:00.0 | 2025-11-23T09:00:00.0 | 2026-01-28T09:00:00.0 | 103 días | 384 | True | 2025-09-16T11:37:00.0 | 1.5 | FIXED_DURATION | PRORATED | True | True | 83dcea6a-1b93-f011-adcc-c0bfbe9ea20f | True | PRORATED | 2937600 | 2026-01-28T09:00:00.0 | 2025-10-18T09:00:00.0 | True | 2026-01-28T09:00:00.0 | True | 29037.32 | 384 | True | 2 | 1 |  |  |  |  |  |  |  | 1036800 |  |  |
| 2025-10-18T09:00:00.0 | ed | 29037.32 | 29037.32 | 29037.32 | INSTALACIONES SANITARIAS | 1.5.1 | AS_SOON_AS_POSSIBLE | True | 500 | 2937600 | 2937600 | 2025-10-18T09:00:00.0 | 2026-01-28T09:00:00.0 | 2025-11-23T09:00:00.0 | 2026-01-28T09:00:00.0 | 103 días | 385 | True | 2025-09-16T11:37:00.0 | 1.5.1 | FIXED_DURATION | PRORATED | True | True | 85dcea6a-1b93-f011-adcc-c0bfbe9ea20f | True | PRORATED | 2937600 | 2026-01-28T09:00:00.0 | 2025-10-18T09:00:00.0 | True | 2026-01-28T09:00:00.0 | True | 29037.32 | 385 | True | 3 | 384 |  | 04 |  |  |  |  |  | 1036800 |  |  |
| 2025-11-16T09:00:00.0 | ed | 25923.09 | 25923.09 | 25923.09 | CREMATORIO | 1.5.1.1 | AS_SOON_AS_POSSIBLE | True | 500 | 2102400 | 2102400 | 2025-11-16T09:00:00.0 | 2026-01-28T09:00:00.0 | 2025-11-23T09:00:00.0 | 2026-01-28T09:00:00.0 | 74 días | 386 | True | 2025-09-16T11:37:00.0 | 1.5.1.1 | FIXED_DURATION | PRORATED | True | True | 87dcea6a-1b93-f011-adcc-c0bfbe9ea20f | True | PRORATED | 2102400 | 2026-01-28T09:00:00.0 | 2025-11-16T09:00:00.0 | True | 2026-01-28T09:00:00.0 | True | 25923.09 | 386 | True | 4 | 385 |  | 04.01 |  |  |  |  |  | 201600 |  |  |
| 2025-11-16T09:00:00.0 | ed | 12006.13 | 12006.13 | 12006.13 | SISTEMA DE DESAGUE | 1.5.1.1.1 | AS_SOON_AS_POSSIBLE |  | 500 | 892800 | 892800 | 2025-11-16T09:00:00.0 | 2025-12-17T09:00:00.0 | 2025-11-23T09:00:00.0 | 2025-12-24T09:00:00.0 | 32 días | 387 | True | 2025-09-16T11:37:00.0 | 1.5.1.1.1 | FIXED_DURATION | PRORATED | True | True | 89dcea6a-1b93-f011-adcc-c0bfbe9ea20f | True | PRORATED | 892800 | 2025-12-17T09:00:00.0 | 2025-11-16T09:00:00.0 | True | 2025-12-17T09:00:00.0 | True | 12006.13 | 387 | True | 5 | 386 |  | 04.01.01 | 201600 |  | 201600 | 201600 |  | 201600 |  |  |
| 2025-11-16T09:00:00.0 | ed | 2490.67 | 2490.67 | 2490.67 | SALIDAS | 1.5.1.1.1.1 | AS_SOON_AS_POSSIBLE |  | 500 | 86400 | 86400 | 2025-11-16T09:00:00.0 | 2025-11-19T09:00:00.0 | 2025-11-23T09:00:00.0 | 2025-11-26T09:00:00.0 | 4 días | 388 | True | 2025-09-16T11:37:00.0 | 1.5.1.1.1.1 | FIXED_DURATION | PRORATED | True | True | 8bdcea6a-1b93-f011-adcc-c0bfbe9ea20f | True | PRORATED | 86400 | 2025-11-19T09:00:00.0 | 2025-11-16T09:00:00.0 | True | 2025-11-19T09:00:00.0 | True | 2490.67 | 388 | True | 6 | 387 |  | 04.01.01.01 | 201600 |  | 201600 | 201600 |  | 201600 |  |  |
| 2025-11-16T09:00:00.0 | ed | 858.72 | 858.72 | 858.72 | SALIDAS DE DESAGUE PVC ø 2" | 1.5.1.1.1.1.1 | AS_SOON_AS_POSSIBLE |  | 500 | 28800 | 28800 | 2025-11-16T09:00:00.0 | 2025-11-17T09:00:00.0 | 2025-11-28T09:00:00.0 | 2025-11-29T09:00:00.0 | 2 días | 389 |  | 2025-09-16T11:37:00.0 | 1.5.1.1.1.1.1 |  | PRORATED | True | True | 8ddcea6a-1b93-f011-adcc-c0bfbe9ea20f | True | PRORATED | 28800 | 2025-11-17T09:00:00.0 | 2025-11-16T09:00:00.0 | True | 2025-11-17T09:00:00.0 | True | 858.72 | 389 |  | 7 | 388 | 289 389 390 FS | 04.01.01.01.01 | 345600 | 858.72 |  | 345600 | 346 68 389 FS | 345600 | 2025-11-16T09:00:00.0 | 2025-11-16T09:00:00.0 2025-11-17T09:00:00.0 |
| 2025-11-17T09:00:00.0 | ed | 832.0 | 832.0 | 832.0 | SALIDAS DE DESAGUE PVC ø 4" | 1.5.1.1.1.1.2 | AS_SOON_AS_POSSIBLE |  | 500 | 28800 | 28800 | 2025-11-17T09:00:00.0 | 2025-11-18T09:00:00.0 | 2025-11-29T09:00:00.0 | 2025-11-30T09:00:00.0 | 2 días | 390 |  | 2025-09-16T11:37:00.0 | 1.5.1.1.1.1.2 |  | PRORATED | True | True | 8fdcea6a-1b93-f011-adcc-c0bfbe9ea20f | True | PRORATED | 28800 | 2025-11-18T09:00:00.0 | 2025-11-17T09:00:00.0 | True | 2025-11-18T09:00:00.0 | True | 832.0 | 390 |  | 7 | 388 | 290 390 391 FS | 04.01.01.01.02 | 345600 | 832.0 |  | 345600 | 289 389 390 FS | 345600 | 2025-11-17T09:00:00.0 | 2025-11-17T09:00:00.0 2025-11-18T09:00:00.0 |
| 2025-11-18T09:00:00.0 | ed | 799.95 | 799.95 | 799.95 | SALIDAS DE TUBERIA DE VENTILACION PVC ø 2" | 1.5.1.1.1.1.3 | AS_SOON_AS_POSSIBLE |  | 500 | 28800 | 28800 | 2025-11-18T09:00:00.0 | 2025-11-19T09:00:00.0 | 2025-11-30T09:00:00.0 | 2025-12-01T09:00:00.0 | 2 días | 391 |  | 2025-09-16T11:37:00.0 | 1.5.1.1.1.1.3 |  | PRORATED | True | True | 91dcea6a-1b93-f011-adcc-c0bfbe9ea20f | True | PRORATED | 28800 | 2025-11-19T09:00:00.0 | 2025-11-18T09:00:00.0 | True | 2025-11-19T09:00:00.0 | True | 799.95 | 391 |  | 7 | 388 | 292 391 393 FS | 04.01.01.01.03 | 345600 | 799.95 |  | 345600 | 290 390 391 FS | 345600 | 2025-11-18T09:00:00.0 | 2025-11-18T09:00:00.0 2025-11-19T09:00:00.0 |
| 2025-11-19T09:00:00.0 | ed | 6453.29 | 6453.29 | 6453.29 | REDES DE DERIVACION | 1.5.1.1.1.2 | AS_SOON_AS_POSSIBLE |  | 500 | 374400 | 374400 | 2025-11-19T09:00:00.0 | 2025-12-02T09:00:00.0 | 2025-11-26T09:00:00.0 | 2025-12-09T09:00:00.0 | 14 días | 392 | True | 2025-09-16T11:37:00.0 | 1.5.1.1.1.2 | FIXED_DURATION | PRORATED | True | True | 93dcea6a-1b93-f011-adcc-c0bfbe9ea20f | True | PRORATED | 374400 | 2025-12-02T09:00:00.0 | 2025-11-19T09:00:00.0 | True | 2025-12-02T09:00:00.0 | True | 6453.29 | 392 | True | 6 | 387 |  | 04.01.01.02 | 201600 |  | 201600 | 201600 |  | 201600 |  |  |
| 2025-11-19T09:00:00.0 | ed | 176.7 | 176.7 | 176.7 | SUM. E INST. DE PVC CP C-10 SP DE 2" PARA REDES DE DERIVACION | 1.5.1.1.1.2.1 | AS_SOON_AS_POSSIBLE |  | 500 | 28800 | 28800 | 2025-11-19T09:00:00.0 | 2025-11-20T09:00:00.0 | 2025-12-01T09:00:00.0 | 2025-12-02T09:00:00.0 | 2 días | 393 |  | 2025-09-16T11:37:00.0 | 1.5.1.1.1.2.1 |  | PRORATED | True | True | 95dcea6a-1b93-f011-adcc-c0bfbe9ea20f | True | PRORATED | 28800 | 2025-11-20T09:00:00.0 | 2025-11-19T09:00:00.0 | True | 2025-11-20T09:00:00.0 | True | 176.7 | 393 |  | 7 | 392 | 293 393 394 FS | 04.01.01.02.01 | 345600 | 176.7 |  | 345600 | 292 391 393 FS | 345600 | 2025-11-19T09:00:00.0 | 2025-11-19T09:00:00.0 2025-11-20T09:00:00.0 |
| 2025-11-20T09:00:00.0 | ed | 1106.86 | 1106.86 | 1106.86 | SUM. E INST. PVC CP C-10 SP DE 4" PARA REDES DE DERIVACION | 1.5.1.1.1.2.2 | AS_SOON_AS_POSSIBLE |  | 500 | 57600 | 57600 | 2025-11-20T09:00:00.0 | 2025-11-22T09:00:00.0 | 2025-12-02T09:00:00.0 | 2025-12-04T09:00:00.0 | 3 días | 394 |  | 2025-09-16T11:37:00.0 | 1.5.1.1.1.2.2 |  | PRORATED | True | True | 97dcea6a-1b93-f011-adcc-c0bfbe9ea20f | True | PRORATED | 57600 | 2025-11-22T09:00:00.0 | 2025-11-20T09:00:00.0 | True | 2025-11-22T09:00:00.0 | True | 1106.86 | 394 |  | 7 | 392 | 294 394 395 FS | 04.01.01.02.02 | 345600 | 1106.86 |  | 345600 | 293 393 394 FS | 345600 | 2025-11-20T09:00:00.0 | 2025-11-20T09:00:00.0 2025-11-22T09:00:00.0 |
| 2025-11-22T09:00:00.0 | ed | 3126.95 | 3126.95 | 3126.95 | SUM. E INST. PVC CP C-10 SP DE 4" PARA CONECCIONES ENTRE CAJAS | 1.5.1.1.1.2.3 | AS_SOON_AS_POSSIBLE |  | 500 | 144000 | 144000 | 2025-11-22T09:00:00.0 | 2025-11-27T09:00:00.0 | 2025-12-04T09:00:00.0 | 2025-12-09T09:00:00.0 | 6 días | 395 |  | 2025-09-16T11:37:00.0 | 1.5.1.1.1.2.3 |  | PRORATED | True | True | 99dcea6a-1b93-f011-adcc-c0bfbe9ea20f | True | PRORATED | 144000 | 2025-11-27T09:00:00.0 | 2025-11-22T09:00:00.0 | True | 2025-11-27T09:00:00.0 | True | 3126.95 | 395 |  | 7 | 392 | 295 395 396 FS | 04.01.01.02.03 | 345600 | 3126.95 |  | 345600 | 294 394 395 FS | 345600 | 2025-11-22T09:00:00.0 | 2025-11-22T09:00:00.0 2025-11-27T09:00:00.0 |
| 2025-11-27T09:00:00.0 | ed | 2042.78 | 2042.78 | 2042.78 | SUM. E INST. PVC CP C-10 SP DE 1" DESDE CAMARA DE BOMBEO DE DESAGUE HASTA CAJA DE DESAGUE EXISTENTE | 1.5.1.1.1.2.4 | AS_SOON_AS_POSSIBLE |  | 500 | 144000 | 144000 | 2025-11-27T09:00:00.0 | 2025-12-02T09:00:00.0 | 2025-12-09T09:00:00.0 | 2025-12-14T09:00:00.0 | 6 días | 396 |  | 2025-09-16T11:37:00.0 | 1.5.1.1.1.2.4 |  | PRORATED | True | True | 9bdcea6a-1b93-f011-adcc-c0bfbe9ea20f | True | PRORATED | 144000 | 2025-12-02T09:00:00.0 | 2025-11-27T09:00:00.0 | True | 2025-12-02T09:00:00.0 | True | 2042.78 | 396 |  | 7 | 392 | 304 396 398 288000 FS | 04.01.01.02.04 | 345600 | 2042.78 |  | 345600 | 295 395 396 FS | 345600 | 2025-11-27T09:00:00.0 | 2025-11-27T09:00:00.0 2025-12-02T09:00:00.0 |
| 2025-12-12T09:00:00.0 | ed | 270.62 | 270.62 | 270.62 | REDES COLECTORAS | 1.5.1.1.1.3 | AS_SOON_AS_POSSIBLE |  | 500 | 28800 | 28800 | 2025-12-12T09:00:00.0 | 2025-12-13T09:00:00.0 | 2025-12-19T09:00:00.0 | 2025-12-20T09:00:00.0 | 2 días | 397 | True | 2025-09-16T11:37:00.0 | 1.5.1.1.1.3 | FIXED_DURATION | PRORATED | True | True | 9ddcea6a-1b93-f011-adcc-c0bfbe9ea20f | True | PRORATED | 28800 | 2025-12-13T09:00:00.0 | 2025-12-12T09:00:00.0 | True | 2025-12-13T09:00:00.0 | True | 270.62 | 397 | True | 6 | 387 |  | 04.01.01.03 | 201600 |  | 201600 | 201600 |  | 201600 |  |  |
| 2025-12-12T09:00:00.0 | ed | 270.62 | 270.62 | 270.62 | SUM. E INST. DE TUBERIA PVC SAL SP DE ø2" PARA TUBERIAS DE VENTILACION | 1.5.1.1.1.3.1 | AS_SOON_AS_POSSIBLE |  | 500 | 28800 | 28800 | 2025-12-12T09:00:00.0 | 2025-12-13T09:00:00.0 | 2025-12-24T09:00:00.0 | 2025-12-25T09:00:00.0 | 2 días | 398 |  | 2025-09-16T11:37:00.0 | 1.5.1.1.1.3.1 |  | PRORATED | True | True | 9fdcea6a-1b93-f011-adcc-c0bfbe9ea20f | True | PRORATED | 28800 | 2025-12-13T09:00:00.0 | 2025-12-12T09:00:00.0 | True | 2025-12-13T09:00:00.0 | True | 270.62 | 398 |  | 7 | 397 | 296 398 400 FS | 04.01.01.03.01 | 345600 | 270.62 |  | 345600 | 304 396 398 288000 FS | 345600 | 2025-12-12T09:00:00.0 | 2025-12-12T09:00:00.0 2025-12-13T09:00:00.0 |
| 2025-12-13T09:00:00.0 | ed | 1118.62 | 1118.62 | 1118.62 | ACCESORIOS DE REDES DE DERIVACION | 1.5.1.1.1.4 | AS_SOON_AS_POSSIBLE |  | 500 | 57600 | 57600 | 2025-12-13T09:00:00.0 | 2025-12-15T09:00:00.0 | 2025-12-20T09:00:00.0 | 2025-12-22T09:00:00.0 | 3 días | 399 | True | 2025-09-16T11:37:00.0 | 1.5.1.1.1.4 | FIXED_DURATION | PRORATED | True | True | a1dcea6a-1b93-f011-adcc-c0bfbe9ea20f | True | PRORATED | 57600 | 2025-12-15T09:00:00.0 | 2025-12-13T09:00:00.0 | True | 2025-12-15T09:00:00.0 | True | 1118.62 | 399 | True | 6 | 387 |  | 04.01.01.04 | 201600 |  | 201600 | 201600 |  | 201600 |  |  |
| 2025-12-13T09:00:00.0 | ed | 86.5 | 86.5 | 86.5 | SUM. E INST. DE CODO DE 90° PARA TUBERIA DE VENTILACION PVC-SAP C-10SP DE 2" | 1.5.1.1.1.4.1 | AS_SOON_AS_POSSIBLE |  | 500 | 28800 | 28800 | 2025-12-13T09:00:00.0 | 2025-12-14T09:00:00.0 | 2025-12-25T09:00:00.0 | 2025-12-26T09:00:00.0 | 2 días | 400 |  | 2025-09-16T11:37:00.0 | 1.5.1.1.1.4.1 |  | PRORATED | True | True | a3dcea6a-1b93-f011-adcc-c0bfbe9ea20f | True | PRORATED | 28800 | 2025-12-14T09:00:00.0 | 2025-12-13T09:00:00.0 | True | 2025-12-14T09:00:00.0 | True | 86.5 | 400 |  | 7 | 399 | 297 400 401 SS | 04.01.01.04.01 | 345600 | 86.5 |  | 345600 | 296 398 400 FS | 345600 | 2025-12-13T09:00:00.0 | 2025-12-13T09:00:00.0 2025-12-14T09:00:00.0 |
| 2025-12-13T09:00:00.0 | ed | 43.25 | 43.25 | 43.25 | SUM. E INST. DE TEE PARA TUBERIA DE VENTILACION PVC-SAP C-10SP DE 2" | 1.5.1.1.1.4.2 | AS_SOON_AS_POSSIBLE |  | 500 | 28800 | 28800 | 2025-12-13T09:00:00.0 | 2025-12-14T09:00:00.0 | 2025-12-25T09:00:00.0 | 2025-12-26T09:00:00.0 | 2 días | 401 |  | 2025-09-16T11:37:00.0 | 1.5.1.1.1.4.2 |  | PRORATED | True | True | a5dcea6a-1b93-f011-adcc-c0bfbe9ea20f | True | PRORATED | 28800 | 2025-12-14T09:00:00.0 | 2025-12-13T09:00:00.0 | True | 2025-12-14T09:00:00.0 | True | 43.25 | 401 |  | 7 | 399 | 298 401 402 SS | 04.01.01.04.02 | 345600 | 43.25 |  | 345600 | 297 400 401 SS | 345600 | 2025-12-13T09:00:00.0 | 2025-12-13T09:00:00.0 2025-12-14T09:00:00.0 |
| 2025-12-13T09:00:00.0 | ed | 182.88 | 182.88 | 182.88 | SUM. E INST. DE CODO DE 45° PVC-SAP C-10 SP DE 4" | 1.5.1.1.1.4.3 | AS_SOON_AS_POSSIBLE |  | 500 | 28800 | 28800 | 2025-12-13T09:00:00.0 | 2025-12-14T09:00:00.0 | 2025-12-25T09:00:00.0 | 2025-12-26T09:00:00.0 | 2 días | 402 |  | 2025-09-16T11:37:00.0 | 1.5.1.1.1.4.3 |  | PRORATED | True | True | a7dcea6a-1b93-f011-adcc-c0bfbe9ea20f | True | PRORATED | 28800 | 2025-12-14T09:00:00.0 | 2025-12-13T09:00:00.0 | True | 2025-12-14T09:00:00.0 | True | 182.88 | 402 |  | 7 | 399 | 299 402 403 SS | 04.01.01.04.03 | 345600 | 182.88 |  | 345600 | 298 401 402 SS | 345600 | 2025-12-13T09:00:00.0 | 2025-12-13T09:00:00.0 2025-12-14T09:00:00.0 |
| 2025-12-13T09:00:00.0 | ed | 107.92 | 107.92 | 107.92 | SUM. E INST. DE YEE CON REDUCCION DE 4" A 2" DE PVC-SAP C-10SP | 1.5.1.1.1.4.4 | AS_SOON_AS_POSSIBLE |  | 500 | 28800 | 28800 | 2025-12-13T09:00:00.0 | 2025-12-14T09:00:00.0 | 2025-12-25T09:00:00.0 | 2025-12-26T09:00:00.0 | 2 días | 403 |  | 2025-09-16T11:37:00.0 | 1.5.1.1.1.4.4 |  | PRORATED | True | True | a9dcea6a-1b93-f011-adcc-c0bfbe9ea20f | True | PRORATED | 28800 | 2025-12-14T09:00:00.0 | 2025-12-13T09:00:00.0 | True | 2025-12-14T09:00:00.0 | True | 107.92 | 403 |  | 7 | 399 | 300 403 404 SS | 04.01.01.04.04 | 345600 | 107.92 |  | 345600 | 299 402 403 SS | 345600 | 2025-12-13T09:00:00.0 | 2025-12-13T09:00:00.0 2025-12-14T09:00:00.0 |
| 2025-12-13T09:00:00.0 | ed | 116.19 | 116.19 | 116.19 | SUM. E INST. DE YEE 4" DE PVC-SAP C-10 SP | 1.5.1.1.1.4.5 | AS_SOON_AS_POSSIBLE |  | 500 | 28800 | 28800 | 2025-12-13T09:00:00.0 | 2025-12-14T09:00:00.0 | 2025-12-25T09:00:00.0 | 2025-12-26T09:00:00.0 | 2 días | 404 |  | 2025-09-16T11:37:00.0 | 1.5.1.1.1.4.5 |  | PRORATED | True | True | abdcea6a-1b93-f011-adcc-c0bfbe9ea20f | True | PRORATED | 28800 | 2025-12-14T09:00:00.0 | 2025-12-13T09:00:00.0 | True | 2025-12-14T09:00:00.0 | True | 116.19 | 404 |  | 7 | 399 | 301 404 405 SS | 04.01.01.04.05 | 345600 | 116.19 |  | 345600 | 300 403 404 SS | 345600 | 2025-12-13T09:00:00.0 | 2025-12-13T09:00:00.0 2025-12-14T09:00:00.0 |
| 2025-12-13T09:00:00.0 | ed | 37.14 | 37.14 | 37.14 | SUM. E INST. DE SUMIDERO DE BRONCE DE 2" | 1.5.1.1.1.4.6 | AS_SOON_AS_POSSIBLE |  | 500 | 28800 | 28800 | 2025-12-13T09:00:00.0 | 2025-12-14T09:00:00.0 | 2025-12-25T09:00:00.0 | 2025-12-26T09:00:00.0 | 2 días | 405 |  | 2025-09-16T11:37:00.0 | 1.5.1.1.1.4.6 |  | PRORATED | True | True | addcea6a-1b93-f011-adcc-c0bfbe9ea20f | True | PRORATED | 28800 | 2025-12-14T09:00:00.0 | 2025-12-13T09:00:00.0 | True | 2025-12-14T09:00:00.0 | True | 37.14 | 405 |  | 7 | 399 | 302 405 406 SS | 04.01.01.04.06 | 345600 | 37.14 |  | 345600 | 301 404 405 SS | 345600 | 2025-12-13T09:00:00.0 | 2025-12-13T09:00:00.0 2025-12-14T09:00:00.0 |
| 2025-12-13T09:00:00.0 | ed | 544.74 | 544.74 | 544.74 | SUM. E INST. DE CODO DE 45° PVC-SAP C-10 SP DE 1" | 1.5.1.1.1.4.7 | AS_SOON_AS_POSSIBLE |  | 500 | 57600 | 57600 | 2025-12-13T09:00:00.0 | 2025-12-15T09:00:00.0 | 2025-12-25T09:00:00.0 | 2025-12-27T09:00:00.0 | 3 días | 406 |  | 2025-09-16T11:37:00.0 | 1.5.1.1.1.4.7 |  | PRORATED | True | True | afdcea6a-1b93-f011-adcc-c0bfbe9ea20f | True | PRORATED | 57600 | 2025-12-15T09:00:00.0 | 2025-12-13T09:00:00.0 | True | 2025-12-15T09:00:00.0 | True | 544.74 | 406 |  | 7 | 399 | 303 406 408 FS | 04.01.01.04.07 | 345600 | 544.74 |  | 345600 | 302 405 406 SS | 345600 | 2025-12-13T09:00:00.0 | 2025-12-13T09:00:00.0 2025-12-15T09:00:00.0 |
| 2025-12-15T09:00:00.0 | ed | 1672.93 | 1672.93 | 1672.93 | CAJAS DE DESAGUE | 1.5.1.1.1.5 | AS_SOON_AS_POSSIBLE |  | 500 | 57600 | 57600 | 2025-12-15T09:00:00.0 | 2025-12-17T09:00:00.0 | 2025-12-22T09:00:00.0 | 2025-12-24T09:00:00.0 | 3 días | 407 | True | 2025-09-16T11:37:00.0 | 1.5.1.1.1.5 | FIXED_DURATION | PRORATED | True | True | b1dcea6a-1b93-f011-adcc-c0bfbe9ea20f | True | PRORATED | 57600 | 2025-12-17T09:00:00.0 | 2025-12-15T09:00:00.0 | True | 2025-12-17T09:00:00.0 | True | 1672.93 | 407 | True | 6 | 387 |  | 04.01.01.05 | 201600 |  | 201600 | 201600 |  | 201600 |  |  |
| 2025-12-15T09:00:00.0 | ed | 1672.93 | 1672.93 | 1672.93 | SUM. E INST. DE CAJA DE REGISTRO DE DESAGUE (0.30 X 0.60m) | 1.5.1.1.1.5.1 | AS_SOON_AS_POSSIBLE |  | 500 | 57600 | 57600 | 2025-12-15T09:00:00.0 | 2025-12-17T09:00:00.0 | 2025-12-27T09:00:00.0 | 2025-12-29T09:00:00.0 | 3 días | 408 |  | 2025-09-16T11:37:00.0 | 1.5.1.1.1.5.1 |  | PRORATED | True | True | b3dcea6a-1b93-f011-adcc-c0bfbe9ea20f | True | PRORATED | 57600 | 2025-12-17T09:00:00.0 | 2025-12-15T09:00:00.0 | True | 2025-12-17T09:00:00.0 | True | 1672.93 | 408 |  | 7 | 407 | 419 408 411 FS | 04.01.01.05.01 | 345600 | 1672.93 |  | 345600 | 303 406 408 FS | 345600 | 2025-12-15T09:00:00.0 | 2025-12-15T09:00:00.0 2025-12-17T09:00:00.0 |
| 2025-12-17T09:00:00.0 | ed | 9313.61 | 9313.61 | 9313.61 | SISTEMA DE AGUA FRIA | 1.5.1.1.2 | AS_SOON_AS_POSSIBLE |  | 500 | 489600 | 489600 | 2025-12-17T09:00:00.0 | 2026-01-03T09:00:00.0 | 2025-12-24T09:00:00.0 | 2026-01-10T09:00:00.0 | 18 días | 409 | True | 2025-09-16T11:37:00.0 | 1.5.1.1.2 | FIXED_DURATION | PRORATED | True | True | b5dcea6a-1b93-f011-adcc-c0bfbe9ea20f | True | PRORATED | 489600 | 2026-01-03T09:00:00.0 | 2025-12-17T09:00:00.0 | True | 2026-01-03T09:00:00.0 | True | 9313.61 | 409 | True | 5 | 386 |  | 04.01.02 | 201600 |  | 201600 | 201600 |  | 201600 |  |  |
| 2025-12-17T09:00:00.0 | ed | 1138.5 | 1138.5 | 1138.5 | SALIDAS | 1.5.1.1.2.1 | AS_SOON_AS_POSSIBLE |  | 500 | 86400 | 86400 | 2025-12-17T09:00:00.0 | 2025-12-20T09:00:00.0 | 2025-12-24T09:00:00.0 | 2025-12-27T09:00:00.0 | 4 días | 410 | True | 2025-09-16T11:37:00.0 | 1.5.1.1.2.1 | FIXED_DURATION | PRORATED | True | True | b7dcea6a-1b93-f011-adcc-c0bfbe9ea20f | True | PRORATED | 86400 | 2025-12-20T09:00:00.0 | 2025-12-17T09:00:00.0 | True | 2025-12-20T09:00:00.0 | True | 1138.5 | 410 | True | 6 | 409 |  | 04.01.02.01 | 201600 |  | 201600 | 201600 |  | 201600 |  |  |
| 2025-12-17T09:00:00.0 | ed | 448.08 | 448.08 | 448.08 | SALIDA DE AGUA FRIA CON TUBERIA DE PVC-SAP 1/2" | 1.5.1.1.2.1.1 | AS_SOON_AS_POSSIBLE |  | 500 | 28800 | 28800 | 2025-12-17T09:00:00.0 | 2025-12-18T09:00:00.0 | 2025-12-29T09:00:00.0 | 2025-12-30T09:00:00.0 | 2 días | 411 |  | 2025-09-16T11:37:00.0 | 1.5.1.1.2.1.1 |  | PRORATED | True | True | b9dcea6a-1b93-f011-adcc-c0bfbe9ea20f | True | PRORATED | 28800 | 2025-12-18T09:00:00.0 | 2025-12-17T09:00:00.0 | True | 2025-12-18T09:00:00.0 | True | 448.08 | 411 |  | 7 | 410 | 305 411 412 FS | 04.01.02.01.01 | 345600 | 448.08 |  | 345600 | 419 408 411 FS | 345600 | 2025-12-17T09:00:00.0 | 2025-12-17T09:00:00.0 2025-12-18T09:00:00.0 |
| 2025-12-18T09:00:00.0 | ed | 338.96 | 338.96 | 338.96 | SALIDA DE AGUA FRIA CON TUBERIA DE PVC-SAP 1 1/4" | 1.5.1.1.2.1.2 | AS_SOON_AS_POSSIBLE |  | 500 | 28800 | 28800 | 2025-12-18T09:00:00.0 | 2025-12-19T09:00:00.0 | 2025-12-30T09:00:00.0 | 2025-12-31T09:00:00.0 | 2 días | 412 |  | 2025-09-16T11:37:00.0 | 1.5.1.1.2.1.2 |  | PRORATED | True | True | bbdcea6a-1b93-f011-adcc-c0bfbe9ea20f | True | PRORATED | 28800 | 2025-12-19T09:00:00.0 | 2025-12-18T09:00:00.0 | True | 2025-12-19T09:00:00.0 | True | 338.96 | 412 |  | 7 | 410 | 306 412 413 FS | 04.01.02.01.02 | 345600 | 338.96 |  | 345600 | 305 411 412 FS | 345600 | 2025-12-18T09:00:00.0 | 2025-12-18T09:00:00.0 2025-12-19T09:00:00.0 |
| 2025-12-19T09:00:00.0 | ed | 351.46 | 351.46 | 351.46 | SALIDA DE AGUA FRIA CON TUBERIA DE PVC-SAP 1 1/2" | 1.5.1.1.2.1.3 | AS_SOON_AS_POSSIBLE |  | 500 | 28800 | 28800 | 2025-12-19T09:00:00.0 | 2025-12-20T09:00:00.0 | 2025-12-31T09:00:00.0 | 2026-01-01T09:00:00.0 | 2 días | 413 |  | 2025-09-16T11:37:00.0 | 1.5.1.1.2.1.3 |  | PRORATED | True | True | bddcea6a-1b93-f011-adcc-c0bfbe9ea20f | True | PRORATED | 28800 | 2025-12-20T09:00:00.0 | 2025-12-19T09:00:00.0 | True | 2025-12-20T09:00:00.0 | True | 351.46 | 413 |  | 7 | 410 | 307 413 415 FS | 04.01.02.01.03 | 345600 | 351.46 |  | 345600 | 306 412 413 FS | 345600 | 2025-12-19T09:00:00.0 | 2025-12-19T09:00:00.0 2025-12-20T09:00:00.0 |
| 2025-12-20T09:00:00.0 | ed | 7023.89 | 7023.89 | 7023.89 | RAMALES DE DISTRIBUCION | 1.5.1.1.2.2 | AS_SOON_AS_POSSIBLE |  | 500 | 201600 | 201600 | 2025-12-20T09:00:00.0 | 2025-12-27T09:00:00.0 | 2025-12-27T09:00:00.0 | 2026-01-03T09:00:00.0 | 8 días | 414 | True | 2025-09-16T11:37:00.0 | 1.5.1.1.2.2 | FIXED_DURATION | PRORATED | True | True | bfdcea6a-1b93-f011-adcc-c0bfbe9ea20f | True | PRORATED | 201600 | 2025-12-27T09:00:00.0 | 2025-12-20T09:00:00.0 | True | 2025-12-27T09:00:00.0 | True | 7023.89 | 414 | True | 6 | 409 |  | 04.01.02.02 | 201600 |  | 201600 | 201600 |  | 201600 |  |  |
| 2025-12-20T09:00:00.0 | ed | 280.89 | 280.89 | 280.89 | SUM. E INST. DE TUBERIA DE PVC-SAP C-10 TR DE 1/2" | 1.5.1.1.2.2.1 | AS_SOON_AS_POSSIBLE |  | 500 | 28800 | 28800 | 2025-12-20T09:00:00.0 | 2025-12-21T09:00:00.0 | 2026-01-01T09:00:00.0 | 2026-01-02T09:00:00.0 | 2 días | 415 |  | 2025-09-16T11:37:00.0 | 1.5.1.1.2.2.1 |  | PRORATED | True | True | c1dcea6a-1b93-f011-adcc-c0bfbe9ea20f | True | PRORATED | 28800 | 2025-12-21T09:00:00.0 | 2025-12-20T09:00:00.0 | True | 2025-12-21T09:00:00.0 | True | 280.89 | 415 |  | 7 | 414 | 308 415 416 SS | 04.01.02.02.01 | 345600 | 280.89 |  | 345600 | 307 413 415 FS | 345600 | 2025-12-20T09:00:00.0 | 2025-12-20T09:00:00.0 2025-12-21T09:00:00.0 |
| 2025-12-20T09:00:00.0 | ed | 5109.98 | 5109.98 | 5109.98 | SUM. E INST. DE TUBERIA DE PVC-SAP C-10 TR DE 1 1/4" | 1.5.1.1.2.2.2 | AS_SOON_AS_POSSIBLE |  | 500 | 172800 | 172800 | 2025-12-20T09:00:00.0 | 2025-12-26T09:00:00.0 | 2026-01-01T09:00:00.0 | 2026-01-07T09:00:00.0 | 7 días | 416 |  | 2025-09-16T11:37:00.0 | 1.5.1.1.2.2.2 |  | PRORATED | True | True | c3dcea6a-1b93-f011-adcc-c0bfbe9ea20f | True | PRORATED | 172800 | 2025-12-26T09:00:00.0 | 2025-12-20T09:00:00.0 | True | 2025-12-26T09:00:00.0 | True | 5109.98 | 416 |  | 7 | 414 | 309 416 417 FS | 04.01.02.02.02 | 345600 | 5109.98 |  | 345600 | 308 415 416 SS | 345600 | 2025-12-20T09:00:00.0 | 2025-12-20T09:00:00.0 2025-12-26T09:00:00.0 |
| 2025-12-26T09:00:00.0 | ed | 1633.02 | 1633.02 | 1633.02 | SUM. E INST. DE TUBERIA DE PVC-SAP C-10 TR DE 1 1/2" | 1.5.1.1.2.2.3 | AS_SOON_AS_POSSIBLE |  | 500 | 28800 | 28800 | 2025-12-26T09:00:00.0 | 2025-12-27T09:00:00.0 | 2026-01-07T09:00:00.0 | 2026-01-08T09:00:00.0 | 2 días | 417 |  | 2025-09-16T11:37:00.0 | 1.5.1.1.2.2.3 |  | PRORATED | True | True | c5dcea6a-1b93-f011-adcc-c0bfbe9ea20f | True | PRORATED | 28800 | 2025-12-27T09:00:00.0 | 2025-12-26T09:00:00.0 | True | 2025-12-27T09:00:00.0 | True | 1633.02 | 417 |  | 7 | 414 | 310 417 419 FS | 04.01.02.02.03 | 345600 | 1633.02 |  | 345600 | 309 416 417 FS | 345600 | 2025-12-26T09:00:00.0 | 2025-12-26T09:00:00.0 2025-12-27T09:00:00.0 |
| 2025-12-27T09:00:00.0 | ed | 874.98 | 874.98 | 874.98 | ACCESORIOS | 1.5.1.1.2.3 | AS_SOON_AS_POSSIBLE |  | 500 | 57600 | 57600 | 2025-12-27T09:00:00.0 | 2025-12-29T09:00:00.0 | 2026-01-03T09:00:00.0 | 2026-01-05T09:00:00.0 | 3 días | 418 | True | 2025-09-16T11:37:00.0 | 1.5.1.1.2.3 | FIXED_DURATION | PRORATED | True | True | c7dcea6a-1b93-f011-adcc-c0bfbe9ea20f | True | PRORATED | 57600 | 2025-12-29T09:00:00.0 | 2025-12-27T09:00:00.0 | True | 2025-12-29T09:00:00.0 | True | 874.98 | 418 | True | 6 | 409 |  | 04.01.02.03 | 201600 |  | 201600 | 201600 |  | 201600 |  |  |
| 2025-12-27T09:00:00.0 | ed | 176.46 | 176.46 | 176.46 | SUM. E INST. DE CODO DE 90° PVC-SAP CR DE 1/2" | 1.5.1.1.2.3.1 | AS_SOON_AS_POSSIBLE |  | 500 | 28800 | 28800 | 2025-12-27T09:00:00.0 | 2025-12-28T09:00:00.0 | 2026-01-08T09:00:00.0 | 2026-01-09T09:00:00.0 | 2 días | 419 |  | 2025-09-16T11:37:00.0 | 1.5.1.1.2.3.1 |  | PRORATED | True | True | c9dcea6a-1b93-f011-adcc-c0bfbe9ea20f | True | PRORATED | 28800 | 2025-12-28T09:00:00.0 | 2025-12-27T09:00:00.0 | True | 2025-12-28T09:00:00.0 | True | 176.46 | 419 |  | 7 | 418 | 311 419 420 FS | 04.01.02.03.01 | 345600 | 176.46 |  | 345600 | 310 417 419 FS | 345600 | 2025-12-27T09:00:00.0 | 2025-12-27T09:00:00.0 2025-12-28T09:00:00.0 |

| start | leveling_delay_units | cost | cost_variance | remaining_cost | name | wbs | constraint_type | critical | priority | duration | remaining_duration | early_start | early_finish | late_start | late_finish | text2 | unique_id | summary | created | outline_number | type | fixed_cost_accrual | leveling_can_split | level_assignments | guid | active | baseline_fixed_cost_accrual | scheduled_duration | scheduled_finish | scheduled_start | recalc_outline_codes | finish | auto_compute_actuals | remaining_regular_cost | id | rollup | outline_level | parent_task_unique_id | successors | text1 | finish_slack | fixed_cost | free_slack | total_slack | predecessors | start_slack | summary_progress | work_splits |
| --- | --- | --- | --- | --- | --- | --- | --- | --- | --- | --- | --- | --- | --- | --- | --- | --- | --- | --- | --- | --- | --- | --- | --- | --- | --- | --- | --- | --- | --- | --- | --- | --- | --- | --- | --- | --- | --- | --- | --- | --- | --- | --- | --- | --- | --- | --- | --- | --- |
| 2025-12-28T09:00:00.0 | ed | 121.38 | 121.38 | 121.38 | SUM. E INST. DE CODO DE 90° PVC-SAP CR DE 1 1/4" | 1.5.1.1.2.3.2 | AS_SOON_AS_POSSIBLE |  | 500 | 28800 | 28800 | 2025-12-28T09:00:00.0 | 2025-12-29T09:00:00.0 | 2026-01-09T09:00:00.0 | 2026-01-10T09:00:00.0 | 2 días | 420 |  | 2025-09-16T11:37:00.0 | 1.5.1.1.2.3.2 |  | PRORATED | True | True | cbdcea6a-1b93-f011-adcc-c0bfbe9ea20f | True | PRORATED | 28800 | 2025-12-29T09:00:00.0 | 2025-12-28T09:00:00.0 | True | 2025-12-29T09:00:00.0 | True | 121.38 | 420 |  | 7 | 418 | 312 420 421 SS | 04.01.02.03.02 | 345600 | 121.38 |  | 345600 | 311 419 420 FS | 345600 | 2025-12-28T09:00:00.0 | 2025-12-28T09:00:00.0 2025-12-29T09:00:00.0 |
| 2025-12-28T09:00:00.0 | ed | 298.62 | 298.62 | 298.62 | SUM. E INST. DE CODO DE 90° PVC-SAP CR DE 1 1/2" | 1.5.1.1.2.3.3 | AS_SOON_AS_POSSIBLE |  | 500 | 28800 | 28800 | 2025-12-28T09:00:00.0 | 2025-12-29T09:00:00.0 | 2026-01-09T09:00:00.0 | 2026-01-10T09:00:00.0 | 2 días | 421 |  | 2025-09-16T11:37:00.0 | 1.5.1.1.2.3.3 |  | PRORATED | True | True | cddcea6a-1b93-f011-adcc-c0bfbe9ea20f | True | PRORATED | 28800 | 2025-12-29T09:00:00.0 | 2025-12-28T09:00:00.0 | True | 2025-12-29T09:00:00.0 | True | 298.62 | 421 |  | 7 | 418 | 313 421 422 SS | 04.01.02.03.03 | 345600 | 298.62 |  | 345600 | 312 420 421 SS | 345600 | 2025-12-28T09:00:00.0 | 2025-12-28T09:00:00.0 2025-12-29T09:00:00.0 |
| 2025-12-28T09:00:00.0 | ed | 133.38 | 133.38 | 133.38 | SUM. E INST. DE TEE DE PVC-SAP CR DE 1 1/4" | 1.5.1.1.2.3.4 | AS_SOON_AS_POSSIBLE |  | 500 | 28800 | 28800 | 2025-12-28T09:00:00.0 | 2025-12-29T09:00:00.0 | 2026-01-09T09:00:00.0 | 2026-01-10T09:00:00.0 | 2 días | 422 |  | 2025-09-16T11:37:00.0 | 1.5.1.1.2.3.4 |  | PRORATED | True | True | cfdcea6a-1b93-f011-adcc-c0bfbe9ea20f | True | PRORATED | 28800 | 2025-12-29T09:00:00.0 | 2025-12-28T09:00:00.0 | True | 2025-12-29T09:00:00.0 | True | 133.38 | 422 |  | 7 | 418 | 314 422 423 SS | 04.01.02.03.04 | 345600 | 133.38 |  | 345600 | 313 421 422 SS | 345600 | 2025-12-28T09:00:00.0 | 2025-12-28T09:00:00.0 2025-12-29T09:00:00.0 |
| 2025-12-28T09:00:00.0 | ed | 38.28 | 38.28 | 38.28 | SUM. E INST. DE ACCESORIO REDUCCION DE 1 1/2" A 1/2" | 1.5.1.1.2.3.5 | AS_SOON_AS_POSSIBLE |  | 500 | 28800 | 28800 | 2025-12-28T09:00:00.0 | 2025-12-29T09:00:00.0 | 2026-01-09T09:00:00.0 | 2026-01-10T09:00:00.0 | 2 días | 423 |  | 2025-09-16T11:37:00.0 | 1.5.1.1.2.3.5 |  | PRORATED | True | True | d1dcea6a-1b93-f011-adcc-c0bfbe9ea20f | True | PRORATED | 28800 | 2025-12-29T09:00:00.0 | 2025-12-28T09:00:00.0 | True | 2025-12-29T09:00:00.0 | True | 38.28 | 423 |  | 7 | 418 | 315 423 424 SS | 04.01.02.03.05 | 345600 | 38.28 |  | 345600 | 314 422 423 SS | 345600 | 2025-12-28T09:00:00.0 | 2025-12-28T09:00:00.0 2025-12-29T09:00:00.0 |
| 2025-12-28T09:00:00.0 | ed | 106.86 | 106.86 | 106.86 | SUM. E INST. DE ACCESORIO REDUCCION DE 1 1/2" A 1 1/4" | 1.5.1.1.2.3.6 | AS_SOON_AS_POSSIBLE |  | 500 | 28800 | 28800 | 2025-12-28T09:00:00.0 | 2025-12-29T09:00:00.0 | 2026-01-09T09:00:00.0 | 2026-01-10T09:00:00.0 | 2 días | 424 |  | 2025-09-16T11:37:00.0 | 1.5.1.1.2.3.6 |  | PRORATED | True | True | d3dcea6a-1b93-f011-adcc-c0bfbe9ea20f | True | PRORATED | 28800 | 2025-12-29T09:00:00.0 | 2025-12-28T09:00:00.0 | True | 2025-12-29T09:00:00.0 | True | 106.86 | 424 |  | 7 | 418 | 316 424 426 115200 FS | 04.01.02.03.06 | 345600 | 106.86 |  | 345600 | 315 423 424 SS | 345600 | 2025-12-28T09:00:00.0 | 2025-12-28T09:00:00.0 2025-12-29T09:00:00.0 |
| 2026-01-02T09:00:00.0 | ed | 276.24 | 276.24 | 276.24 | VALVULAS | 1.5.1.1.2.4 | AS_SOON_AS_POSSIBLE |  | 500 | 28800 | 28800 | 2026-01-02T09:00:00.0 | 2026-01-03T09:00:00.0 | 2026-01-09T09:00:00.0 | 2026-01-10T09:00:00.0 | 2 días | 425 | True | 2025-09-16T11:37:00.0 | 1.5.1.1.2.4 | FIXED_DURATION | PRORATED | True | True | d5dcea6a-1b93-f011-adcc-c0bfbe9ea20f | True | PRORATED | 28800 | 2026-01-03T09:00:00.0 | 2026-01-02T09:00:00.0 | True | 2026-01-03T09:00:00.0 | True | 276.24 | 425 | True | 6 | 409 |  | 04.01.02.04 | 201600 |  | 201600 | 201600 |  | 201600 |  |  |
| 2026-01-02T09:00:00.0 | ed | 276.24 | 276.24 | 276.24 | SUM. E INST. DE VALVULA DE PASO DE BRONCE DE 1 1/4", INCL. ACCESORIOS | 1.5.1.1.2.4.1 | AS_SOON_AS_POSSIBLE |  | 500 | 28800 | 28800 | 2026-01-02T09:00:00.0 | 2026-01-03T09:00:00.0 | 2026-01-14T09:00:00.0 | 2026-01-15T09:00:00.0 | 2 días | 426 |  | 2025-09-16T11:37:00.0 | 1.5.1.1.2.4.1 |  | PRORATED | True | True | d7dcea6a-1b93-f011-adcc-c0bfbe9ea20f | True | PRORATED | 28800 | 2026-01-03T09:00:00.0 | 2026-01-02T09:00:00.0 | True | 2026-01-03T09:00:00.0 | True | 276.24 | 426 |  | 7 | 425 | 317 426 429 432000 FS | 04.01.02.04.01 | 345600 | 276.24 |  | 345600 | 316 424 426 115200 FS | 345600 | 2026-01-02T09:00:00.0 | 2026-01-02T09:00:00.0 2026-01-03T09:00:00.0 |
| 2026-01-25T09:00:00.0 | ed | 4133.49 | 4133.49 | 4133.49 | APARATOS SANITARIOS Y ACCESORIOS | 1.5.1.1.3 | AS_SOON_AS_POSSIBLE | True | 500 | 57600 | 57600 | 2026-01-25T09:00:00.0 | 2026-01-27T09:00:00.0 | 2026-01-25T09:00:00.0 | 2026-01-27T09:00:00.0 | 3 días | 427 | True | 2025-09-16T11:37:00.0 | 1.5.1.1.3 | FIXED_DURATION | PRORATED | True | True | d9dcea6a-1b93-f011-adcc-c0bfbe9ea20f | True | PRORATED | 57600 | 2026-01-27T09:00:00.0 | 2026-01-25T09:00:00.0 | True | 2026-01-27T09:00:00.0 | True | 4133.49 | 427 | True | 5 | 386 |  | 04.01.03 |  |  |  |  |  |  |  |  |
| 2026-01-25T09:00:00.0 | ed | 4133.49 | 4133.49 | 4133.49 | APARATOS SANITARIOS DE SS.HH | 1.5.1.1.3.1 | AS_SOON_AS_POSSIBLE | True | 500 | 57600 | 57600 | 2026-01-25T09:00:00.0 | 2026-01-27T09:00:00.0 | 2026-01-25T09:00:00.0 | 2026-01-27T09:00:00.0 | 3 días | 428 | True | 2025-09-16T11:37:00.0 | 1.5.1.1.3.1 | FIXED_DURATION | PRORATED | True | True | dbdcea6a-1b93-f011-adcc-c0bfbe9ea20f | True | PRORATED | 57600 | 2026-01-27T09:00:00.0 | 2026-01-25T09:00:00.0 | True | 2026-01-27T09:00:00.0 | True | 4133.49 | 428 | True | 6 | 427 |  | 04.01.03.01 |  |  |  |  |  |  |  |  |
| 2026-01-25T09:00:00.0 | ed | 1695.96 | 1695.96 | 1695.96 | SUM. E INST. DE INODORO DE LOZA BLANCA PARA SS.HH | 1.5.1.1.3.1.1 | AS_SOON_AS_POSSIBLE | True | 500 | 28800 | 28800 | 2026-01-25T09:00:00.0 | 2026-01-26T09:00:00.0 | 2026-01-25T09:00:00.0 | 2026-01-26T09:00:00.0 | 2 días | 429 |  | 2025-09-16T11:37:00.0 | 1.5.1.1.3.1.1 |  | PRORATED | True | True | dddcea6a-1b93-f011-adcc-c0bfbe9ea20f | True | PRORATED | 28800 | 2026-01-26T09:00:00.0 | 2026-01-25T09:00:00.0 | True | 2026-01-26T09:00:00.0 | True | 1695.96 | 429 |  | 7 | 428 | 318 429 430 SS | 04.01.03.01.01 |  | 1695.96 |  |  | 317 426 429 432000 FS, 466 203 429 FS |  | 2026-01-25T09:00:00.0 | 2026-01-25T09:00:00.0 2026-01-26T09:00:00.0 |
| 2026-01-25T09:00:00.0 | ed | 758.14 | 758.14 | 758.14 | SUM. E INST. DE LAVATORIO DE LOZA BLANCA PARA SS.HH DENTRO | 1.5.1.1.3.1.2 | AS_SOON_AS_POSSIBLE | True | 500 | 28800 | 28800 | 2026-01-25T09:00:00.0 | 2026-01-26T09:00:00.0 | 2026-01-25T09:00:00.0 | 2026-01-26T09:00:00.0 | 2 días | 430 |  | 2025-09-16T11:37:00.0 | 1.5.1.1.3.1.2 |  | PRORATED | True | True | dfdcea6a-1b93-f011-adcc-c0bfbe9ea20f | True | PRORATED | 28800 | 2026-01-26T09:00:00.0 | 2026-01-25T09:00:00.0 | True | 2026-01-26T09:00:00.0 | True | 758.14 | 430 |  | 7 | 428 | 319 430 431 FS | 04.01.03.01.02 |  | 758.14 |  |  | 318 429 430 SS |  | 2026-01-25T09:00:00.0 | 2026-01-25T09:00:00.0 2026-01-26T09:00:00.0 |
| 2026-01-26T09:00:00.0 | ed | 371.09 | 371.09 | 371.09 | SUM. E INST. DE URINARIO DE LOZA BLANCA PARA SS.HH DE VARONES | 1.5.1.1.3.1.3 | AS_SOON_AS_POSSIBLE | True | 500 | 28800 | 28800 | 2026-01-26T09:00:00.0 | 2026-01-27T09:00:00.0 | 2026-01-26T09:00:00.0 | 2026-01-27T09:00:00.0 | 2 días | 431 |  | 2025-09-16T11:37:00.0 | 1.5.1.1.3.1.3 |  | PRORATED | True | True | e1dcea6a-1b93-f011-adcc-c0bfbe9ea20f | True | PRORATED | 28800 | 2026-01-27T09:00:00.0 | 2026-01-26T09:00:00.0 | True | 2026-01-27T09:00:00.0 | True | 371.09 | 431 |  | 7 | 428 | 320 431 432 SS | 04.01.03.01.03 |  | 371.09 |  |  | 319 430 431 FS |  | 2026-01-26T09:00:00.0 | 2026-01-26T09:00:00.0 2026-01-27T09:00:00.0 |
| 2026-01-26T09:00:00.0 | ed | 379.07 | 379.07 | 379.07 | SUM. E INST. DE GRIFERIA TEMPORIZADA PARA URINARIOS | 1.5.1.1.3.1.4 | AS_SOON_AS_POSSIBLE | True | 500 | 28800 | 28800 | 2026-01-26T09:00:00.0 | 2026-01-27T09:00:00.0 | 2026-01-26T09:00:00.0 | 2026-01-27T09:00:00.0 | 2 días | 432 |  | 2025-09-16T11:37:00.0 | 1.5.1.1.3.1.4 |  | PRORATED | True | True | e3dcea6a-1b93-f011-adcc-c0bfbe9ea20f | True | PRORATED | 28800 | 2026-01-27T09:00:00.0 | 2026-01-26T09:00:00.0 | True | 2026-01-27T09:00:00.0 | True | 379.07 | 432 |  | 7 | 428 | 321 432 433 SS | 04.01.03.01.04 |  | 379.07 |  |  | 320 431 432 SS |  | 2026-01-26T09:00:00.0 | 2026-01-26T09:00:00.0 2026-01-27T09:00:00.0 |
| 2026-01-26T09:00:00.0 | ed | 329.19 | 329.19 | 329.19 | SUM. E INST. DE GRIFERIA TEMPORIZADA PARA LAVATORIO | 1.5.1.1.3.1.5 | AS_SOON_AS_POSSIBLE | True | 500 | 28800 | 28800 | 2026-01-26T09:00:00.0 | 2026-01-27T09:00:00.0 | 2026-01-26T09:00:00.0 | 2026-01-27T09:00:00.0 | 2 días | 433 |  | 2025-09-16T11:37:00.0 | 1.5.1.1.3.1.5 |  | PRORATED | True | True | e5dcea6a-1b93-f011-adcc-c0bfbe9ea20f | True | PRORATED | 28800 | 2026-01-27T09:00:00.0 | 2026-01-26T09:00:00.0 | True | 2026-01-27T09:00:00.0 | True | 329.19 | 433 |  | 7 | 428 | 322 433 434 SS | 04.01.03.01.05 |  | 329.19 |  |  | 321 432 433 SS |  | 2026-01-26T09:00:00.0 | 2026-01-26T09:00:00.0 2026-01-27T09:00:00.0 |
| 2026-01-26T09:00:00.0 | ed | 28.18 | 28.18 | 28.18 | SUM. DE PAPELERA DE PLASTICO | 1.5.1.1.3.1.6 | AS_SOON_AS_POSSIBLE | True | 500 | 28800 | 28800 | 2026-01-26T09:00:00.0 | 2026-01-27T09:00:00.0 | 2026-01-26T09:00:00.0 | 2026-01-27T09:00:00.0 | 2 días | 434 |  | 2025-09-16T11:37:00.0 | 1.5.1.1.3.1.6 |  | PRORATED | True | True | e7dcea6a-1b93-f011-adcc-c0bfbe9ea20f | True | PRORATED | 28800 | 2026-01-27T09:00:00.0 | 2026-01-26T09:00:00.0 | True | 2026-01-27T09:00:00.0 | True | 28.18 | 434 |  | 7 | 428 | 323 434 435 SS | 04.01.03.01.06 |  | 28.18 |  |  | 322 433 434 SS |  | 2026-01-26T09:00:00.0 | 2026-01-26T09:00:00.0 2026-01-27T09:00:00.0 |
| 2026-01-26T09:00:00.0 | ed | 571.86 | 571.86 | 571.86 | SUM. E INST. DE ACCESORIOS SANITARIAS | 1.5.1.1.3.1.7 | AS_SOON_AS_POSSIBLE | True | 500 | 28800 | 28800 | 2026-01-26T09:00:00.0 | 2026-01-27T09:00:00.0 | 2026-01-26T09:00:00.0 | 2026-01-27T09:00:00.0 | 2 días | 435 |  | 2025-09-16T11:37:00.0 | 1.5.1.1.3.1.7 |  | PRORATED | True | True | e9dcea6a-1b93-f011-adcc-c0bfbe9ea20f | True | PRORATED | 28800 | 2026-01-27T09:00:00.0 | 2026-01-26T09:00:00.0 | True | 2026-01-27T09:00:00.0 | True | 571.86 | 435 |  | 7 | 428 | 324 435 437 FS | 04.01.03.01.07 |  | 571.86 |  |  | 323 434 435 SS |  | 2026-01-26T09:00:00.0 | 2026-01-26T09:00:00.0 2026-01-27T09:00:00.0 |
| 2026-01-27T09:00:00.0 | ed | 469.86 | 469.86 | 469.86 | VARIOS | 1.5.1.1.4 | AS_SOON_AS_POSSIBLE | True | 500 | 28800 | 28800 | 2026-01-27T09:00:00.0 | 2026-01-28T09:00:00.0 | 2026-01-27T09:00:00.0 | 2026-01-28T09:00:00.0 | 2 días | 436 | True | 2025-09-16T11:37:00.0 | 1.5.1.1.4 | FIXED_DURATION | PRORATED | True | True | ebdcea6a-1b93-f011-adcc-c0bfbe9ea20f | True | PRORATED | 28800 | 2026-01-28T09:00:00.0 | 2026-01-27T09:00:00.0 | True | 2026-01-28T09:00:00.0 | True | 469.86 | 436 | True | 5 | 386 |  | 04.01.04 |  |  |  |  |  |  |  |  |
| 2026-01-27T09:00:00.0 | ed | 340.15 | 340.15 | 340.15 | PRUEBA HIDRAULICA DE RED DE DESAGUE | 1.5.1.1.4.1 | AS_SOON_AS_POSSIBLE | True | 500 | 28800 | 28800 | 2026-01-27T09:00:00.0 | 2026-01-28T09:00:00.0 | 2026-01-27T09:00:00.0 | 2026-01-28T09:00:00.0 | 2 días | 437 |  | 2025-09-16T11:37:00.0 | 1.5.1.1.4.1 |  | PRORATED | True | True | eddcea6a-1b93-f011-adcc-c0bfbe9ea20f | True | PRORATED | 28800 | 2026-01-28T09:00:00.0 | 2026-01-27T09:00:00.0 | True | 2026-01-28T09:00:00.0 | True | 340.15 | 437 |  | 6 | 436 | 326 437 438 SS, 482 437 439 SS | 04.01.04.01 |  | 340.15 |  |  | 324 435 437 FS |  | 2026-01-27T09:00:00.0 | 2026-01-27T09:00:00.0 2026-01-28T09:00:00.0 |
| 2026-01-27T09:00:00.0 | ed | 8.95 | 8.95 | 8.95 | PRUEBA HIDRAULICA DE RED DE AGUA | 1.5.1.1.4.2 | AS_SOON_AS_POSSIBLE | True | 500 | 28800 | 28800 | 2026-01-27T09:00:00.0 | 2026-01-28T09:00:00.0 | 2026-01-27T09:00:00.0 | 2026-01-28T09:00:00.0 | 2 días | 438 |  | 2025-09-16T11:37:00.0 | 1.5.1.1.4.2 |  | PRORATED | True | True | efdcea6a-1b93-f011-adcc-c0bfbe9ea20f | True | PRORATED | 28800 | 2026-01-28T09:00:00.0 | 2026-01-27T09:00:00.0 | True | 2026-01-28T09:00:00.0 | True | 8.95 | 438 |  | 6 | 436 |  | 04.01.04.02 |  | 8.95 |  |  | 326 437 438 SS |  | 2026-01-27T09:00:00.0 | 2026-01-27T09:00:00.0 2026-01-28T09:00:00.0 |
| 2026-01-27T09:00:00.0 | ed | 120.76 | 120.76 | 120.76 | CAJA DE REBOSE DE CISTERNA 0.40M X 0.40M (INC. REJILLA Y SUMIDERO) | 1.5.1.1.4.3 | AS_SOON_AS_POSSIBLE | True | 500 | 28800 | 28800 | 2026-01-27T09:00:00.0 | 2026-01-28T09:00:00.0 | 2026-01-27T09:00:00.0 | 2026-01-28T09:00:00.0 | 2 días | 439 |  | 2025-09-16T11:37:00.0 | 1.5.1.1.4.3 |  | PRORATED | True | True | f1dcea6a-1b93-f011-adcc-c0bfbe9ea20f | True | PRORATED | 28800 | 2026-01-28T09:00:00.0 | 2026-01-27T09:00:00.0 | True | 2026-01-28T09:00:00.0 | True | 120.76 | 439 |  | 6 | 436 |  | 04.01.04.03 |  | 120.76 |  |  | 482 437 439 SS |  | 2026-01-27T09:00:00.0 | 2026-01-27T09:00:00.0 2026-01-28T09:00:00.0 |
| 2025-10-18T09:00:00.0 | ed | 3114.23 | 3114.23 | 3114.23 | VELATORIO | 1.5.1.2 | AS_SOON_AS_POSSIBLE |  | 500 | 1123200 | 1123200 | 2025-10-18T09:00:00.0 | 2025-11-26T09:00:00.0 | 2025-12-20T09:00:00.0 | 2026-01-28T09:00:00.0 | 40 días | 440 | True | 2025-09-16T11:37:00.0 | 1.5.1.2 | FIXED_DURATION | PRORATED | True | True | f3dcea6a-1b93-f011-adcc-c0bfbe9ea20f | True | PRORATED | 1123200 | 2025-11-26T09:00:00.0 | 2025-10-18T09:00:00.0 | True | 2025-11-26T09:00:00.0 | True | 3114.23 | 440 | True | 4 | 385 |  | 04.02 | 1814400 |  | 1814400 | 1814400 |  | 1814400 |  |  |
| 2025-10-18T09:00:00.0 | ed | 587.5 | 587.5 | 587.5 | APARATOS SANITARIOS Y ACCESORIOS | 1.5.1.2.1 | AS_SOON_AS_POSSIBLE |  | 500 | 115200 | 115200 | 2025-10-18T09:00:00.0 | 2025-10-22T09:00:00.0 | 2025-12-20T09:00:00.0 | 2025-12-24T09:00:00.0 | 5 días | 441 | True | 2025-09-16T11:37:00.0 | 1.5.1.2.1 | FIXED_DURATION | PRORATED | True | True | f5dcea6a-1b93-f011-adcc-c0bfbe9ea20f | True | PRORATED | 115200 | 2025-10-22T09:00:00.0 | 2025-10-18T09:00:00.0 | True | 2025-10-22T09:00:00.0 | True | 587.5 | 441 | True | 5 | 440 |  | 04.02.01 | 1814400 |  | 1814400 | 1814400 |  | 1814400 |  |  |
| 2025-10-18T09:00:00.0 | ed | 372.92 | 372.92 | 372.92 | SUMINISTRO DE APARATOS SANITARIOS | 1.5.1.2.1.1 | AS_SOON_AS_POSSIBLE |  | 500 | 28800 | 28800 | 2025-10-18T09:00:00.0 | 2025-10-19T09:00:00.0 | 2025-12-20T09:00:00.0 | 2025-12-21T09:00:00.0 | 2 días | 442 |  | 2025-09-16T11:37:00.0 | 1.5.1.2.1.1 |  | PRORATED | True | True | f7dcea6a-1b93-f011-adcc-c0bfbe9ea20f | True | PRORATED | 28800 | 2025-10-19T09:00:00.0 | 2025-10-18T09:00:00.0 | True | 2025-10-19T09:00:00.0 | True | 372.92 | 442 |  | 6 | 441 | 328 442 444 FS | 04.02.01.01 | 1814400 | 372.92 |  | 1814400 | 347 131 442 SS | 1814400 | 2025-10-18T09:00:00.0 | 2025-10-18T09:00:00.0 2025-10-19T09:00:00.0 |
| 2025-10-20T09:00:00.0 | ed | 82.14 | 82.14 | 82.14 | SUMINISTRO DE ACCESORIOS | 1.5.1.2.1.2 | AS_SOON_AS_POSSIBLE |  | 500 | 28800 | 28800 | 2025-10-20T09:00:00.0 | 2025-10-21T09:00:00.0 | 2025-12-22T09:00:00.0 | 2025-12-23T09:00:00.0 | 2 días | 443 |  | 2025-09-16T11:37:00.0 | 1.5.1.2.1.2 |  | PRORATED | True | True | f9dcea6a-1b93-f011-adcc-c0bfbe9ea20f | True | PRORATED | 28800 | 2025-10-21T09:00:00.0 | 2025-10-20T09:00:00.0 | True | 2025-10-21T09:00:00.0 | True | 82.14 | 443 |  | 6 | 441 | 330 443 445 FS | 04.02.01.02 | 1814400 | 82.14 |  | 1814400 | 329 444 443 FS | 1814400 | 2025-10-20T09:00:00.0 | 2025-10-20T09:00:00.0 2025-10-21T09:00:00.0 |
| 2025-10-19T09:00:00.0 | ed | 110.36 | 110.36 | 110.36 | INSTALACION DE APARATOS SANITARIOS | 1.5.1.2.1.3 | AS_SOON_AS_POSSIBLE |  | 500 | 28800 | 28800 | 2025-10-19T09:00:00.0 | 2025-10-20T09:00:00.0 | 2025-12-21T09:00:00.0 | 2025-12-22T09:00:00.0 | 2 días | 444 |  | 2025-09-16T11:37:00.0 | 1.5.1.2.1.3 |  | PRORATED | True | True | fbdcea6a-1b93-f011-adcc-c0bfbe9ea20f | True | PRORATED | 28800 | 2025-10-20T09:00:00.0 | 2025-10-19T09:00:00.0 | True | 2025-10-20T09:00:00.0 | True | 110.36 | 444 |  | 6 | 441 | 329 444 443 FS | 04.02.01.03 | 1814400 | 110.36 |  | 1814400 | 328 442 444 FS | 1814400 | 2025-10-19T09:00:00.0 | 2025-10-19T09:00:00.0 2025-10-20T09:00:00.0 |
| 2025-10-21T09:00:00.0 | ed | 22.08 | 22.08 | 22.08 | INSTALACION DE ACCESORIOS | 1.5.1.2.1.4 | AS_SOON_AS_POSSIBLE |  | 500 | 28800 | 28800 | 2025-10-21T09:00:00.0 | 2025-10-22T09:00:00.0 | 2025-12-23T09:00:00.0 | 2025-12-24T09:00:00.0 | 2 días | 445 |  | 2025-09-16T11:37:00.0 | 1.5.1.2.1.4 |  | PRORATED | True | True | fddcea6a-1b93-f011-adcc-c0bfbe9ea20f | True | PRORATED | 28800 | 2025-10-22T09:00:00.0 | 2025-10-21T09:00:00.0 | True | 2025-10-22T09:00:00.0 | True | 22.08 | 445 |  | 6 | 441 | 331 445 447 230400 FS | 04.02.01.04 | 1814400 | 22.08 |  | 1814400 | 330 443 445 FS | 1814400 | 2025-10-21T09:00:00.0 | 2025-10-21T09:00:00.0 2025-10-22T09:00:00.0 |
| 2025-10-30T09:00:00.0 | ed | 980.79 | 980.79 | 980.79 | SISTEMA DE AGUA FRIA | 1.5.1.2.2 | AS_SOON_AS_POSSIBLE |  | 500 | 172800 | 172800 | 2025-10-30T09:00:00.0 | 2025-11-05T09:00:00.0 | 2026-01-01T09:00:00.0 | 2026-01-07T09:00:00.0 | 7 días | 446 | True | 2025-09-16T11:37:00.0 | 1.5.1.2.2 | FIXED_DURATION | PRORATED | True | True | ffdcea6a-1b93-f011-adcc-c0bfbe9ea20f | True | PRORATED | 172800 | 2025-11-05T09:00:00.0 | 2025-10-30T09:00:00.0 | True | 2025-11-05T09:00:00.0 | True | 980.79 | 446 | True | 5 | 440 |  | 04.02.02 | 1814400 |  | 1814400 | 1814400 |  | 1814400 |  |  |
| 2025-10-30T09:00:00.0 | ed | 112.02 | 112.02 | 112.02 | SALIDA DE AGUA FRIA | 1.5.1.2.2.1 | AS_SOON_AS_POSSIBLE |  | 500 | 28800 | 28800 | 2025-10-30T09:00:00.0 | 2025-10-31T09:00:00.0 | 2026-01-01T09:00:00.0 | 2026-01-02T09:00:00.0 | 2 días | 447 |  | 2025-09-16T11:37:00.0 | 1.5.1.2.2.1 |  | PRORATED | True | True | 01ddea6a-1b93-f011-adcc-c0bfbe9ea20f | True | PRORATED | 28800 | 2025-10-31T09:00:00.0 | 2025-10-30T09:00:00.0 | True | 2025-10-31T09:00:00.0 | True | 112.02 | 447 |  | 6 | 446 | 332 447 448 FS | 04.02.02.01 | 1814400 | 112.02 |  | 1814400 | 331 445 447 230400 FS | 1814400 | 2025-10-30T09:00:00.0 | 2025-10-30T09:00:00.0 2025-10-31T09:00:00.0 |
| 2025-10-31T09:00:00.0 | ed | 186.79 | 186.79 | 186.79 | REDES DE ALIMENTACION | 1.5.1.2.2.2 | AS_SOON_AS_POSSIBLE |  | 500 | 28800 | 28800 | 2025-10-31T09:00:00.0 | 2025-11-01T09:00:00.0 | 2026-01-02T09:00:00.0 | 2026-01-03T09:00:00.0 | 2 días | 448 |  | 2025-09-16T11:37:00.0 | 1.5.1.2.2.2 |  | PRORATED | True | True | 03ddea6a-1b93-f011-adcc-c0bfbe9ea20f | True | PRORATED | 28800 | 2025-11-01T09:00:00.0 | 2025-10-31T09:00:00.0 | True | 2025-11-01T09:00:00.0 | True | 186.79 | 448 |  | 6 | 446 | 333 448 449 FS | 04.02.02.02 | 1814400 | 186.79 |  | 1814400 | 332 447 448 FS | 1814400 | 2025-10-31T09:00:00.0 | 2025-10-31T09:00:00.0 2025-11-01T09:00:00.0 |
| 2025-11-01T09:00:00.0 | ed | 604.72 | 604.72 | 604.72 | ACCESORIOS DE REDES DE AGUA | 1.5.1.2.2.3 | AS_SOON_AS_POSSIBLE |  | 500 | 57600 | 57600 | 2025-11-01T09:00:00.0 | 2025-11-03T09:00:00.0 | 2026-01-03T09:00:00.0 | 2026-01-05T09:00:00.0 | 3 días | 449 |  | 2025-09-16T11:37:00.0 | 1.5.1.2.2.3 |  | PRORATED | True | True | 05ddea6a-1b93-f011-adcc-c0bfbe9ea20f | True | PRORATED | 57600 | 2025-11-03T09:00:00.0 | 2025-11-01T09:00:00.0 | True | 2025-11-03T09:00:00.0 | True | 604.72 | 449 |  | 6 | 446 | 334 449 450 FS | 04.02.02.03 | 1814400 | 604.72 |  | 1814400 | 333 448 449 FS | 1814400 | 2025-11-01T09:00:00.0 | 2025-11-01T09:00:00.0 2025-11-03T09:00:00.0 |
| 2025-11-03T09:00:00.0 | ed | 39.47 | 39.47 | 39.47 | VALVULAS | 1.5.1.2.2.4 | AS_SOON_AS_POSSIBLE |  | 500 | 28800 | 28800 | 2025-11-03T09:00:00.0 | 2025-11-04T09:00:00.0 | 2026-01-05T09:00:00.0 | 2026-01-06T09:00:00.0 | 2 días | 450 |  | 2025-09-16T11:37:00.0 | 1.5.1.2.2.4 |  | PRORATED | True | True | 07ddea6a-1b93-f011-adcc-c0bfbe9ea20f | True | PRORATED | 28800 | 2025-11-04T09:00:00.0 | 2025-11-03T09:00:00.0 | True | 2025-11-04T09:00:00.0 | True | 39.47 | 450 |  | 6 | 446 | 335 450 451 FS | 04.02.02.04 | 1814400 | 39.47 |  | 1814400 | 334 449 450 FS | 1814400 | 2025-11-03T09:00:00.0 | 2025-11-03T09:00:00.0 2025-11-04T09:00:00.0 |
| 2025-11-04T09:00:00.0 | ed | 37.79 | 37.79 | 37.79 | CONEXION CON RED DE AGUA EXISTENTE | 1.5.1.2.2.5 | AS_SOON_AS_POSSIBLE |  | 500 | 28800 | 28800 | 2025-11-04T09:00:00.0 | 2025-11-05T09:00:00.0 | 2026-01-06T09:00:00.0 | 2026-01-07T09:00:00.0 | 2 días | 451 |  | 2025-09-16T11:37:00.0 | 1.5.1.2.2.5 |  | PRORATED | True | True | 09ddea6a-1b93-f011-adcc-c0bfbe9ea20f | True | PRORATED | 28800 | 2025-11-05T09:00:00.0 | 2025-11-04T09:00:00.0 | True | 2025-11-05T09:00:00.0 | True | 37.79 | 451 |  | 6 | 446 | 336 451 453 288000 FS | 04.02.02.05 | 1814400 | 37.79 |  | 1814400 | 335 450 451 FS | 1814400 | 2025-11-04T09:00:00.0 | 2025-11-04T09:00:00.0 2025-11-05T09:00:00.0 |
| 2025-11-15T09:00:00.0 | ed | 1545.94 | 1545.94 | 1545.94 | DESAGUE Y VENTILACION | 1.5.1.2.3 | AS_SOON_AS_POSSIBLE |  | 500 | 316800 | 316800 | 2025-11-15T09:00:00.0 | 2025-11-26T09:00:00.0 | 2026-01-17T09:00:00.0 | 2026-01-28T09:00:00.0 | 12 días | 452 | True | 2025-09-16T11:37:00.0 | 1.5.1.2.3 | FIXED_DURATION | PRORATED | True | True | 0bddea6a-1b93-f011-adcc-c0bfbe9ea20f | True | PRORATED | 316800 | 2025-11-26T09:00:00.0 | 2025-11-15T09:00:00.0 | True | 2025-11-26T09:00:00.0 | True | 1545.94 | 452 | True | 5 | 440 |  | 04.02.03 | 1814400 |  | 1814400 | 1814400 |  | 1814400 |  |  |
| 2025-11-15T09:00:00.0 | ed | 146.29 | 146.29 | 146.29 | SALIDA DE DESAGUE | 1.5.1.2.3.1 | AS_SOON_AS_POSSIBLE |  | 500 | 28800 | 28800 | 2025-11-15T09:00:00.0 | 2025-11-16T09:00:00.0 | 2026-01-17T09:00:00.0 | 2026-01-18T09:00:00.0 | 2 días | 453 |  | 2025-09-16T11:37:00.0 | 1.5.1.2.3.1 |  | PRORATED | True | True | 0dddea6a-1b93-f011-adcc-c0bfbe9ea20f | True | PRORATED | 28800 | 2025-11-16T09:00:00.0 | 2025-11-15T09:00:00.0 | True | 2025-11-16T09:00:00.0 | True | 146.29 | 453 |  | 6 | 452 | 337 453 454 FS | 04.02.03.01 | 1814400 | 146.29 |  | 1814400 | 336 451 453 288000 FS | 1814400 | 2025-11-15T09:00:00.0 | 2025-11-15T09:00:00.0 2025-11-16T09:00:00.0 |
| 2025-11-16T09:00:00.0 | ed | 67.74 | 67.74 | 67.74 | SALIDA DE DRENAJE PLUVIAL | 1.5.1.2.3.2 | AS_SOON_AS_POSSIBLE |  | 500 | 28800 | 28800 | 2025-11-16T09:00:00.0 | 2025-11-17T09:00:00.0 | 2026-01-18T09:00:00.0 | 2026-01-19T09:00:00.0 | 2 días | 454 |  | 2025-09-16T11:37:00.0 | 1.5.1.2.3.2 |  | PRORATED | True | True | 0fddea6a-1b93-f011-adcc-c0bfbe9ea20f | True | PRORATED | 28800 | 2025-11-17T09:00:00.0 | 2025-11-16T09:00:00.0 | True | 2025-11-17T09:00:00.0 | True | 67.74 | 454 |  | 6 | 452 | 338 454 455 FS | 04.02.03.02 | 1814400 | 67.74 |  | 1814400 | 337 453 454 FS | 1814400 | 2025-11-16T09:00:00.0 | 2025-11-16T09:00:00.0 2025-11-17T09:00:00.0 |
| 2025-11-17T09:00:00.0 | ed | 9.07 | 9.07 | 9.07 | EXCAVACION PARA CANALETAS Y REDES | 1.5.1.2.3.3 | AS_SOON_AS_POSSIBLE |  | 500 | 28800 | 28800 | 2025-11-17T09:00:00.0 | 2025-11-18T09:00:00.0 | 2026-01-19T09:00:00.0 | 2026-01-20T09:00:00.0 | 2 días | 455 |  | 2025-09-16T11:37:00.0 | 1.5.1.2.3.3 |  | PRORATED | True | True | 11ddea6a-1b93-f011-adcc-c0bfbe9ea20f | True | PRORATED | 28800 | 2025-11-18T09:00:00.0 | 2025-11-17T09:00:00.0 | True | 2025-11-18T09:00:00.0 | True | 9.07 | 455 |  | 6 | 452 | 339 455 456 FS | 04.02.03.03 | 1814400 | 9.07 |  | 1814400 | 338 454 455 FS | 1814400 | 2025-11-17T09:00:00.0 | 2025-11-17T09:00:00.0 2025-11-18T09:00:00.0 |
| 2025-11-18T09:00:00.0 | ed | 987.57 | 987.57 | 987.57 | CANALETAS, INC, REJILLA METALICA Y TRAMPA DE CONEXION A DESAGUE | 1.5.1.2.3.4 | AS_SOON_AS_POSSIBLE |  | 500 | 28800 | 28800 | 2025-11-18T09:00:00.0 | 2025-11-19T09:00:00.0 | 2026-01-20T09:00:00.0 | 2026-01-21T09:00:00.0 | 2 días | 456 |  | 2025-09-16T11:37:00.0 | 1.5.1.2.3.4 |  | PRORATED | True | True | 13ddea6a-1b93-f011-adcc-c0bfbe9ea20f | True | PRORATED | 28800 | 2025-11-19T09:00:00.0 | 2025-11-18T09:00:00.0 | True | 2025-11-19T09:00:00.0 | True | 987.57 | 456 |  | 6 | 452 | 340 456 457 FS | 04.02.03.04 | 1814400 | 987.57 |  | 1814400 | 339 455 456 FS | 1814400 | 2025-11-18T09:00:00.0 | 2025-11-18T09:00:00.0 2025-11-19T09:00:00.0 |
| 2025-11-19T09:00:00.0 | ed | 114.31 | 114.31 | 114.31 | REDES DE DERIVACION | 1.5.1.2.3.5 | AS_SOON_AS_POSSIBLE |  | 500 | 28800 | 28800 | 2025-11-19T09:00:00.0 | 2025-11-20T09:00:00.0 | 2026-01-21T09:00:00.0 | 2026-01-22T09:00:00.0 | 2 días | 457 |  | 2025-09-16T11:37:00.0 | 1.5.1.2.3.5 |  | PRORATED | True | True | b06de370-1b93-f011-adcc-c0bfbe9ea20f | True | PRORATED | 28800 | 2025-11-20T09:00:00.0 | 2025-11-19T09:00:00.0 | True | 2025-11-20T09:00:00.0 | True | 114.31 | 457 |  | 6 | 452 | 342 457 458 FS | 04.02.03.05 | 1814400 | 114.31 |  | 1814400 | 340 456 457 FS | 1814400 | 2025-11-19T09:00:00.0 | 2025-11-19T09:00:00.0 2025-11-20T09:00:00.0 |
| 2025-11-20T09:00:00.0 | ed | 84.73 | 84.73 | 84.73 | REDES COLECTORAS | 1.5.1.2.3.6 | AS_SOON_AS_POSSIBLE |  | 500 | 28800 | 28800 | 2025-11-20T09:00:00.0 | 2025-11-21T09:00:00.0 | 2026-01-22T09:00:00.0 | 2026-01-23T09:00:00.0 | 2 días | 458 |  | 2025-09-16T11:37:00.0 | 1.5.1.2.3.6 |  | PRORATED | True | True | b26de370-1b93-f011-adcc-c0bfbe9ea20f | True | PRORATED | 28800 | 2025-11-21T09:00:00.0 | 2025-11-20T09:00:00.0 | True | 2025-11-21T09:00:00.0 | True | 84.73 | 458 |  | 6 | 452 | 343 458 459 FS | 04.02.03.06 | 1814400 | 84.73 |  | 1814400 | 342 457 458 FS | 1814400 | 2025-11-20T09:00:00.0 | 2025-11-20T09:00:00.0 2025-11-21T09:00:00.0 |
| 2025-11-21T09:00:00.0 | ed | 94.05 | 94.05 | 94.05 | ACCESORIOS DE REDES COLECTORAS | 1.5.1.2.3.7 | AS_SOON_AS_POSSIBLE |  | 500 | 86400 | 86400 | 2025-11-21T09:00:00.0 | 2025-11-24T09:00:00.0 | 2026-01-23T09:00:00.0 | 2026-01-26T09:00:00.0 | 4 días | 459 |  | 2025-09-16T11:37:00.0 | 1.5.1.2.3.7 |  | PRORATED | True | True | b46de370-1b93-f011-adcc-c0bfbe9ea20f | True | PRORATED | 86400 | 2025-11-24T09:00:00.0 | 2025-11-21T09:00:00.0 | True | 2025-11-24T09:00:00.0 | True | 94.05 | 459 |  | 6 | 452 | 344 459 460 FS | 04.02.03.07 | 1814400 | 94.05 |  | 1814400 | 343 458 459 FS | 1814400 | 2025-11-21T09:00:00.0 | 2025-11-21T09:00:00.0 2025-11-24T09:00:00.0 |
| 2025-11-24T09:00:00.0 | ed | 37.79 | 37.79 | 37.79 | REUBICACION DE CAJA DE CONCRETO | 1.5.1.2.3.8 | AS_SOON_AS_POSSIBLE |  | 500 | 28800 | 28800 | 2025-11-24T09:00:00.0 | 2025-11-25T09:00:00.0 | 2026-01-26T09:00:00.0 | 2026-01-27T09:00:00.0 | 2 días | 460 |  | 2025-09-16T11:37:00.0 | 1.5.1.2.3.8 |  | PRORATED | True | True | b66de370-1b93-f011-adcc-c0bfbe9ea20f | True | PRORATED | 28800 | 2025-11-25T09:00:00.0 | 2025-11-24T09:00:00.0 | True | 2025-11-25T09:00:00.0 | True | 37.79 | 460 |  | 6 | 452 | 345 460 461 FS | 04.02.03.08 | 1814400 | 37.79 |  | 1814400 | 344 459 460 FS | 1814400 | 2025-11-24T09:00:00.0 | 2025-11-24T09:00:00.0 2025-11-25T09:00:00.0 |
| 2025-11-25T09:00:00.0 | ed | 4.39 | 4.39 | 4.39 | ELIMINACION MATERIAL EXCEDENTE | 1.5.1.2.3.9 | AS_SOON_AS_POSSIBLE |  | 500 | 28800 | 28800 | 2025-11-25T09:00:00.0 | 2025-11-26T09:00:00.0 | 2026-01-27T09:00:00.0 | 2026-01-28T09:00:00.0 | 2 días | 461 |  | 2025-09-16T11:37:00.0 | 1.5.1.2.3.9 |  | PRORATED | True | True | b86de370-1b93-f011-adcc-c0bfbe9ea20f | True | PRORATED | 28800 | 2025-11-26T09:00:00.0 | 2025-11-25T09:00:00.0 | True | 2025-11-26T09:00:00.0 | True | 4.39 | 461 |  | 6 | 452 |  | 04.02.03.09 | 1814400 | 4.39 | 1814400 | 1814400 | 345 460 461 FS | 1814400 | 2025-11-25T09:00:00.0 | 2025-11-25T09:00:00.0 2025-11-26T09:00:00.0 |
| 2025-10-18T09:00:00.0 | ed | 44777.75 | 44777.75 | 44777.75 | INSTALACIONES ELECTRICAS | 1.6 | AS_SOON_AS_POSSIBLE | True | 500 | 2937600 | 2937600 | 2025-10-18T09:00:00.0 | 2026-01-28T09:00:00.0 | 2025-12-26T09:00:00.0 | 2026-01-28T09:00:00.0 | 103 días | 462 | True | 2025-09-16T11:37:00.0 | 1.6 | FIXED_DURATION | PRORATED | True | True | ba6de370-1b93-f011-adcc-c0bfbe9ea20f | True | PRORATED | 2937600 | 2026-01-28T09:00:00.0 | 2025-10-18T09:00:00.0 | True | 2026-01-28T09:00:00.0 | True | 44777.75 | 462 | True | 2 | 1 |  |  |  |  |  |  |  | 1987200 |  |  |
| 2025-10-18T09:00:00.0 | ed | 44777.75 | 44777.75 | 44777.75 | INSTALACIONES ELECTRICAS | 1.6.1 | AS_SOON_AS_POSSIBLE | True | 500 | 2937600 | 2937600 | 2025-10-18T09:00:00.0 | 2026-01-28T09:00:00.0 | 2025-12-26T09:00:00.0 | 2026-01-28T09:00:00.0 | 103 días | 463 | True | 2025-09-16T11:37:00.0 | 1.6.1 | FIXED_DURATION | PRORATED | True | True | bc6de370-1b93-f011-adcc-c0bfbe9ea20f | True | PRORATED | 2937600 | 2026-01-28T09:00:00.0 | 2025-10-18T09:00:00.0 | True | 2026-01-28T09:00:00.0 | True | 44777.75 | 463 | True | 3 | 462 |  | 05 |  |  |  |  |  | 1987200 |  |  |
| 2025-11-06T09:00:00.0 | ed | 37310.21 | 37310.21 | 37310.21 | CREMATORIO | 1.6.1.1 | AS_SOON_AS_POSSIBLE | True | 500 | 2390400 | 2390400 | 2025-11-06T09:00:00.0 | 2026-01-28T09:00:00.0 | 2025-12-26T09:00:00.0 | 2026-01-28T09:00:00.0 | 84 días | 464 | True | 2025-09-16T11:37:00.0 | 1.6.1.1 | FIXED_DURATION | PRORATED | True | True | be6de370-1b93-f011-adcc-c0bfbe9ea20f | True | PRORATED | 2390400 | 2026-01-28T09:00:00.0 | 2025-11-06T09:00:00.0 | True | 2026-01-28T09:00:00.0 | True | 37310.21 | 464 | True | 4 | 463 |  | 05.01 |  |  |  |  |  | 1440000 |  |  |
| 2025-11-06T09:00:00.0 | ed | 332.25 | 332.25 | 332.25 | CAJAS DE PASE | 1.6.1.1.1 | AS_SOON_AS_POSSIBLE |  | 500 | 86400 | 86400 | 2025-11-06T09:00:00.0 | 2025-11-09T09:00:00.0 | 2025-12-26T09:00:00.0 | 2025-12-29T09:00:00.0 | 4 días | 465 | True | 2025-09-16T11:37:00.0 | 1.6.1.1.1 | FIXED_DURATION | PRORATED | True | True | c06de370-1b93-f011-adcc-c0bfbe9ea20f | True | PRORATED | 86400 | 2025-11-09T09:00:00.0 | 2025-11-06T09:00:00.0 | True | 2025-11-09T09:00:00.0 | True | 332.25 | 465 | True | 5 | 464 |  | 05.01.01 | 1440000 |  | 1440000 | 1440000 |  | 1440000 |  |  |
| 2025-11-06T09:00:00.0 | ed | 102.4 | 102.4 | 102.4 | CAJA DE PASE DE PLANCHA GALVANIZADA DE 10cm x 10cm x 8cm (SELLADO HERMETICAMENTE), CON PROTECCION IP 65 Y DE TIPO PESADA PARA EMPOTRAR (TIPO 1) | 1.6.1.1.1.1 | AS_SOON_AS_POSSIBLE |  | 500 | 28800 | 28800 | 2025-11-06T09:00:00.0 | 2025-11-07T09:00:00.0 | 2025-12-17T09:00:00.0 | 2025-12-18T09:00:00.0 | 2 días | 466 |  | 2025-09-16T11:37:00.0 | 1.6.1.1.1.1 |  | PRORATED | True | True | c26de370-1b93-f011-adcc-c0bfbe9ea20f | True | PRORATED | 28800 | 2025-11-07T09:00:00.0 | 2025-11-06T09:00:00.0 | True | 2025-11-07T09:00:00.0 | True | 102.4 | 466 |  | 6 | 465 | 351 466 467 FS | 05.01.01.01 | 1180800 | 102.4 |  | 1180800 | 414 77 466 FS | 1180800 | 2025-11-06T09:00:00.0 | 2025-11-06T09:00:00.0 2025-11-07T09:00:00.0 |
| 2025-11-07T09:00:00.0 | ed | 162.03 | 162.03 | 162.03 | CAJA DE PASE DE PLANCHA GALVANIZADA DE 15cm x 15cm x 8cm (SELLADO HERMETICAMENTE), CON PROTECCION IP 65 Y DE TIPO PESADA PARA EMPOTRAR (TIPO 2) | 1.6.1.1.1.2 | AS_SOON_AS_POSSIBLE |  | 500 | 28800 | 28800 | 2025-11-07T09:00:00.0 | 2025-11-08T09:00:00.0 | 2025-12-18T09:00:00.0 | 2025-12-19T09:00:00.0 | 2 días | 467 |  | 2025-09-16T11:37:00.0 | 1.6.1.1.1.2 |  | PRORATED | True | True | c46de370-1b93-f011-adcc-c0bfbe9ea20f | True | PRORATED | 28800 | 2025-11-08T09:00:00.0 | 2025-11-07T09:00:00.0 | True | 2025-11-08T09:00:00.0 | True | 162.03 | 467 |  | 6 | 465 | 352 467 468 FS | 05.01.01.02 | 1180800 | 162.03 |  | 1180800 | 351 466 467 FS | 1180800 | 2025-11-07T09:00:00.0 | 2025-11-07T09:00:00.0 2025-11-08T09:00:00.0 |
| 2025-11-08T09:00:00.0 | ed | 67.82 | 67.82 | 67.82 | CAJAS DE PASE PVC DE 30cmx 30cm x 15cm (SELLADO HERMETICAMENTE) | 1.6.1.1.1.3 | AS_SOON_AS_POSSIBLE |  | 500 | 28800 | 28800 | 2025-11-08T09:00:00.0 | 2025-11-09T09:00:00.0 | 2025-12-19T09:00:00.0 | 2025-12-20T09:00:00.0 | 2 días | 468 |  | 2025-09-16T11:37:00.0 | 1.6.1.1.1.3 |  | PRORATED | True | True | c66de370-1b93-f011-adcc-c0bfbe9ea20f | True | PRORATED | 28800 | 2025-11-09T09:00:00.0 | 2025-11-08T09:00:00.0 | True | 2025-11-09T09:00:00.0 | True | 67.82 | 468 |  | 6 | 465 | 353 468 471 FS | 05.01.01.03 | 1180800 | 67.82 |  | 1180800 | 352 467 468 FS | 1180800 | 2025-11-08T09:00:00.0 | 2025-11-08T09:00:00.0 2025-11-09T09:00:00.0 |
| 2025-11-09T09:00:00.0 | ed | 3534.68 | 3534.68 | 3534.68 | SALIDAS Y FUERZAS | 1.6.1.1.2 | AS_SOON_AS_POSSIBLE |  | 500 | 230400 | 230400 | 2025-11-09T09:00:00.0 | 2025-11-17T09:00:00.0 | 2025-12-29T09:00:00.0 | 2026-01-06T09:00:00.0 | 9 días | 469 | True | 2025-09-16T11:37:00.0 | 1.6.1.1.2 | FIXED_DURATION | PRORATED | True | True | c86de370-1b93-f011-adcc-c0bfbe9ea20f | True | PRORATED | 230400 | 2025-11-17T09:00:00.0 | 2025-11-09T09:00:00.0 | True | 2025-11-17T09:00:00.0 | True | 3534.68 | 469 | True | 5 | 464 |  | 05.01.02 | 1440000 |  | 1440000 | 1440000 |  | 1440000 |  |  |
| 2025-11-09T09:00:00.0 | ed | 2293.11 | 2293.11 | 2293.11 | SALIDAS ELECTRICAS DE ALUMBRADO | 1.6.1.1.2.1 | AS_SOON_AS_POSSIBLE |  | 500 | 28800 | 28800 | 2025-11-09T09:00:00.0 | 2025-11-10T09:00:00.0 | 2025-12-29T09:00:00.0 | 2025-12-30T09:00:00.0 | 2 días | 470 | True | 2025-09-16T11:37:00.0 | 1.6.1.1.2.1 | FIXED_DURATION | PRORATED | True | True | ca6de370-1b93-f011-adcc-c0bfbe9ea20f | True | PRORATED | 28800 | 2025-11-10T09:00:00.0 | 2025-11-09T09:00:00.0 | True | 2025-11-10T09:00:00.0 | True | 2293.11 | 470 | True | 6 | 469 |  | 05.01.02.01 | 1440000 |  | 1440000 | 1440000 |  | 1440000 |  |  |
| 2025-11-09T09:00:00.0 | ed | 2293.11 | 2293.11 | 2293.11 | SALIDAS PARA LUMINARIAS DE 20W, 220vac | 1.6.1.1.2.1.1 | AS_SOON_AS_POSSIBLE |  | 500 | 28800 | 28800 | 2025-11-09T09:00:00.0 | 2025-11-10T09:00:00.0 | 2025-12-20T09:00:00.0 | 2025-12-21T09:00:00.0 | 2 días | 471 |  | 2025-09-16T11:37:00.0 | 1.6.1.1.2.1.1 |  | PRORATED | True | True | cc6de370-1b93-f011-adcc-c0bfbe9ea20f | True | PRORATED | 28800 | 2025-11-10T09:00:00.0 | 2025-11-09T09:00:00.0 | True | 2025-11-10T09:00:00.0 | True | 2293.11 | 471 |  | 7 | 470 | 354 471 473 FS | 05.01.02.01.01 | 1180800 | 2293.11 |  | 1180800 | 353 468 471 FS | 1180800 | 2025-11-09T09:00:00.0 | 2025-11-09T09:00:00.0 2025-11-10T09:00:00.0 |
| 2025-11-10T09:00:00.0 | ed | 685.85 | 685.85 | 685.85 | SALIDAS ELECTRICAS DE TOMA CORRIENTES | 1.6.1.1.2.2 | AS_SOON_AS_POSSIBLE |  | 500 | 28800 | 28800 | 2025-11-10T09:00:00.0 | 2025-11-11T09:00:00.0 | 2025-12-30T09:00:00.0 | 2025-12-31T09:00:00.0 | 2 días | 472 | True | 2025-09-16T11:37:00.0 | 1.6.1.1.2.2 | FIXED_DURATION | PRORATED | True | True | ce6de370-1b93-f011-adcc-c0bfbe9ea20f | True | PRORATED | 28800 | 2025-11-11T09:00:00.0 | 2025-11-10T09:00:00.0 | True | 2025-11-11T09:00:00.0 | True | 685.85 | 472 | True | 6 | 469 |  | 05.01.02.02 | 1440000 |  | 1440000 | 1440000 |  | 1440000 |  |  |
| 2025-11-10T09:00:00.0 | ed | 287.05 | 287.05 | 287.05 | SALIDAS PARA TOMACORRIENTE, DOBLE TOMA UNIVERSAL Y PUESTA A TIERRA | 1.6.1.1.2.2.1 | AS_SOON_AS_POSSIBLE |  | 500 | 28800 | 28800 | 2025-11-10T09:00:00.0 | 2025-11-11T09:00:00.0 | 2025-12-21T09:00:00.0 | 2025-12-22T09:00:00.0 | 2 días | 473 |  | 2025-09-16T11:37:00.0 | 1.6.1.1.2.2.1 |  | PRORATED | True | True | d06de370-1b93-f011-adcc-c0bfbe9ea20f | True | PRORATED | 28800 | 2025-11-11T09:00:00.0 | 2025-11-10T09:00:00.0 | True | 2025-11-11T09:00:00.0 | True | 287.05 | 473 |  | 7 | 472 | 355 473 474 SS | 05.01.02.02.01 | 1180800 | 287.05 |  | 1180800 | 354 471 473 FS | 1180800 | 2025-11-10T09:00:00.0 | 2025-11-10T09:00:00.0 2025-11-11T09:00:00.0 |
| 2025-11-10T09:00:00.0 | ed | 159.52 | 159.52 | 159.52 | SALIDAS PARA TOMACORRIENTE DE AIRE ACONDICIONADO | 1.6.1.1.2.2.2 | AS_SOON_AS_POSSIBLE |  | 500 | 28800 | 28800 | 2025-11-10T09:00:00.0 | 2025-11-11T09:00:00.0 | 2025-12-21T09:00:00.0 | 2025-12-22T09:00:00.0 | 2 días | 474 |  | 2025-09-16T11:37:00.0 | 1.6.1.1.2.2.2 |  | PRORATED | True | True | d26de370-1b93-f011-adcc-c0bfbe9ea20f | True | PRORATED | 28800 | 2025-11-11T09:00:00.0 | 2025-11-10T09:00:00.0 | True | 2025-11-11T09:00:00.0 | True | 159.52 | 474 |  | 7 | 472 | 356 474 475 SS | 05.01.02.02.02 | 1180800 | 159.52 |  | 1180800 | 355 473 474 SS | 1180800 | 2025-11-10T09:00:00.0 | 2025-11-10T09:00:00.0 2025-11-11T09:00:00.0 |
| 2025-11-10T09:00:00.0 | ed | 239.28 | 239.28 | 239.28 | SALIDAS PARA TOMACORRIENTE TRIFASICO INDUSTRIAL CON PUESTA A TIERRA | 1.6.1.1.2.2.3 | AS_SOON_AS_POSSIBLE |  | 500 | 28800 | 28800 | 2025-11-10T09:00:00.0 | 2025-11-11T09:00:00.0 | 2025-12-21T09:00:00.0 | 2025-12-22T09:00:00.0 | 2 días | 475 |  | 2025-09-16T11:37:00.0 | 1.6.1.1.2.2.3 |  | PRORATED | True | True | d46de370-1b93-f011-adcc-c0bfbe9ea20f | True | PRORATED | 28800 | 2025-11-11T09:00:00.0 | 2025-11-10T09:00:00.0 | True | 2025-11-11T09:00:00.0 | True | 239.28 | 475 |  | 7 | 472 | 357 475 477 144000 FS | 05.01.02.02.03 | 1180800 | 239.28 |  | 1180800 | 356 474 475 SS | 1180800 | 2025-11-10T09:00:00.0 | 2025-11-10T09:00:00.0 2025-11-11T09:00:00.0 |
| 2025-11-16T09:00:00.0 | ed | 356.0 | 356.0 | 356.0 | SALIDAS ELECTRICAS PARA INTERRUPTOR | 1.6.1.1.2.3 | AS_SOON_AS_POSSIBLE |  | 500 | 28800 | 28800 | 2025-11-16T09:00:00.0 | 2025-11-17T09:00:00.0 | 2026-01-05T09:00:00.0 | 2026-01-06T09:00:00.0 | 2 días | 476 | True | 2025-09-16T11:37:00.0 | 1.6.1.1.2.3 | FIXED_DURATION | PRORATED | True | True | d66de370-1b93-f011-adcc-c0bfbe9ea20f | True | PRORATED | 28800 | 2025-11-17T09:00:00.0 | 2025-11-16T09:00:00.0 | True | 2025-11-17T09:00:00.0 | True | 356.0 | 476 | True | 6 | 469 |  | 05.01.02.03 | 1440000 |  | 1440000 | 1440000 |  | 1440000 |  |  |
| 2025-11-16T09:00:00.0 | ed | 174.4 | 174.4 | 174.4 | SALIDA ELECTRICA PARA INTERRUPTOR SIMPLE | 1.6.1.1.2.3.1 | AS_SOON_AS_POSSIBLE |  | 500 | 28800 | 28800 | 2025-11-16T09:00:00.0 | 2025-11-17T09:00:00.0 | 2025-12-27T09:00:00.0 | 2025-12-28T09:00:00.0 | 2 días | 477 |  | 2025-09-16T11:37:00.0 | 1.6.1.1.2.3.1 |  | PRORATED | True | True | d86de370-1b93-f011-adcc-c0bfbe9ea20f | True | PRORATED | 28800 | 2025-11-17T09:00:00.0 | 2025-11-16T09:00:00.0 | True | 2025-11-17T09:00:00.0 | True | 174.4 | 477 |  | 7 | 476 | 358 477 478 SS | 05.01.02.03.01 | 1180800 | 174.4 |  | 1180800 | 357 475 477 144000 FS | 1180800 | 2025-11-16T09:00:00.0 | 2025-11-16T09:00:00.0 2025-11-17T09:00:00.0 |
| 2025-11-16T09:00:00.0 | ed | 181.6 | 181.6 | 181.6 | SALIDA ELECTRICA PARA INTERRUPTOR DOBLE | 1.6.1.1.2.3.2 | AS_SOON_AS_POSSIBLE |  | 500 | 28800 | 28800 | 2025-11-16T09:00:00.0 | 2025-11-17T09:00:00.0 | 2025-12-27T09:00:00.0 | 2025-12-28T09:00:00.0 | 2 días | 478 |  | 2025-09-16T11:37:00.0 | 1.6.1.1.2.3.2 |  | PRORATED | True | True | da6de370-1b93-f011-adcc-c0bfbe9ea20f | True | PRORATED | 28800 | 2025-11-17T09:00:00.0 | 2025-11-16T09:00:00.0 | True | 2025-11-17T09:00:00.0 | True | 181.6 | 478 |  | 7 | 476 | 359 478 480 SS | 05.01.02.03.02 | 1180800 | 181.6 |  | 1180800 | 358 477 478 SS | 1180800 | 2025-11-16T09:00:00.0 | 2025-11-16T09:00:00.0 2025-11-17T09:00:00.0 |
| 2025-11-16T09:00:00.0 | ed | 199.72 | 199.72 | 199.72 | SALIDAS PARA FUERZAS | 1.6.1.1.2.4 | AS_SOON_AS_POSSIBLE |  | 500 | 28800 | 28800 | 2025-11-16T09:00:00.0 | 2025-11-17T09:00:00.0 | 2026-01-05T09:00:00.0 | 2026-01-06T09:00:00.0 | 2 días | 479 | True | 2025-09-16T11:37:00.0 | 1.6.1.1.2.4 | FIXED_DURATION | PRORATED | True | True | dc6de370-1b93-f011-adcc-c0bfbe9ea20f | True | PRORATED | 28800 | 2025-11-17T09:00:00.0 | 2025-11-16T09:00:00.0 | True | 2025-11-17T09:00:00.0 | True | 199.72 | 479 | True | 6 | 469 |  | 05.01.02.04 | 1440000 |  | 1440000 | 1440000 |  | 1440000 |  |  |
| 2025-11-16T09:00:00.0 | ed | 99.86 | 99.86 | 99.86 | SALIDA DE FUERZA PARA ELECTROBOMBA 2HP | 1.6.1.1.2.4.1 | AS_SOON_AS_POSSIBLE |  | 500 | 28800 | 28800 | 2025-11-16T09:00:00.0 | 2025-11-17T09:00:00.0 | 2025-12-27T09:00:00.0 | 2025-12-28T09:00:00.0 | 2 días | 480 |  | 2025-09-16T11:37:00.0 | 1.6.1.1.2.4.1 |  | PRORATED | True | True | de6de370-1b93-f011-adcc-c0bfbe9ea20f | True | PRORATED | 28800 | 2025-11-17T09:00:00.0 | 2025-11-16T09:00:00.0 | True | 2025-11-17T09:00:00.0 | True | 99.86 | 480 |  | 7 | 479 | 360 480 481 SS | 05.01.02.04.01 | 1180800 | 99.86 |  | 1180800 | 359 478 480 SS | 1180800 | 2025-11-16T09:00:00.0 | 2025-11-16T09:00:00.0 2025-11-17T09:00:00.0 |
| 2025-11-16T09:00:00.0 | ed | 99.86 | 99.86 | 99.86 | SALIDA DE FUERZA UNIDA DE CONDENSACION MULTISPLIT 12000 BTUh | 1.6.1.1.2.4.2 | AS_SOON_AS_POSSIBLE |  | 500 | 28800 | 28800 | 2025-11-16T09:00:00.0 | 2025-11-17T09:00:00.0 | 2025-12-27T09:00:00.0 | 2025-12-28T09:00:00.0 | 2 días | 481 |  | 2025-09-16T11:37:00.0 | 1.6.1.1.2.4.2 |  | PRORATED | True | True | e06de370-1b93-f011-adcc-c0bfbe9ea20f | True | PRORATED | 28800 | 2025-11-17T09:00:00.0 | 2025-11-16T09:00:00.0 | True | 2025-11-17T09:00:00.0 | True | 99.86 | 481 |  | 7 | 479 | 361 481 483 FS | 05.01.02.04.02 | 1180800 | 99.86 |  | 1180800 | 360 480 481 SS | 1180800 | 2025-11-16T09:00:00.0 | 2025-11-16T09:00:00.0 2025-11-17T09:00:00.0 |
| 2025-11-17T09:00:00.0 | ed | 626.46 | 626.46 | 626.46 | SALIDAS PARA COMUNICACIONES | 1.6.1.1.3 | AS_SOON_AS_POSSIBLE |  | 500 | 28800 | 28800 | 2025-11-17T09:00:00.0 | 2025-11-18T09:00:00.0 | 2026-01-06T09:00:00.0 | 2026-01-07T09:00:00.0 | 2 días | 482 | True | 2025-09-16T11:37:00.0 | 1.6.1.1.3 | FIXED_DURATION | PRORATED | True | True | e26de370-1b93-f011-adcc-c0bfbe9ea20f | True | PRORATED | 28800 | 2025-11-18T09:00:00.0 | 2025-11-17T09:00:00.0 | True | 2025-11-18T09:00:00.0 | True | 626.46 | 482 | True | 5 | 464 |  | 05.01.03 | 1440000 |  | 1440000 | 1440000 |  | 1440000 |  |  |
| 2025-11-17T09:00:00.0 | ed | 91.16 | 91.16 | 91.16 | SALIDA DE CONECTOR SIMPLE RJ45 CAT 6A | 1.6.1.1.3.1 | AS_SOON_AS_POSSIBLE |  | 500 | 28800 | 28800 | 2025-11-17T09:00:00.0 | 2025-11-18T09:00:00.0 | 2025-12-28T09:00:00.0 | 2025-12-29T09:00:00.0 | 2 días | 483 |  | 2025-09-16T11:37:00.0 | 1.6.1.1.3.1 |  | PRORATED | True | True | e46de370-1b93-f011-adcc-c0bfbe9ea20f | True | PRORATED | 28800 | 2025-11-18T09:00:00.0 | 2025-11-17T09:00:00.0 | True | 2025-11-18T09:00:00.0 | True | 91.16 | 483 |  | 6 | 482 | 362 483 484 SS | 05.01.03.01 | 1180800 | 91.16 |  | 1180800 | 361 481 483 FS | 1180800 | 2025-11-17T09:00:00.0 | 2025-11-17T09:00:00.0 2025-11-18T09:00:00.0 |
| 2025-11-17T09:00:00.0 | ed | 53.53 | 53.53 | 53.53 | SALIDA PARA ROUTER / ACCESS POINT | 1.6.1.1.3.2 | AS_SOON_AS_POSSIBLE |  | 500 | 28800 | 28800 | 2025-11-17T09:00:00.0 | 2025-11-18T09:00:00.0 | 2025-12-28T09:00:00.0 | 2025-12-29T09:00:00.0 | 2 días | 484 |  | 2025-09-16T11:37:00.0 | 1.6.1.1.3.2 |  | PRORATED | True | True | e66de370-1b93-f011-adcc-c0bfbe9ea20f | True | PRORATED | 28800 | 2025-11-18T09:00:00.0 | 2025-11-17T09:00:00.0 | True | 2025-11-18T09:00:00.0 | True | 53.53 | 484 |  | 6 | 482 | 363 484 485 SS | 05.01.03.02 | 1180800 | 53.53 |  | 1180800 | 362 483 484 SS | 1180800 | 2025-11-17T09:00:00.0 | 2025-11-17T09:00:00.0 2025-11-18T09:00:00.0 |
| 2025-11-17T09:00:00.0 | ed | 53.53 | 53.53 | 53.53 | SALIDA PARA TELEVISION | 1.6.1.1.3.3 | AS_SOON_AS_POSSIBLE |  | 500 | 28800 | 28800 | 2025-11-17T09:00:00.0 | 2025-11-18T09:00:00.0 | 2025-12-28T09:00:00.0 | 2025-12-29T09:00:00.0 | 2 días | 485 |  | 2025-09-16T11:37:00.0 | 1.6.1.1.3.3 |  | PRORATED | True | True | e86de370-1b93-f011-adcc-c0bfbe9ea20f | True | PRORATED | 28800 | 2025-11-18T09:00:00.0 | 2025-11-17T09:00:00.0 | True | 2025-11-18T09:00:00.0 | True | 53.53 | 485 |  | 6 | 482 | 364 485 486 SS | 05.01.03.03 | 1180800 | 53.53 |  | 1180800 | 363 484 485 SS | 1180800 | 2025-11-17T09:00:00.0 | 2025-11-17T09:00:00.0 2025-11-18T09:00:00.0 |
| 2025-11-17T09:00:00.0 | ed | 160.59 | 160.59 | 160.59 | SALIDA PARA TELEFONO | 1.6.1.1.3.4 | AS_SOON_AS_POSSIBLE |  | 500 | 28800 | 28800 | 2025-11-17T09:00:00.0 | 2025-11-18T09:00:00.0 | 2025-12-28T09:00:00.0 | 2025-12-29T09:00:00.0 | 2 días | 486 |  | 2025-09-16T11:37:00.0 | 1.6.1.1.3.4 |  | PRORATED | True | True | ea6de370-1b93-f011-adcc-c0bfbe9ea20f | True | PRORATED | 28800 | 2025-11-18T09:00:00.0 | 2025-11-17T09:00:00.0 | True | 2025-11-18T09:00:00.0 | True | 160.59 | 486 |  | 6 | 482 | 365 486 487 SS | 05.01.03.04 | 1180800 | 160.59 |  | 1180800 | 364 485 486 SS | 1180800 | 2025-11-17T09:00:00.0 | 2025-11-17T09:00:00.0 2025-11-18T09:00:00.0 |
| 2025-11-17T09:00:00.0 | ed | 214.12 | 214.12 | 214.12 | SALIDA PARA SENSOR DE DETECCION DE HUMO | 1.6.1.1.3.5 | AS_SOON_AS_POSSIBLE |  | 500 | 28800 | 28800 | 2025-11-17T09:00:00.0 | 2025-11-18T09:00:00.0 | 2025-12-28T09:00:00.0 | 2025-12-29T09:00:00.0 | 2 días | 487 |  | 2025-09-16T11:37:00.0 | 1.6.1.1.3.5 |  | PRORATED | True | True | ec6de370-1b93-f011-adcc-c0bfbe9ea20f | True | PRORATED | 28800 | 2025-11-18T09:00:00.0 | 2025-11-17T09:00:00.0 | True | 2025-11-18T09:00:00.0 | True | 214.12 | 487 |  | 6 | 482 | 366 487 488 SS | 05.01.03.05 | 1180800 | 214.12 |  | 1180800 | 365 486 487 SS | 1180800 | 2025-11-17T09:00:00.0 | 2025-11-17T09:00:00.0 2025-11-18T09:00:00.0 |
| 2025-11-17T09:00:00.0 | ed | 53.53 | 53.53 | 53.53 | SALIDA PARA SISTEMA DE ALARMA SONORA | 1.6.1.1.3.6 | AS_SOON_AS_POSSIBLE |  | 500 | 28800 | 28800 | 2025-11-17T09:00:00.0 | 2025-11-18T09:00:00.0 | 2025-12-28T09:00:00.0 | 2025-12-29T09:00:00.0 | 2 días | 488 |  | 2025-09-16T11:37:00.0 | 1.6.1.1.3.6 |  | PRORATED | True | True | ee6de370-1b93-f011-adcc-c0bfbe9ea20f | True | PRORATED | 28800 | 2025-11-18T09:00:00.0 | 2025-11-17T09:00:00.0 | True | 2025-11-18T09:00:00.0 | True | 53.53 | 488 |  | 6 | 482 | 367 488 491 259200 FS | 05.01.03.06 | 1180800 | 53.53 |  | 1180800 | 366 487 488 SS | 1180800 | 2025-11-17T09:00:00.0 | 2025-11-17T09:00:00.0 2025-11-18T09:00:00.0 |
| 2025-11-10T09:00:00.0 | ed | 2157.66 | 2157.66 | 2157.66 | CANALIZACIONES, CONDUCTOS Y TUBERIAS | 1.6.1.1.4 | AS_SOON_AS_POSSIBLE |  | 500 | 576000 | 576000 | 2025-11-10T09:00:00.0 | 2025-11-30T09:00:00.0 | 2026-01-16T09:00:00.0 | 2026-01-28T09:00:00.0 | 21 días | 489 | True | 2025-09-16T11:37:00.0 | 1.6.1.1.4 | FIXED_DURATION | PRORATED | True | True | f06de370-1b93-f011-adcc-c0bfbe9ea20f | True | PRORATED | 576000 | 2025-11-30T09:00:00.0 | 2025-11-10T09:00:00.0 | True | 2025-11-30T09:00:00.0 | True | 2157.66 | 489 | True | 5 | 464 |  | 05.01.04 | 1699200 |  | 1699200 | 1699200 |  | 1929600 |  |  |

| start | leveling_delay_units | cost | cost_variance | remaining_cost | name | wbs | constraint_type | critical | priority | duration | remaining_duration | early_start | early_finish | late_start | late_finish | text2 | unique_id | summary | created | outline_number | type | fixed_cost_accrual | leveling_can_split | level_assignments | guid | active | baseline_fixed_cost_accrual | scheduled_duration | scheduled_finish | scheduled_start | recalc_outline_codes | finish | auto_compute_actuals | remaining_regular_cost | id | rollup | outline_level | parent_task_unique_id | milestone | successors | text1 | finish_slack | fixed_cost | free_slack | total_slack | predecessors | start_slack | summary_progress | work_splits |
| --- | --- | --- | --- | --- | --- | --- | --- | --- | --- | --- | --- | --- | --- | --- | --- | --- | --- | --- | --- | --- | --- | --- | --- | --- | --- | --- | --- | --- | --- | --- | --- | --- | --- | --- | --- | --- | --- | --- | --- | --- | --- | --- | --- | --- | --- | --- | --- | --- | --- |
| 2025-11-10T09:00:00.0 | ed | 2157.66 | 2157.66 | 2157.66 | CANALIZADORES DE TUBERIA DE PVC | 1.6.1.1.4.1 | AS_SOON_AS_POSSIBLE |  | 500 | 576000 | 576000 | 2025-11-10T09:00:00.0 | 2025-11-30T09:00:00.0 | 2026-01-16T09:00:00.0 | 2026-01-28T09:00:00.0 | 21 días | 490 | True | 2025-09-16T11:37:00.0 | 1.6.1.1.4.1 | FIXED_DURATION | PRORATED | True | True | f26de370-1b93-f011-adcc-c0bfbe9ea20f | True | PRORATED | 576000 | 2025-11-30T09:00:00.0 | 2025-11-10T09:00:00.0 | True | 2025-11-30T09:00:00.0 | True | 2157.66 | 490 | True | 6 | 489 |  |  | 05.01.04.01 | 1699200 |  | 1699200 | 1699200 |  | 1929600 |  |  |
| 2025-11-27T09:00:00.0 | ed | 1021.0 | 1021.0 | 1021.0 | CANALIZADOR DE TUBERIA PVC-SELL DE 20mm EN INSTALACIONES Y COMUNICACIONES | 1.6.1.1.4.1.1 | AS_SOON_AS_POSSIBLE |  | 500 | 57600 | 57600 | 2025-11-27T09:00:00.0 | 2025-11-29T09:00:00.0 | 2026-01-07T09:00:00.0 | 2026-01-09T09:00:00.0 | 3 días | 491 |  | 2025-09-16T11:37:00.0 | 1.6.1.1.4.1.1 |  | PRORATED | True | True | f46de370-1b93-f011-adcc-c0bfbe9ea20f | True | PRORATED | 57600 | 2025-11-29T09:00:00.0 | 2025-11-27T09:00:00.0 | True | 2025-11-29T09:00:00.0 | True | 1021.0 | 491 |  | 7 | 490 |  | 468 491 493 FS | 05.01.04.01.01 | 1180800 | 1021.0 |  | 1180800 | 367 488 491 259200 FS | 1180800 | 2025-11-27T09:00:00.0 | 2025-11-27T09:00:00.0 2025-11-29T09:00:00.0 |
| 2025-11-10T09:00:00.0 | ed | 751.16 | 751.16 | 751.16 | CANALIZADOR DE TUBERIA PVC-SELL DE 25mm EN TOMACORRIENTES EMPOTRADAS EN EL PISO | 1.6.1.1.4.1.2 | AS_SOON_AS_POSSIBLE |  | 500 | 28800 | 28800 | 2025-11-10T09:00:00.0 | 2025-11-11T09:00:00.0 | 2026-01-27T09:00:00.0 | 2026-01-28T09:00:00.0 | 2 días | 492 |  | 2025-09-16T11:37:00.0 | 1.6.1.1.4.1.2 |  | PRORATED | True | True | f66de370-1b93-f011-adcc-c0bfbe9ea20f | True | PRORATED | 28800 | 2025-11-11T09:00:00.0 | 2025-11-10T09:00:00.0 | True | 2025-11-11T09:00:00.0 | True | 751.16 | 492 |  | 7 | 490 |  |  | 05.01.04.01.02 | 2246400 | 751.16 | 2246400 | 2246400 | 467 70 492 FS | 2246400 | 2025-11-10T09:00:00.0 | 2025-11-10T09:00:00.0 2025-11-11T09:00:00.0 |
| 2025-11-29T09:00:00.0 | ed | 385.5 | 385.5 | 385.5 | CANALIZADOR DE TUBERIA PVC-SELL DE 35mm EN INSTALACIONES Y COMUNICACIONES | 1.6.1.1.4.1.3 | AS_SOON_AS_POSSIBLE |  | 500 | 28800 | 28800 | 2025-11-29T09:00:00.0 | 2025-11-30T09:00:00.0 | 2026-01-18T09:00:00.0 | 2026-01-19T09:00:00.0 | 2 días | 493 |  | 2025-09-16T11:37:00.0 | 1.6.1.1.4.1.3 |  | PRORATED | True | True | f86de370-1b93-f011-adcc-c0bfbe9ea20f | True | PRORATED | 28800 | 2025-11-30T09:00:00.0 | 2025-11-29T09:00:00.0 | True | 2025-11-30T09:00:00.0 | True | 385.5 | 493 |  | 7 | 490 |  | 370 493 495 FS | 05.01.04.01.03 | 1440000 | 385.5 |  | 1440000 | 468 491 493 FS | 1440000 | 2025-11-29T09:00:00.0 | 2025-11-29T09:00:00.0 2025-11-30T09:00:00.0 |
| 2025-11-30T09:00:00.0 | ed | 6139.09 | 6139.09 | 6139.09 | CONDUCTORES Y CABLES DE ENERGIA | 1.6.1.1.5 | AS_SOON_AS_POSSIBLE |  | 500 | 230400 | 230400 | 2025-11-30T09:00:00.0 | 2025-12-08T09:00:00.0 | 2026-01-19T09:00:00.0 | 2026-01-27T09:00:00.0 | 9 días | 494 | True | 2025-09-16T11:37:00.0 | 1.6.1.1.5 | FIXED_DURATION | PRORATED | True | True | fa6de370-1b93-f011-adcc-c0bfbe9ea20f | True | PRORATED | 230400 | 2025-12-08T09:00:00.0 | 2025-11-30T09:00:00.0 | True | 2025-12-08T09:00:00.0 | True | 6139.09 | 494 | True | 5 | 464 |  |  | 05.01.05 | 1440000 |  | 1440000 | 1440000 |  | 1440000 |  |  |
| 2025-11-30T09:00:00.0 | ed | 980.69 | 980.69 | 980.69 | SUM. E INST. DE CONDUCTOR ELECTRICO DE 2x2.5mm2 TW + 1x2.5mm2 TW (C-01) | 1.6.1.1.5.1 | AS_SOON_AS_POSSIBLE |  | 500 | 86400 | 86400 | 2025-11-30T09:00:00.0 | 2025-12-03T09:00:00.0 | 2026-01-19T09:00:00.0 | 2026-01-22T09:00:00.0 | 4 días | 495 |  | 2025-09-16T11:37:00.0 | 1.6.1.1.5.1 |  | PRORATED | True | True | fc6de370-1b93-f011-adcc-c0bfbe9ea20f | True | PRORATED | 86400 | 2025-12-03T09:00:00.0 | 2025-11-30T09:00:00.0 | True | 2025-12-03T09:00:00.0 | True | 980.69 | 495 |  | 6 | 494 |  | 371 495 496 SS | 05.01.05.01 | 1440000 | 980.69 |  | 1440000 | 370 493 495 FS | 1440000 | 2025-11-30T09:00:00.0 | 2025-11-30T09:00:00.0 2025-12-03T09:00:00.0 |
| 2025-11-30T09:00:00.0 | ed | 888.13 | 888.13 | 888.13 | SUM. E INST. DE CONDUCTOR ELECTRICO DE 2x2.5mm2 TW + 1x2.5mm2 TW (C-02) | 1.6.1.1.5.2 | AS_SOON_AS_POSSIBLE |  | 500 | 57600 | 57600 | 2025-11-30T09:00:00.0 | 2025-12-02T09:00:00.0 | 2026-01-19T09:00:00.0 | 2026-01-21T09:00:00.0 | 3 días | 496 |  | 2025-09-16T11:37:00.0 | 1.6.1.1.5.2 |  | PRORATED | True | True | fe6de370-1b93-f011-adcc-c0bfbe9ea20f | True | PRORATED | 57600 | 2025-12-02T09:00:00.0 | 2025-11-30T09:00:00.0 | True | 2025-12-02T09:00:00.0 | True | 888.13 | 496 |  | 6 | 494 |  | 372 496 497 SS | 05.01.05.02 | 1440000 | 888.13 |  | 1440000 | 371 495 496 SS | 1440000 | 2025-11-30T09:00:00.0 | 2025-11-30T09:00:00.0 2025-12-02T09:00:00.0 |
| 2025-11-30T09:00:00.0 | ed | 810.26 | 810.26 | 810.26 | SUM. E INST. DE CONDUCTOR ELECTRICO DE 2x4mm2 TW + 1x4mm2 TW (C-03) | 1.6.1.1.5.3 | AS_SOON_AS_POSSIBLE |  | 500 | 57600 | 57600 | 2025-11-30T09:00:00.0 | 2025-12-02T09:00:00.0 | 2026-01-19T09:00:00.0 | 2026-01-21T09:00:00.0 | 3 días | 497 |  | 2025-09-16T11:37:00.0 | 1.6.1.1.5.3 |  | PRORATED | True | True | 006ee370-1b93-f011-adcc-c0bfbe9ea20f | True | PRORATED | 57600 | 2025-12-02T09:00:00.0 | 2025-11-30T09:00:00.0 | True | 2025-12-02T09:00:00.0 | True | 810.26 | 497 |  | 6 | 494 |  | 373 497 498 FS | 05.01.05.03 | 1440000 | 810.26 |  | 1440000 | 372 496 497 SS | 1440000 | 2025-11-30T09:00:00.0 | 2025-11-30T09:00:00.0 2025-12-02T09:00:00.0 |
| 2025-12-02T09:00:00.0 | ed | 477.95 | 477.95 | 477.95 | SUM. E INST. DE CONDUCTOR ELECTRICO DE 3x6mm2 N2XOH + 1x6mm2 N2XOH (C-04) | 1.6.1.1.5.4 | AS_SOON_AS_POSSIBLE |  | 500 | 28800 | 28800 | 2025-12-02T09:00:00.0 | 2025-12-03T09:00:00.0 | 2026-01-21T09:00:00.0 | 2026-01-22T09:00:00.0 | 2 días | 498 |  | 2025-09-16T11:37:00.0 | 1.6.1.1.5.4 |  | PRORATED | True | True | 026ee370-1b93-f011-adcc-c0bfbe9ea20f | True | PRORATED | 28800 | 2025-12-03T09:00:00.0 | 2025-12-02T09:00:00.0 | True | 2025-12-03T09:00:00.0 | True | 477.95 | 498 |  | 6 | 494 |  | 374 498 499 FS | 05.01.05.04 | 1440000 | 477.95 |  | 1440000 | 373 497 498 FS | 1440000 | 2025-12-02T09:00:00.0 | 2025-12-02T09:00:00.0 2025-12-03T09:00:00.0 |
| 2025-12-03T09:00:00.0 | ed | 288.73 | 288.73 | 288.73 | SUM. E INST. DE CONDUCTOR ELECTRICO DE 3x4mm2 N2XOH+ 1x4mm2 N2XOH (C-05) | 1.6.1.1.5.5 | AS_SOON_AS_POSSIBLE |  | 500 | 28800 | 28800 | 2025-12-03T09:00:00.0 | 2025-12-04T09:00:00.0 | 2026-01-22T09:00:00.0 | 2026-01-23T09:00:00.0 | 2 días | 499 |  | 2025-09-16T11:37:00.0 | 1.6.1.1.5.5 |  | PRORATED | True | True | 046ee370-1b93-f011-adcc-c0bfbe9ea20f | True | PRORATED | 28800 | 2025-12-04T09:00:00.0 | 2025-12-03T09:00:00.0 | True | 2025-12-04T09:00:00.0 | True | 288.73 | 499 |  | 6 | 494 |  | 375 499 500 FS | 05.01.05.05 | 1440000 | 288.73 |  | 1440000 | 374 498 499 FS | 1440000 | 2025-12-03T09:00:00.0 | 2025-12-03T09:00:00.0 2025-12-04T09:00:00.0 |
| 2025-12-04T09:00:00.0 | ed | 668.74 | 668.74 | 668.74 | SUM. E INST. DE CONDUCTOR ELECTRICO DE 3x4mm2 N2XOH + 1x4mm2 N2XOH (C-06) | 1.6.1.1.5.6 | AS_SOON_AS_POSSIBLE |  | 500 | 28800 | 28800 | 2025-12-04T09:00:00.0 | 2025-12-05T09:00:00.0 | 2026-01-23T09:00:00.0 | 2026-01-24T09:00:00.0 | 2 días | 500 |  | 2025-09-16T11:37:00.0 | 1.6.1.1.5.6 |  | PRORATED | True | True | 066ee370-1b93-f011-adcc-c0bfbe9ea20f | True | PRORATED | 28800 | 2025-12-05T09:00:00.0 | 2025-12-04T09:00:00.0 | True | 2025-12-05T09:00:00.0 | True | 668.74 | 500 |  | 6 | 494 |  | 376 500 501 FS | 05.01.05.06 | 1440000 | 668.74 |  | 1440000 | 375 499 500 FS | 1440000 | 2025-12-04T09:00:00.0 | 2025-12-04T09:00:00.0 2025-12-05T09:00:00.0 |
| 2025-12-05T09:00:00.0 | ed | 741.12 | 741.12 | 741.12 | SUM. E INST. DE CONDUCTOR ELECTRICO DE 3x4mm2 N2XOH + 1x4mm2 N2XOH (C-07) | 1.6.1.1.5.7 | AS_SOON_AS_POSSIBLE |  | 500 | 57600 | 57600 | 2025-12-05T09:00:00.0 | 2025-12-07T09:00:00.0 | 2026-01-24T09:00:00.0 | 2026-01-26T09:00:00.0 | 3 días | 501 |  | 2025-09-16T11:37:00.0 | 1.6.1.1.5.7 |  | PRORATED | True | True | 086ee370-1b93-f011-adcc-c0bfbe9ea20f | True | PRORATED | 57600 | 2025-12-07T09:00:00.0 | 2025-12-05T09:00:00.0 | True | 2025-12-07T09:00:00.0 | True | 741.12 | 501 |  | 6 | 494 |  | 377 501 502 SS | 05.01.05.07 | 1440000 | 741.12 |  | 1440000 | 376 500 501 FS | 1440000 | 2025-12-05T09:00:00.0 | 2025-12-05T09:00:00.0 2025-12-07T09:00:00.0 |
| 2025-12-05T09:00:00.0 | ed | 364.24 | 364.24 | 364.24 | SUM. E INST. DE CONDUCTOR ELECTRICO DE 3x6mm2 N2XOH + 1x6mm2 N2XOH (C-08) | 1.6.1.1.5.8 | AS_SOON_AS_POSSIBLE |  | 500 | 28800 | 28800 | 2025-12-05T09:00:00.0 | 2025-12-06T09:00:00.0 | 2026-01-24T09:00:00.0 | 2026-01-25T09:00:00.0 | 2 días | 502 |  | 2025-09-16T11:37:00.0 | 1.6.1.1.5.8 |  | PRORATED | True | True | 0a6ee370-1b93-f011-adcc-c0bfbe9ea20f | True | PRORATED | 28800 | 2025-12-06T09:00:00.0 | 2025-12-05T09:00:00.0 | True | 2025-12-06T09:00:00.0 | True | 364.24 | 502 |  | 6 | 494 |  | 378 502 503 FS | 05.01.05.08 | 1440000 | 364.24 |  | 1440000 | 377 501 502 SS | 1440000 | 2025-12-05T09:00:00.0 | 2025-12-05T09:00:00.0 2025-12-06T09:00:00.0 |
| 2025-12-06T09:00:00.0 | ed | 919.23 | 919.23 | 919.23 | SUM. E INST. DE CONDUCTOR ELECTRICO DE 3x4mm2 N2XOH + 1x4mm2 N2XOH (C-09) | 1.6.1.1.5.9 | AS_SOON_AS_POSSIBLE |  | 500 | 57600 | 57600 | 2025-12-06T09:00:00.0 | 2025-12-08T09:00:00.0 | 2026-01-25T09:00:00.0 | 2026-01-27T09:00:00.0 | 3 días | 503 |  | 2025-09-16T11:37:00.0 | 1.6.1.1.5.9 |  | PRORATED | True | True | 0c6ee370-1b93-f011-adcc-c0bfbe9ea20f | True | PRORATED | 57600 | 2025-12-08T09:00:00.0 | 2025-12-06T09:00:00.0 | True | 2025-12-08T09:00:00.0 | True | 919.23 | 503 |  | 6 | 494 |  | 471 503 521 FS | 05.01.05.09 | 1440000 | 919.23 |  | 1440000 | 378 502 503 FS | 1440000 | 2025-12-06T09:00:00.0 | 2025-12-06T09:00:00.0 2025-12-08T09:00:00.0 |
| 2026-01-19T09:00:00.0 | ed | 3751.3 | 3751.3 | 3751.3 | SUM. E INST. DE EQUIPOS Y PLACAS DE TOMA CORRIENTRE | 1.6.1.1.6 | AS_SOON_AS_POSSIBLE | True | 500 | 259200 | 259200 | 2026-01-19T09:00:00.0 | 2026-01-28T09:00:00.0 | 2026-01-19T09:00:00.0 | 2026-01-28T09:00:00.0 | 10 días | 504 | True | 2025-09-16T11:37:00.0 | 1.6.1.1.6 | FIXED_DURATION | PRORATED | True | True | 0e6ee370-1b93-f011-adcc-c0bfbe9ea20f | True | PRORATED | 259200 | 2026-01-28T09:00:00.0 | 2026-01-19T09:00:00.0 | True | 2026-01-28T09:00:00.0 | True | 3751.3 | 504 | True | 5 | 464 |  |  | 05.01.06 |  |  |  |  |  |  |  |  |
| 2026-01-23T09:00:00.0 | ed | 2237.86 | 2237.86 | 2237.86 | SUM E INST. DE EQUIPOS DE ALUMBRADO | 1.6.1.1.6.1 | AS_SOON_AS_POSSIBLE | True | 500 | 144000 | 144000 | 2026-01-23T09:00:00.0 | 2026-01-28T09:00:00.0 | 2026-01-23T09:00:00.0 | 2026-01-28T09:00:00.0 | 6 días | 505 | True | 2025-09-16T11:37:00.0 | 1.6.1.1.6.1 | FIXED_DURATION | PRORATED | True | True | 106ee370-1b93-f011-adcc-c0bfbe9ea20f | True | PRORATED | 144000 | 2026-01-28T09:00:00.0 | 2026-01-23T09:00:00.0 | True | 2026-01-28T09:00:00.0 | True | 2237.86 | 505 | True | 6 | 504 |  |  | 05.01.06.01 |  |  |  |  |  |  |  |  |
| 2026-01-23T09:00:00.0 | ed | 1794.96 | 1794.96 | 1794.96 | ALUMBRADO DE 18W TIPO LED (DICROICO) | 1.6.1.1.6.1.1 | AS_SOON_AS_POSSIBLE | True | 500 | 115200 | 115200 | 2026-01-23T09:00:00.0 | 2026-01-27T09:00:00.0 | 2026-01-23T09:00:00.0 | 2026-01-27T09:00:00.0 | 5 días | 506 |  | 2025-09-16T11:37:00.0 | 1.6.1.1.6.1.1 |  | PRORATED | True | True | 126ee370-1b93-f011-adcc-c0bfbe9ea20f | True | PRORATED | 115200 | 2026-01-27T09:00:00.0 | 2026-01-23T09:00:00.0 | True | 2026-01-27T09:00:00.0 | True | 1794.96 | 506 |  | 7 | 505 |  | 385 506 507 FS | 05.01.06.01.01 |  | 1794.96 |  |  | 384 514 506 FS |  | 2026-01-23T09:00:00.0 | 2026-01-23T09:00:00.0 2026-01-27T09:00:00.0 |
| 2026-01-27T09:00:00.0 | ed | 442.9 | 442.9 | 442.9 | ALUMBRADO DE BRAQUETE ADOSADO 20W | 1.6.1.1.6.1.2 | AS_SOON_AS_POSSIBLE | True | 500 | 28800 | 28800 | 2026-01-27T09:00:00.0 | 2026-01-28T09:00:00.0 | 2026-01-27T09:00:00.0 | 2026-01-28T09:00:00.0 | 2 días | 507 |  | 2025-09-16T11:37:00.0 | 1.6.1.1.6.1.2 |  | PRORATED | True | True | 146ee370-1b93-f011-adcc-c0bfbe9ea20f | True | PRORATED | 28800 | 2026-01-28T09:00:00.0 | 2026-01-27T09:00:00.0 | True | 2026-01-28T09:00:00.0 | True | 442.9 | 507 |  | 7 | 505 |  |  | 05.01.06.01.02 |  | 442.9 |  |  | 385 506 507 FS |  | 2026-01-27T09:00:00.0 | 2026-01-27T09:00:00.0 2026-01-28T09:00:00.0 |
| 2026-01-19T09:00:00.0 | ed | 1135.68 | 1135.68 | 1135.68 | SUM E INST. DE PLACA DE TOMA CORRIENTE | 1.6.1.1.6.2 | AS_SOON_AS_POSSIBLE | True | 500 | 57600 | 57600 | 2026-01-19T09:00:00.0 | 2026-01-21T09:00:00.0 | 2026-01-19T09:00:00.0 | 2026-01-21T09:00:00.0 | 3 días | 508 | True | 2025-09-16T11:37:00.0 | 1.6.1.1.6.2 | FIXED_DURATION | PRORATED | True | True | 166ee370-1b93-f011-adcc-c0bfbe9ea20f | True | PRORATED | 57600 | 2026-01-21T09:00:00.0 | 2026-01-19T09:00:00.0 | True | 2026-01-21T09:00:00.0 | True | 1135.68 | 508 | True | 6 | 504 |  |  | 05.01.06.02 |  |  |  |  |  |  |  |  |
| 2026-01-19T09:00:00.0 | ed | 166.86 | 166.86 | 166.86 | TOMA CORRIENTE DOBLE | 1.6.1.1.6.2.1 | AS_SOON_AS_POSSIBLE | True | 500 | 28800 | 28800 | 2026-01-19T09:00:00.0 | 2026-01-20T09:00:00.0 | 2026-01-19T09:00:00.0 | 2026-01-20T09:00:00.0 | 2 días | 509 |  | 2025-09-16T11:37:00.0 | 1.6.1.1.6.2.1 |  | PRORATED | True | True | 186ee370-1b93-f011-adcc-c0bfbe9ea20f | True | PRORATED | 28800 | 2026-01-20T09:00:00.0 | 2026-01-19T09:00:00.0 | True | 2026-01-20T09:00:00.0 | True | 166.86 | 509 |  | 7 | 508 |  | 380 509 510 FS | 05.01.06.02.01 |  | 166.86 |  |  | 469 239 509 FS |  | 2026-01-19T09:00:00.0 | 2026-01-19T09:00:00.0 2026-01-20T09:00:00.0 |
| 2026-01-20T09:00:00.0 | ed | 111.24 | 111.24 | 111.24 | TOMA CORRIENTE DOBLE EN PISO | 1.6.1.1.6.2.2 | AS_SOON_AS_POSSIBLE | True | 500 | 28800 | 28800 | 2026-01-20T09:00:00.0 | 2026-01-21T09:00:00.0 | 2026-01-20T09:00:00.0 | 2026-01-21T09:00:00.0 | 2 días | 510 |  | 2025-09-16T11:37:00.0 | 1.6.1.1.6.2.2 |  | PRORATED | True | True | 1a6ee370-1b93-f011-adcc-c0bfbe9ea20f | True | PRORATED | 28800 | 2026-01-21T09:00:00.0 | 2026-01-20T09:00:00.0 | True | 2026-01-21T09:00:00.0 | True | 111.24 | 510 |  | 7 | 508 |  | 381 510 511 SS | 05.01.06.02.02 |  | 111.24 |  |  | 380 509 510 FS |  | 2026-01-20T09:00:00.0 | 2026-01-20T09:00:00.0 2026-01-21T09:00:00.0 |
| 2026-01-20T09:00:00.0 | ed | 857.58 | 857.58 | 857.58 | TOMA CORRIENTE TRIFASICO INDUSTRIAL CON PUESTA A TIERRA | 1.6.1.1.6.2.3 | AS_SOON_AS_POSSIBLE | True | 500 | 28800 | 28800 | 2026-01-20T09:00:00.0 | 2026-01-21T09:00:00.0 | 2026-01-20T09:00:00.0 | 2026-01-21T09:00:00.0 | 2 días | 511 |  | 2025-09-16T11:37:00.0 | 1.6.1.1.6.2.3 |  | PRORATED | True | True | 1c6ee370-1b93-f011-adcc-c0bfbe9ea20f | True | PRORATED | 28800 | 2026-01-21T09:00:00.0 | 2026-01-20T09:00:00.0 | True | 2026-01-21T09:00:00.0 | True | 857.58 | 511 |  | 7 | 508 |  | 382 511 513 FS | 05.01.06.02.03 |  | 857.58 |  |  | 381 510 511 SS |  | 2026-01-20T09:00:00.0 | 2026-01-20T09:00:00.0 2026-01-21T09:00:00.0 |
| 2026-01-21T09:00:00.0 | ed | 377.76 | 377.76 | 377.76 | SUM E INST. DE INTERRUPTORES | 1.6.1.1.6.3 | AS_SOON_AS_POSSIBLE | True | 500 | 57600 | 57600 | 2026-01-21T09:00:00.0 | 2026-01-23T09:00:00.0 | 2026-01-21T09:00:00.0 | 2026-01-23T09:00:00.0 | 3 días | 512 | True | 2025-09-16T11:37:00.0 | 1.6.1.1.6.3 | FIXED_DURATION | PRORATED | True | True | 1e6ee370-1b93-f011-adcc-c0bfbe9ea20f | True | PRORATED | 57600 | 2026-01-23T09:00:00.0 | 2026-01-21T09:00:00.0 | True | 2026-01-23T09:00:00.0 | True | 377.76 | 512 | True | 6 | 504 |  |  | 05.01.06.03 |  |  |  |  |  |  |  |  |
| 2026-01-21T09:00:00.0 | ed | 188.88 | 188.88 | 188.88 | INTERRUPTOR SIMPLE | 1.6.1.1.6.3.1 | AS_SOON_AS_POSSIBLE | True | 500 | 28800 | 28800 | 2026-01-21T09:00:00.0 | 2026-01-22T09:00:00.0 | 2026-01-21T09:00:00.0 | 2026-01-22T09:00:00.0 | 2 días | 513 |  | 2025-09-16T11:37:00.0 | 1.6.1.1.6.3.1 |  | PRORATED | True | True | 206ee370-1b93-f011-adcc-c0bfbe9ea20f | True | PRORATED | 28800 | 2026-01-22T09:00:00.0 | 2026-01-21T09:00:00.0 | True | 2026-01-22T09:00:00.0 | True | 188.88 | 513 |  | 7 | 512 |  | 383 513 514 FS | 05.01.06.03.01 |  | 188.88 |  |  | 382 511 513 FS |  | 2026-01-21T09:00:00.0 | 2026-01-21T09:00:00.0 2026-01-22T09:00:00.0 |
| 2026-01-22T09:00:00.0 | ed | 188.88 | 188.88 | 188.88 | INTERRUPTOR DOBLE | 1.6.1.1.6.3.2 | AS_SOON_AS_POSSIBLE | True | 500 | 28800 | 28800 | 2026-01-22T09:00:00.0 | 2026-01-23T09:00:00.0 | 2026-01-22T09:00:00.0 | 2026-01-23T09:00:00.0 | 2 días | 514 |  | 2025-09-16T11:37:00.0 | 1.6.1.1.6.3.2 |  | PRORATED | True | True | 226ee370-1b93-f011-adcc-c0bfbe9ea20f | True | PRORATED | 28800 | 2026-01-23T09:00:00.0 | 2026-01-22T09:00:00.0 | True | 2026-01-23T09:00:00.0 | True | 188.88 | 514 |  | 7 | 512 |  | 384 514 506 FS | 05.01.06.03.02 |  | 188.88 |  |  | 383 513 514 FS |  | 2026-01-22T09:00:00.0 | 2026-01-22T09:00:00.0 2026-01-23T09:00:00.0 |
| 2026-01-19T09:00:00.0 | ed | 6482.07 | 6482.07 | 6482.07 | TABLEROS ELECTRICOS | 1.6.1.1.7 | AS_SOON_AS_POSSIBLE |  | 500 | 230400 | 230400 | 2026-01-19T09:00:00.0 | 2026-01-27T09:00:00.0 | 2026-01-20T09:00:00.0 | 2026-01-28T09:00:00.0 | 9 días | 515 | True | 2025-09-16T11:37:00.0 | 1.6.1.1.7 | FIXED_DURATION | PRORATED | True | True | 246ee370-1b93-f011-adcc-c0bfbe9ea20f | True | PRORATED | 230400 | 2026-01-27T09:00:00.0 | 2026-01-19T09:00:00.0 | True | 2026-01-27T09:00:00.0 | True | 6482.07 | 515 | True | 5 | 464 |  |  | 05.01.07 | 28800 |  | 28800 | 28800 |  | 28800 |  |  |
| 2026-01-19T09:00:00.0 | ed | 2362.79 | 2362.79 | 2362.79 | SUM. E INST. DE TABLERO GENERAL DE DISTRIBUCION 220 VAC -3Ø-60Hz | 1.6.1.1.7.1 | AS_SOON_AS_POSSIBLE |  | 500 | 57600 | 57600 | 2026-01-19T09:00:00.0 | 2026-01-21T09:00:00.0 | 2026-01-20T09:00:00.0 | 2026-01-22T09:00:00.0 | 3 días | 516 |  | 2025-09-16T11:37:00.0 | 1.6.1.1.7.1 |  | PRORATED | True | True | 266ee370-1b93-f011-adcc-c0bfbe9ea20f | True | PRORATED | 57600 | 2026-01-21T09:00:00.0 | 2026-01-19T09:00:00.0 | True | 2026-01-21T09:00:00.0 | True | 2362.79 | 516 |  | 6 | 515 |  | 387 516 517 FS | 05.01.07.01 | 28800 | 2362.79 |  | 28800 | 470 239 516 FS | 28800 | 2026-01-19T09:00:00.0 | 2026-01-19T09:00:00.0 2026-01-21T09:00:00.0 |
| 2026-01-21T09:00:00.0 | ed | 1148.84 | 1148.84 | 1148.84 | SUM. E INST. DE TABLERO DE DISTRIBUCION (TD-01) 220 VAC-3Ø-60Hz | 1.6.1.1.7.2 | AS_SOON_AS_POSSIBLE |  | 500 | 57600 | 57600 | 2026-01-21T09:00:00.0 | 2026-01-23T09:00:00.0 | 2026-01-22T09:00:00.0 | 2026-01-24T09:00:00.0 | 3 días | 517 |  | 2025-09-16T11:37:00.0 | 1.6.1.1.7.2 |  | PRORATED | True | True | 286ee370-1b93-f011-adcc-c0bfbe9ea20f | True | PRORATED | 57600 | 2026-01-23T09:00:00.0 | 2026-01-21T09:00:00.0 | True | 2026-01-23T09:00:00.0 | True | 1148.84 | 517 |  | 6 | 515 |  | 388 517 518 FS | 05.01.07.02 | 28800 | 1148.84 |  | 28800 | 387 516 517 FS | 28800 | 2026-01-21T09:00:00.0 | 2026-01-21T09:00:00.0 2026-01-23T09:00:00.0 |
| 2026-01-23T09:00:00.0 | ed | 1107.76 | 1107.76 | 1107.76 | SUM. E INST. DE TABLERO DE DISTRIBUCION (TD-02) 220 VAC-3Ø-60Hz | 1.6.1.1.7.3 | AS_SOON_AS_POSSIBLE |  | 500 | 57600 | 57600 | 2026-01-23T09:00:00.0 | 2026-01-25T09:00:00.0 | 2026-01-24T09:00:00.0 | 2026-01-26T09:00:00.0 | 3 días | 518 |  | 2025-09-16T11:37:00.0 | 1.6.1.1.7.3 |  | PRORATED | True | True | 2a6ee370-1b93-f011-adcc-c0bfbe9ea20f | True | PRORATED | 57600 | 2026-01-25T09:00:00.0 | 2026-01-23T09:00:00.0 | True | 2026-01-25T09:00:00.0 | True | 1107.76 | 518 |  | 6 | 515 |  | 389 518 519 FS | 05.01.07.03 | 28800 | 1107.76 |  | 28800 | 388 517 518 FS | 28800 | 2026-01-23T09:00:00.0 | 2026-01-23T09:00:00.0 2026-01-25T09:00:00.0 |
| 2026-01-25T09:00:00.0 | ed | 1862.68 | 1862.68 | 1862.68 | SUM. E INST. DE TABLERO DE CONTROL DE BOMBAS 220 VAC-3Ø-60Hz | 1.6.1.1.7.4 | AS_SOON_AS_POSSIBLE |  | 500 | 57600 | 57600 | 2026-01-25T09:00:00.0 | 2026-01-27T09:00:00.0 | 2026-01-26T09:00:00.0 | 2026-01-28T09:00:00.0 | 3 días | 519 |  | 2025-09-16T11:37:00.0 | 1.6.1.1.7.4 |  | PRORATED | True | True | 2c6ee370-1b93-f011-adcc-c0bfbe9ea20f | True | PRORATED | 57600 | 2026-01-27T09:00:00.0 | 2026-01-25T09:00:00.0 | True | 2026-01-27T09:00:00.0 | True | 1862.68 | 519 |  | 6 | 515 |  |  | 05.01.07.04 | 28800 | 1862.68 | 28800 | 28800 | 389 518 519 FS | 28800 | 2026-01-25T09:00:00.0 | 2026-01-25T09:00:00.0 2026-01-27T09:00:00.0 |
| 2025-12-08T09:00:00.0 | ed | 2548.81 | 2548.81 | 2548.81 | POZO DE TIERRA | 1.6.1.1.8 | AS_SOON_AS_POSSIBLE |  | 500 | 28800 | 28800 | 2025-12-08T09:00:00.0 | 2025-12-09T09:00:00.0 | 2026-01-27T09:00:00.0 | 2026-01-28T09:00:00.0 | 2 días | 520 | True | 2025-09-16T11:37:00.0 | 1.6.1.1.8 | FIXED_DURATION | PRORATED | True | True | 2e6ee370-1b93-f011-adcc-c0bfbe9ea20f | True | PRORATED | 28800 | 2025-12-09T09:00:00.0 | 2025-12-08T09:00:00.0 | True | 2025-12-09T09:00:00.0 | True | 2548.81 | 520 | True | 5 | 464 |  |  | 05.01.08 | 1440000 |  | 1440000 | 1440000 |  | 1440000 |  |  |
| 2025-12-08T09:00:00.0 | ed | 2548.81 | 2548.81 | 2548.81 | SUM. E INST. DE POZO TIERRA DE BAJA TENSION SEGUN DISEÑO | 1.6.1.1.8.1 | AS_SOON_AS_POSSIBLE |  | 500 | 28800 | 28800 | 2025-12-08T09:00:00.0 | 2025-12-09T09:00:00.0 | 2026-01-27T09:00:00.0 | 2026-01-28T09:00:00.0 | 2 días | 521 |  | 2025-09-16T11:37:00.0 | 1.6.1.1.8.1 |  | PRORATED | True | True | 306ee370-1b93-f011-adcc-c0bfbe9ea20f | True | PRORATED | 28800 | 2025-12-09T09:00:00.0 | 2025-12-08T09:00:00.0 | True | 2025-12-09T09:00:00.0 | True | 2548.81 | 521 |  | 6 | 520 |  |  | 05.01.08.01 | 1440000 | 2548.81 | 1440000 | 1440000 | 471 503 521 FS | 1440000 | 2025-12-08T09:00:00.0 | 2025-12-08T09:00:00.0 2025-12-09T09:00:00.0 |
| 2026-01-04T09:00:00.0 | ed | 3077.78 | 3077.78 | 3077.78 | ELECTROBOMBA | 1.6.1.1.9 | AS_SOON_AS_POSSIBLE |  | 500 | 86400 | 86400 | 2026-01-04T09:00:00.0 | 2026-01-07T09:00:00.0 | 2026-01-25T09:00:00.0 | 2026-01-28T09:00:00.0 | 4 días | 522 | True | 2025-09-16T11:37:00.0 | 1.6.1.1.9 | FIXED_DURATION | PRORATED | True | True | 326ee370-1b93-f011-adcc-c0bfbe9ea20f | True | PRORATED | 86400 | 2026-01-07T09:00:00.0 | 2026-01-04T09:00:00.0 | True | 2026-01-07T09:00:00.0 | True | 3077.78 | 522 | True | 5 | 464 |  |  | 05.01.09 | 604800 |  | 604800 | 604800 |  | 604800 |  |  |
| 2026-01-04T09:00:00.0 | ed | 3077.78 | 3077.78 | 3077.78 | ELECTROBOMBAS DE EJE VERTICAL pot=2HP, ADT=18.00m | 1.6.1.1.9.1 | AS_SOON_AS_POSSIBLE |  | 500 | 86400 | 86400 | 2026-01-04T09:00:00.0 | 2026-01-07T09:00:00.0 | 2026-01-25T09:00:00.0 | 2026-01-28T09:00:00.0 | 4 días | 523 |  | 2025-09-16T11:37:00.0 | 1.6.1.1.9.1 |  | PRORATED | True | True | 346ee370-1b93-f011-adcc-c0bfbe9ea20f | True | PRORATED | 86400 | 2026-01-07T09:00:00.0 | 2026-01-04T09:00:00.0 | True | 2026-01-07T09:00:00.0 | True | 3077.78 | 523 |  | 6 | 522 |  |  | 05.01.09.01 | 604800 | 3077.78 | 604800 | 604800 | 472 225 523 FS | 604800 | 2026-01-04T09:00:00.0 | 2026-01-04T09:00:00.0 2026-01-07T09:00:00.0 |
| 2026-01-19T09:00:00.0 | ed | 6428.44 | 6428.44 | 6428.44 | ARTEFACTOS | 1.6.1.1.10 | AS_SOON_AS_POSSIBLE |  | 500 | 115200 | 115200 | 2026-01-19T09:00:00.0 | 2026-01-23T09:00:00.0 | 2026-01-23T09:00:00.0 | 2026-01-27T09:00:00.0 | 5 días | 524 | True | 2025-09-16T11:37:00.0 | 1.6.1.1.10 | FIXED_DURATION | PRORATED | True | True | 366ee370-1b93-f011-adcc-c0bfbe9ea20f | True | PRORATED | 115200 | 2026-01-23T09:00:00.0 | 2026-01-19T09:00:00.0 | True | 2026-01-23T09:00:00.0 | True | 6428.44 | 524 | True | 5 | 464 |  |  | 05.01.10 | 115200 |  | 115200 | 115200 |  | 115200 |  |  |
| 2026-01-19T09:00:00.0 | ed | 217.56 | 217.56 | 217.56 | SUM. E INST. DE LUCES DE EMERGENCIA TIPO LED, AUTONOMIA DE 4h | 1.6.1.1.10.1 | AS_SOON_AS_POSSIBLE |  | 500 | 28800 | 28800 | 2026-01-19T09:00:00.0 | 2026-01-20T09:00:00.0 | 2026-01-23T09:00:00.0 | 2026-01-24T09:00:00.0 | 2 días | 525 |  | 2025-09-16T11:37:00.0 | 1.6.1.1.10.1 |  | PRORATED | True | True | 386ee370-1b93-f011-adcc-c0bfbe9ea20f | True | PRORATED | 28800 | 2026-01-20T09:00:00.0 | 2026-01-19T09:00:00.0 | True | 2026-01-20T09:00:00.0 | True | 217.56 | 525 |  | 6 | 524 |  | 393 525 526 FS | 05.01.10.01 | 115200 | 217.56 |  | 115200 | 473 239 525 FS | 115200 | 2026-01-19T09:00:00.0 | 2026-01-19T09:00:00.0 2026-01-20T09:00:00.0 |
| 2026-01-20T09:00:00.0 | ed | 5714.68 | 5714.68 | 5714.68 | SUM. E INST. DE AIRE ACONDICIONADO | 1.6.1.1.10.2 | AS_SOON_AS_POSSIBLE |  | 500 | 57600 | 57600 | 2026-01-20T09:00:00.0 | 2026-01-22T09:00:00.0 | 2026-01-24T09:00:00.0 | 2026-01-26T09:00:00.0 | 3 días | 526 |  | 2025-09-16T11:37:00.0 | 1.6.1.1.10.2 |  | PRORATED | True | True | 3a6ee370-1b93-f011-adcc-c0bfbe9ea20f | True | PRORATED | 57600 | 2026-01-22T09:00:00.0 | 2026-01-20T09:00:00.0 | True | 2026-01-22T09:00:00.0 | True | 5714.68 | 526 |  | 6 | 524 |  | 394 526 527 FS | 05.01.10.02 | 115200 | 5714.68 |  | 115200 | 393 525 526 FS | 115200 | 2026-01-20T09:00:00.0 | 2026-01-20T09:00:00.0 2026-01-22T09:00:00.0 |
| 2026-01-22T09:00:00.0 | ed | 496.2 | 496.2 | 496.2 | SUM. E INST. DE SENSORES CONTRA INCENDIO | 1.6.1.1.10.3 | AS_SOON_AS_POSSIBLE |  | 500 | 28800 | 28800 | 2026-01-22T09:00:00.0 | 2026-01-23T09:00:00.0 | 2026-01-26T09:00:00.0 | 2026-01-27T09:00:00.0 | 2 días | 527 |  | 2025-09-16T11:37:00.0 | 1.6.1.1.10.3 |  | PRORATED | True | True | 3c6ee370-1b93-f011-adcc-c0bfbe9ea20f | True | PRORATED | 28800 | 2026-01-23T09:00:00.0 | 2026-01-22T09:00:00.0 | True | 2026-01-23T09:00:00.0 | True | 496.2 | 527 |  | 6 | 524 |  | 395 527 529 FS | 05.01.10.03 | 115200 | 496.2 |  | 115200 | 394 526 527 FS | 115200 | 2026-01-22T09:00:00.0 | 2026-01-22T09:00:00.0 2026-01-23T09:00:00.0 |
| 2026-01-23T09:00:00.0 | ed | 2231.67 | 2231.67 | 2231.67 | PRUEBA ELECTRICA | 1.6.1.1.11 | AS_SOON_AS_POSSIBLE |  | 500 | 28800 | 28800 | 2026-01-23T09:00:00.0 | 2026-01-24T09:00:00.0 | 2026-01-27T09:00:00.0 | 2026-01-28T09:00:00.0 | 2 días | 528 | True | 2025-09-16T11:37:00.0 | 1.6.1.1.11 | FIXED_DURATION | PRORATED | True | True | 3e6ee370-1b93-f011-adcc-c0bfbe9ea20f | True | PRORATED | 28800 | 2026-01-24T09:00:00.0 | 2026-01-23T09:00:00.0 | True | 2026-01-24T09:00:00.0 | True | 2231.67 | 528 | True | 5 | 464 |  |  | 05.01.11 | 115200 |  | 115200 | 115200 |  | 115200 |  |  |
| 2026-01-23T09:00:00.0 | ed | 2231.67 | 2231.67 | 2231.67 | PRUEBA ELECTRICASS CONTINUIDAD, BAJA TENSION, MEGADO, MEDICION DE RESISTENCIA DE POZO A TIERRA, INFORME CON PROTOCOLOS DE PRUEBAS DE AISLAMIENTO Y RESISTENCIA DE POZO A TIERRA, PRUEBA DE CARGA. | 1.6.1.1.11.1 | AS_SOON_AS_POSSIBLE |  | 500 | 28800 | 28800 | 2026-01-23T09:00:00.0 | 2026-01-24T09:00:00.0 | 2026-01-27T09:00:00.0 | 2026-01-28T09:00:00.0 | 2 días | 529 |  | 2025-09-16T11:37:00.0 | 1.6.1.1.11.1 |  | PRORATED | True | True | 406ee370-1b93-f011-adcc-c0bfbe9ea20f | True | PRORATED | 28800 | 2026-01-24T09:00:00.0 | 2026-01-23T09:00:00.0 | True | 2026-01-24T09:00:00.0 | True | 2231.67 | 529 |  | 6 | 528 |  | 396 529 555 FS | 05.01.11.01 | 115200 | 2231.67 | 115200 | 115200 | 395 527 529 FS | 115200 | 2026-01-23T09:00:00.0 | 2026-01-23T09:00:00.0 2026-01-24T09:00:00.0 |
| 2025-10-18T09:00:00.0 | ed | 7467.54 | 7467.54 | 7467.54 | VELATORIO | 1.6.1.2 | AS_SOON_AS_POSSIBLE |  | 500 | 1382400 | 1382400 | 2025-10-18T09:00:00.0 | 2025-12-05T09:00:00.0 | 2026-01-09T09:00:00.0 | 2026-01-28T09:00:00.0 | 49 días | 530 | True | 2025-09-16T11:37:00.0 | 1.6.1.2 | FIXED_DURATION | PRORATED | True | True | 426ee370-1b93-f011-adcc-c0bfbe9ea20f | True | PRORATED | 1382400 | 2025-12-05T09:00:00.0 | 2025-10-18T09:00:00.0 | True | 2025-12-05T09:00:00.0 | True | 7467.54 | 530 | True | 4 | 463 |  |  | 05.02 | 1555200 |  | 1555200 | 1555200 |  | 2390400 |  |  |
| 2025-10-18T09:00:00.0 | ed | 4896.44 | 4896.44 | 4896.44 | SALIDAS PARA ALUMBRADO, TOMACORRIENTES, FUERZA Y SEÑALES DÉBILES | 1.6.1.2.1 | AS_SOON_AS_POSSIBLE |  | 500 | 1382400 | 1382400 | 2025-10-18T09:00:00.0 | 2025-12-05T09:00:00.0 | 2026-01-09T09:00:00.0 | 2026-01-28T09:00:00.0 | 49 días | 531 | True | 2025-09-16T11:37:00.0 | 1.6.1.2.1 | FIXED_DURATION | PRORATED | True | True | 446ee370-1b93-f011-adcc-c0bfbe9ea20f | True | PRORATED | 1382400 | 2025-12-05T09:00:00.0 | 2025-10-18T09:00:00.0 | True | 2025-12-05T09:00:00.0 | True | 4896.44 | 531 | True | 5 | 530 |  |  | 05.02.01 | 1555200 |  | 1555200 | 1555200 |  | 2390400 |  |  |
| 2025-10-18T09:00:00.0 | ed | 2261.11 | 2261.11 | 2261.11 | SALIDAS | 1.6.1.2.1.1 | AS_SOON_AS_POSSIBLE |  | 500 | 1382400 | 1382400 | 2025-10-18T09:00:00.0 | 2025-12-05T09:00:00.0 | 2026-01-19T09:00:00.0 | 2026-01-28T09:00:00.0 | 49 días | 532 | True | 2025-09-16T11:37:00.0 | 1.6.1.2.1.1 | FIXED_DURATION | PRORATED | True | True | 466ee370-1b93-f011-adcc-c0bfbe9ea20f | True | PRORATED | 1382400 | 2025-12-05T09:00:00.0 | 2025-10-18T09:00:00.0 | True | 2025-12-05T09:00:00.0 | True | 2261.11 | 532 | True | 6 | 531 |  |  | 05.02.01.01 | 1555200 |  | 1555200 | 1555200 |  | 2678400 |  |  |
| 2025-10-18T09:00:00.0 | ed | 524.88 | 524.88 | 524.88 | SALIDA PARA ALUMBRADO EN TECHO | 1.6.1.2.1.1.1 | AS_SOON_AS_POSSIBLE |  | 500 | 28800 | 28800 | 2025-10-18T09:00:00.0 | 2025-10-19T09:00:00.0 | 2026-01-23T09:00:00.0 | 2026-01-24T09:00:00.0 | 2 días | 533 |  | 2025-09-16T11:37:00.0 | 1.6.1.2.1.1.1 |  | PRORATED | True | True | 486ee370-1b93-f011-adcc-c0bfbe9ea20f | True | PRORATED | 28800 | 2025-10-19T09:00:00.0 | 2025-10-18T09:00:00.0 | True | 2025-10-19T09:00:00.0 | True | 524.88 | 533 |  | 7 | 532 |  | 397 533 534 FS | 05.02.01.01.01 | 2793600 | 524.88 |  | 2793600 | 415 131 533 SS | 2793600 | 2025-10-18T09:00:00.0 | 2025-10-18T09:00:00.0 2025-10-19T09:00:00.0 |
| 2025-10-19T09:00:00.0 | ed | 262.44 | 262.44 | 262.44 | SALIDA PARA ALUMBRADO EN PARED | 1.6.1.2.1.1.2 | AS_SOON_AS_POSSIBLE |  | 500 | 28800 | 28800 | 2025-10-19T09:00:00.0 | 2025-10-20T09:00:00.0 | 2026-01-24T09:00:00.0 | 2026-01-25T09:00:00.0 | 2 días | 534 |  | 2025-09-16T11:37:00.0 | 1.6.1.2.1.1.2 |  | PRORATED | True | True | 4a6ee370-1b93-f011-adcc-c0bfbe9ea20f | True | PRORATED | 28800 | 2025-10-20T09:00:00.0 | 2025-10-19T09:00:00.0 | True | 2025-10-20T09:00:00.0 | True | 262.44 | 534 |  | 7 | 532 |  | 398 534 535 FS | 05.02.01.01.02 | 2793600 | 262.44 |  | 2793600 | 397 533 534 FS | 2793600 | 2025-10-19T09:00:00.0 | 2025-10-19T09:00:00.0 2025-10-20T09:00:00.0 |
| 2025-10-20T09:00:00.0 | ed | 174.96 | 174.96 | 174.96 | SALIDA PARA ALUMBRADO DE EMERGENCIA EN PARED | 1.6.1.2.1.1.3 | AS_SOON_AS_POSSIBLE |  | 500 | 28800 | 28800 | 2025-10-20T09:00:00.0 | 2025-10-21T09:00:00.0 | 2026-01-25T09:00:00.0 | 2026-01-26T09:00:00.0 | 2 días | 535 |  | 2025-09-16T11:37:00.0 | 1.6.1.2.1.1.3 |  | PRORATED | True | True | 4c6ee370-1b93-f011-adcc-c0bfbe9ea20f | True | PRORATED | 28800 | 2025-10-21T09:00:00.0 | 2025-10-20T09:00:00.0 | True | 2025-10-21T09:00:00.0 | True | 174.96 | 535 |  | 7 | 532 |  | 479 535 537 FS | 05.02.01.01.03 | 2793600 | 174.96 |  | 2793600 | 398 534 535 FS | 2793600 | 2025-10-20T09:00:00.0 | 2025-10-20T09:00:00.0 2025-10-21T09:00:00.0 |
| 2025-11-26T09:00:00.0 | ed | 12.24 | 12.24 | 12.24 | TAPA CIEGA PARA LUMINARIA | 1.6.1.2.1.1.4 | AS_SOON_AS_POSSIBLE |  | 500 | 86400 | 86400 | 2025-11-26T09:00:00.0 | 2025-11-29T09:00:00.0 | 2026-01-19T09:00:00.0 | 2026-01-22T09:00:00.0 | 4 días | 536 |  | 2025-09-16T11:37:00.0 | 1.6.1.2.1.1.4 |  | PRORATED | True | True | 4e6ee370-1b93-f011-adcc-c0bfbe9ea20f | True | PRORATED | 86400 | 2025-11-29T09:00:00.0 | 2025-11-26T09:00:00.0 | True | 2025-11-29T09:00:00.0 | True | 12.24 | 536 |  | 7 | 532 |  | 475 536 538 FS | 05.02.01.01.04 | 1555200 | 12.24 |  | 1555200 | 474 323 536 FS | 1555200 | 2025-11-26T09:00:00.0 | 2025-11-26T09:00:00.0 2025-11-29T09:00:00.0 |
| 2025-10-21T09:00:00.0 | ed | 162.58 | 162.58 | 162.58 | SALIDA PARA INTERRUPTOR | 1.6.1.2.1.1.5 | AS_SOON_AS_POSSIBLE |  | 500 | 28800 | 28800 | 2025-10-21T09:00:00.0 | 2025-10-22T09:00:00.0 | 2026-01-26T09:00:00.0 | 2026-01-27T09:00:00.0 | 2 días | 537 |  | 2025-09-16T11:37:00.0 | 1.6.1.2.1.1.5 |  | PRORATED | True | True | 506ee370-1b93-f011-adcc-c0bfbe9ea20f | True | PRORATED | 28800 | 2025-10-22T09:00:00.0 | 2025-10-21T09:00:00.0 | True | 2025-10-22T09:00:00.0 | True | 162.58 | 537 |  | 7 | 532 |  | 480 537 539 FS | 05.02.01.01.05 | 2793600 | 162.58 |  | 2793600 | 479 535 537 FS | 2793600 | 2025-10-21T09:00:00.0 | 2025-10-21T09:00:00.0 2025-10-22T09:00:00.0 |
| 2025-11-29T09:00:00.0 | ed | 288.19 | 288.19 | 288.19 | INTERRUPTOR | 1.6.1.2.1.1.6 | AS_SOON_AS_POSSIBLE |  | 500 | 57600 | 57600 | 2025-11-29T09:00:00.0 | 2025-12-01T09:00:00.0 | 2026-01-22T09:00:00.0 | 2026-01-24T09:00:00.0 | 3 días | 538 |  | 2025-09-16T11:37:00.0 | 1.6.1.2.1.1.6 |  | PRORATED | True | True | 526ee370-1b93-f011-adcc-c0bfbe9ea20f | True | PRORATED | 57600 | 2025-12-01T09:00:00.0 | 2025-11-29T09:00:00.0 | True | 2025-12-01T09:00:00.0 | True | 288.19 | 538 |  | 7 | 532 |  | 476 538 540 FS | 05.02.01.01.06 | 1555200 | 288.19 |  | 1555200 | 475 536 538 FS | 1555200 | 2025-11-29T09:00:00.0 | 2025-11-29T09:00:00.0 2025-12-01T09:00:00.0 |
| 2025-10-22T09:00:00.0 | ed | 386.96 | 386.96 | 386.96 | SALIDA PARA TOMACORRIENTE DE INTERIOR | 1.6.1.2.1.1.7 | AS_SOON_AS_POSSIBLE |  | 500 | 28800 | 28800 | 2025-10-22T09:00:00.0 | 2025-10-23T09:00:00.0 | 2026-01-27T09:00:00.0 | 2026-01-28T09:00:00.0 | 2 días | 539 |  | 2025-09-16T11:37:00.0 | 1.6.1.2.1.1.7 |  | PRORATED | True | True | 546ee370-1b93-f011-adcc-c0bfbe9ea20f | True | PRORATED | 28800 | 2025-10-23T09:00:00.0 | 2025-10-22T09:00:00.0 | True | 2025-10-23T09:00:00.0 | True | 386.96 | 539 |  | 7 | 532 |  |  | 05.02.01.01.07 | 2793600 | 386.96 | 2793600 | 2793600 | 480 537 539 FS | 2793600 | 2025-10-22T09:00:00.0 | 2025-10-22T09:00:00.0 2025-10-23T09:00:00.0 |
| 2025-12-01T09:00:00.0 | ed | 389.34 | 389.34 | 389.34 | TOMACORRIENTES DE INTERIOR | 1.6.1.2.1.1.8 | AS_SOON_AS_POSSIBLE |  | 500 | 57600 | 57600 | 2025-12-01T09:00:00.0 | 2025-12-03T09:00:00.0 | 2026-01-24T09:00:00.0 | 2026-01-26T09:00:00.0 | 3 días | 540 |  | 2025-09-16T11:37:00.0 | 1.6.1.2.1.1.8 |  | PRORATED | True | True | 566ee370-1b93-f011-adcc-c0bfbe9ea20f | True | PRORATED | 57600 | 2025-12-03T09:00:00.0 | 2025-12-01T09:00:00.0 | True | 2025-12-03T09:00:00.0 | True | 389.34 | 540 |  | 7 | 532 |  | 404 540 541 SS | 05.02.01.01.08 | 1555200 | 389.34 |  | 1555200 | 476 538 540 FS | 1555200 | 2025-12-01T09:00:00.0 | 2025-12-01T09:00:00.0 2025-12-03T09:00:00.0 |
| 2025-12-01T09:00:00.0 | ed | 55.62 | 55.62 | 55.62 | TOMACORRIENTES DE EXTERIOR | 1.6.1.2.1.1.9 | AS_SOON_AS_POSSIBLE |  | 500 | 57600 | 57600 | 2025-12-01T09:00:00.0 | 2025-12-03T09:00:00.0 | 2026-01-24T09:00:00.0 | 2026-01-26T09:00:00.0 | 3 días | 541 |  | 2025-09-16T11:37:00.0 | 1.6.1.2.1.1.9 |  | PRORATED | True | True | 246bde76-1b93-f011-adcc-c0bfbe9ea20f | True | PRORATED | 57600 | 2025-12-03T09:00:00.0 | 2025-12-01T09:00:00.0 | True | 2025-12-03T09:00:00.0 | True | 55.62 | 541 |  | 7 | 532 |  | 405 541 542 FS | 05.02.01.01.09 | 1555200 | 55.62 |  | 1555200 | 404 540 541 SS | 1555200 | 2025-12-01T09:00:00.0 | 2025-12-01T09:00:00.0 2025-12-03T09:00:00.0 |
| 2025-12-03T09:00:00.0 | ed | 3.9 | 3.9 | 3.9 | TAPA CIEGA PARA TOMACORRIENTES EN PARED | 1.6.1.2.1.1.10 | AS_SOON_AS_POSSIBLE |  | 500 | 57600 | 57600 | 2025-12-03T09:00:00.0 | 2025-12-05T09:00:00.0 | 2026-01-26T09:00:00.0 | 2026-01-28T09:00:00.0 | 3 días | 542 |  | 2025-09-16T11:37:00.0 | 1.6.1.2.1.1.10 |  | PRORATED | True | True | 266bde76-1b93-f011-adcc-c0bfbe9ea20f | True | PRORATED | 57600 | 2025-12-05T09:00:00.0 | 2025-12-03T09:00:00.0 | True | 2025-12-05T09:00:00.0 | True | 3.9 | 542 |  | 7 | 532 |  |  | 05.02.01.01.10 | 1555200 | 3.9 | 1555200 | 1555200 | 405 541 542 FS | 1555200 | 2025-12-03T09:00:00.0 | 2025-12-03T09:00:00.0 2025-12-05T09:00:00.0 |
| 2025-10-18T09:00:00.0 | ed | 682.8 | 682.8 | 682.8 | CANALIZACIONES, CONDUCTOS Y TUBERIAS | 1.6.1.2.1.2 | AS_SOON_AS_POSSIBLE |  | 500 | 28800 | 28800 | 2025-10-18T09:00:00.0 | 2025-10-19T09:00:00.0 | 2026-01-09T09:00:00.0 | 2026-01-10T09:00:00.0 | 2 días | 543 | True | 2025-09-16T11:37:00.0 | 1.6.1.2.1.2 | FIXED_DURATION | PRORATED | True | True | 286bde76-1b93-f011-adcc-c0bfbe9ea20f | True | PRORATED | 28800 | 2025-10-19T09:00:00.0 | 2025-10-18T09:00:00.0 | True | 2025-10-19T09:00:00.0 | True | 682.8 | 543 | True | 6 | 531 |  |  | 05.02.01.02 | 2390400 |  | 2390400 | 2390400 |  | 2390400 |  |  |
| 2025-10-18T09:00:00.0 | ed | 682.8 | 682.8 | 682.8 | TUBERIA PVC-P, D=25MM | 1.6.1.2.1.2.1 | AS_SOON_AS_POSSIBLE |  | 500 | 28800 | 28800 | 2025-10-18T09:00:00.0 | 2025-10-19T09:00:00.0 | 2026-01-09T09:00:00.0 | 2026-01-10T09:00:00.0 | 2 días | 544 |  | 2025-09-16T11:37:00.0 | 1.6.1.2.1.2.1 |  | PRORATED | True | True | 2a6bde76-1b93-f011-adcc-c0bfbe9ea20f | True | PRORATED | 28800 | 2025-10-19T09:00:00.0 | 2025-10-18T09:00:00.0 | True | 2025-10-19T09:00:00.0 | True | 682.8 | 544 |  | 7 | 543 |  | 407 544 546 259200 FS | 05.02.01.02.01 | 2390400 | 682.8 |  | 2390400 | 481 131 544 SS | 2390400 | 2025-10-18T09:00:00.0 | 2025-10-18T09:00:00.0 2025-10-19T09:00:00.0 |
| 2025-10-28T09:00:00.0 | ed | 1881.15 | 1881.15 | 1881.15 | CONDUCTORES Y CABLES DE ENERGIA EN TUBERIAS | 1.6.1.2.1.3 | AS_SOON_AS_POSSIBLE |  | 500 | 201600 | 201600 | 2025-10-28T09:00:00.0 | 2025-11-04T09:00:00.0 | 2026-01-19T09:00:00.0 | 2026-01-26T09:00:00.0 | 8 días | 545 | True | 2025-09-16T11:37:00.0 | 1.6.1.2.1.3 | FIXED_DURATION | PRORATED | True | True | 2c6bde76-1b93-f011-adcc-c0bfbe9ea20f | True | PRORATED | 201600 | 2025-11-04T09:00:00.0 | 2025-10-28T09:00:00.0 | True | 2025-11-04T09:00:00.0 | True | 1881.15 | 545 | True | 6 | 531 |  |  | 05.02.01.03 | 2390400 |  | 2390400 | 2390400 |  | 2390400 |  |  |
| 2025-10-28T09:00:00.0 | ed | 1881.15 | 1881.15 | 1881.15 | CABLE DE ENERGIA | 1.6.1.2.1.3.1 | AS_SOON_AS_POSSIBLE |  | 500 | 201600 | 201600 | 2025-10-28T09:00:00.0 | 2025-11-04T09:00:00.0 | 2026-01-19T09:00:00.0 | 2026-01-26T09:00:00.0 | 8 días | 546 |  | 2025-09-16T11:37:00.0 | 1.6.1.2.1.3.1 |  | PRORATED | True | True | 2e6bde76-1b93-f011-adcc-c0bfbe9ea20f | True | PRORATED | 201600 | 2025-11-04T09:00:00.0 | 2025-10-28T09:00:00.0 | True | 2025-11-04T09:00:00.0 | True | 1881.15 | 546 |  | 7 | 545 |  | 408 546 548 FS | 05.02.01.03.01 | 2390400 | 1881.15 |  | 2390400 | 407 544 546 259200 FS | 2390400 | 2025-10-28T09:00:00.0 | 2025-10-28T09:00:00.0 2025-11-04T09:00:00.0 |
| 2025-11-04T09:00:00.0 | ed | 49.3 | 49.3 | 49.3 | SISTEMA DE CONDUCTOS | 1.6.1.2.1.4 | AS_SOON_AS_POSSIBLE |  | 500 | 28800 | 28800 | 2025-11-04T09:00:00.0 | 2025-11-05T09:00:00.0 | 2026-01-26T09:00:00.0 | 2026-01-27T09:00:00.0 | 2 días | 547 | True | 2025-09-16T11:37:00.0 | 1.6.1.2.1.4 | FIXED_DURATION | PRORATED | True | True | 306bde76-1b93-f011-adcc-c0bfbe9ea20f | True | PRORATED | 28800 | 2025-11-05T09:00:00.0 | 2025-11-04T09:00:00.0 | True | 2025-11-05T09:00:00.0 | True | 49.3 | 547 | True | 6 | 531 |  |  | 05.02.01.04 | 2390400 |  | 2390400 | 2390400 |  | 2390400 |  |  |
| 2025-11-04T09:00:00.0 | ed | 49.3 | 49.3 | 49.3 | SISTEMA DE CONDUCTOS HACIA LOS PUNTOS ELECTRICOS | 1.6.1.2.1.4.1 | AS_SOON_AS_POSSIBLE |  | 500 | 28800 | 28800 | 2025-11-04T09:00:00.0 | 2025-11-05T09:00:00.0 | 2026-01-26T09:00:00.0 | 2026-01-27T09:00:00.0 | 2 días | 548 |  | 2025-09-16T11:37:00.0 | 1.6.1.2.1.4.1 |  | PRORATED | True | True | 326bde76-1b93-f011-adcc-c0bfbe9ea20f | True | PRORATED | 28800 | 2025-11-05T09:00:00.0 | 2025-11-04T09:00:00.0 | True | 2025-11-05T09:00:00.0 | True | 49.3 | 548 |  | 7 | 547 |  | 409 548 550 FS | 05.02.01.04.01 | 2390400 | 49.3 |  | 2390400 | 408 546 548 FS | 2390400 | 2025-11-04T09:00:00.0 | 2025-11-04T09:00:00.0 2025-11-05T09:00:00.0 |
| 2025-11-05T09:00:00.0 | ed | 22.08 | 22.08 | 22.08 | TABLEROS ELECTRICOS | 1.6.1.2.1.5 | AS_SOON_AS_POSSIBLE |  | 500 | 28800 | 28800 | 2025-11-05T09:00:00.0 | 2025-11-06T09:00:00.0 | 2026-01-27T09:00:00.0 | 2026-01-28T09:00:00.0 | 2 días | 549 | True | 2025-09-16T11:37:00.0 | 1.6.1.2.1.5 | FIXED_DURATION | PRORATED | True | True | 346bde76-1b93-f011-adcc-c0bfbe9ea20f | True | PRORATED | 28800 | 2025-11-06T09:00:00.0 | 2025-11-05T09:00:00.0 | True | 2025-11-06T09:00:00.0 | True | 22.08 | 549 | True | 6 | 531 |  |  | 05.02.01.05 | 2390400 |  | 2390400 | 2390400 |  | 2390400 |  |  |
| 2025-11-05T09:00:00.0 | ed | 22.08 | 22.08 | 22.08 | MANTENIMIENTO Y LIMPIEZA DE TABLERO ELECTRICO | 1.6.1.2.1.5.1 | AS_SOON_AS_POSSIBLE |  | 500 | 28800 | 28800 | 2025-11-05T09:00:00.0 | 2025-11-06T09:00:00.0 | 2026-01-27T09:00:00.0 | 2026-01-28T09:00:00.0 | 2 días | 550 |  | 2025-09-16T11:37:00.0 | 1.6.1.2.1.5.1 |  | PRORATED | True | True | 366bde76-1b93-f011-adcc-c0bfbe9ea20f | True | PRORATED | 28800 | 2025-11-06T09:00:00.0 | 2025-11-05T09:00:00.0 | True | 2025-11-06T09:00:00.0 | True | 22.08 | 550 |  | 7 | 549 |  |  | 05.02.01.05.01 | 2390400 | 22.08 | 2390400 | 2390400 | 409 548 550 FS | 2390400 | 2025-11-05T09:00:00.0 | 2025-11-05T09:00:00.0 2025-11-06T09:00:00.0 |
| 2025-11-26T09:00:00.0 | ed | 2571.1 | 2571.1 | 2571.1 | ARTEFACTOS | 1.6.1.2.2 | AS_SOON_AS_POSSIBLE |  | 500 | 172800 | 172800 | 2025-11-26T09:00:00.0 | 2025-12-02T09:00:00.0 | 2026-01-22T09:00:00.0 | 2026-01-28T09:00:00.0 | 7 días | 551 | True | 2025-09-16T11:37:00.0 | 1.6.1.2.2 | FIXED_DURATION | PRORATED | True | True | 386bde76-1b93-f011-adcc-c0bfbe9ea20f | True | PRORATED | 172800 | 2025-12-02T09:00:00.0 | 2025-11-26T09:00:00.0 | True | 2025-12-02T09:00:00.0 | True | 2571.1 | 551 | True | 5 | 530 |  |  | 05.02.02 | 1641600 |  | 1641600 | 1641600 |  | 1641600 |  |  |
| 2025-11-26T09:00:00.0 | ed | 1441.1 | 1441.1 | 1441.1 | LUMINARIA TIPO 1 | 1.6.1.2.2.1 | AS_SOON_AS_POSSIBLE |  | 500 | 28800 | 28800 | 2025-11-26T09:00:00.0 | 2025-11-27T09:00:00.0 | 2026-01-22T09:00:00.0 | 2026-01-23T09:00:00.0 | 2 días | 552 |  | 2025-09-16T11:37:00.0 | 1.6.1.2.2.1 |  | PRORATED | True | True | 3a6bde76-1b93-f011-adcc-c0bfbe9ea20f | True | PRORATED | 28800 | 2025-11-27T09:00:00.0 | 2025-11-26T09:00:00.0 | True | 2025-11-27T09:00:00.0 | True | 1441.1 | 552 |  | 6 | 551 |  | 411 552 553 FS | 05.02.02.01 | 1641600 | 1441.1 |  | 1641600 | 477 323 552 FS | 1641600 | 2025-11-26T09:00:00.0 | 2025-11-26T09:00:00.0 2025-11-27T09:00:00.0 |
| 2025-11-27T09:00:00.0 | ed | 515.24 | 515.24 | 515.24 | LUMINARIA TIPO 2 | 1.6.1.2.2.2 | AS_SOON_AS_POSSIBLE |  | 500 | 115200 | 115200 | 2025-11-27T09:00:00.0 | 2025-12-01T09:00:00.0 | 2026-01-23T09:00:00.0 | 2026-01-27T09:00:00.0 | 5 días | 553 |  | 2025-09-16T11:37:00.0 | 1.6.1.2.2.2 |  | PRORATED | True | True | 3c6bde76-1b93-f011-adcc-c0bfbe9ea20f | True | PRORATED | 115200 | 2025-12-01T09:00:00.0 | 2025-11-27T09:00:00.0 | True | 2025-12-01T09:00:00.0 | True | 515.24 | 553 |  | 6 | 551 |  | 412 553 554 FS | 05.02.02.02 | 1641600 | 515.24 |  | 1641600 | 411 552 553 FS | 1641600 | 2025-11-27T09:00:00.0 | 2025-11-27T09:00:00.0 2025-12-01T09:00:00.0 |
| 2025-12-01T09:00:00.0 | ed | 614.76 | 614.76 | 614.76 | LUMINARIA TIPO 3 | 1.6.1.2.2.3 | AS_SOON_AS_POSSIBLE |  | 500 | 28800 | 28800 | 2025-12-01T09:00:00.0 | 2025-12-02T09:00:00.0 | 2026-01-27T09:00:00.0 | 2026-01-28T09:00:00.0 | 2 días | 554 |  | 2025-09-16T11:37:00.0 | 1.6.1.2.2.3 |  | PRORATED | True | True | 3e6bde76-1b93-f011-adcc-c0bfbe9ea20f | True | PRORATED | 28800 | 2025-12-02T09:00:00.0 | 2025-12-01T09:00:00.0 | True | 2025-12-02T09:00:00.0 | True | 614.76 | 554 |  | 6 | 551 |  | 413 554 555 FS | 05.02.02.03 | 1641600 | 614.76 | 1641600 | 1641600 | 412 553 554 FS | 1641600 | 2025-12-01T09:00:00.0 | 2025-12-01T09:00:00.0 2025-12-02T09:00:00.0 |
| 2026-01-28T09:00:00.0 | ed |  |  |  | Termino de Obra | 1.7 | AS_SOON_AS_POSSIBLE | True | 500 |  |  | 2026-01-28T09:00:00.0 | 2026-01-28T09:00:00.0 | 2026-01-28T09:00:00.0 | 2026-01-28T09:00:00.0 | 0 días | 555 |  | 2025-09-16T11:37:00.0 | 1.7 |  | PRORATED | True | True | 406bde76-1b93-f011-adcc-c0bfbe9ea20f | True | PRORATED |  | 2026-01-28T09:00:00.0 | 2026-01-28T09:00:00.0 | True | 2026-01-28T09:00:00.0 | True |  | 555 |  | 2 | 1 | True |  |  |  |  |  |  | 348 46 555 FS, 396 529 555 FS, 413 554 555 FS, 416 358 555 FS |  | 2026-01-28T09:00:00.0 |  |
